# Histórica · LafroX — Red independiente 1 — 80 filas

Schedule from GanttProject, 2027-02-01 to 2028-05-29.
LafroX
Vista histórica de la EDT por fases. Consultar las tres vistas activas del SD7 para la línea base vigente. Vista editable. Solo se fusionan paquetes o hitos con igual inicio, duración, criticidad y exactamente las mismas relaciones entrantes y salientes, tipos y desfases. Las demás tareas permanecen separadas para conservar las dependencias visibles y las fechas originales. Criticidad conservada del archivo original.

## Calendars

- Project calendar: Mon-Fri working; Sat-Sun off. Exceptions (off unless hours are given): 2027-03-26 to 2027-03-27, 2027-05-01, 2027-05-21, 2027-06-21, 2027-06-28, 2027-07-16, 2027-08-15, 2027-09-17 to 2027-09-19, 2027-10-11, 2027-10-31 to 2027-11-01, 2027-12-08, 2027-12-25, 2028-01-01, 2028-04-14 to 2028-04-15, 2028-05-01, 2028-05-21.

## Schedule

| ID | Task | Type | Duration | Start | Finish | Predecessors | Holgura (días hábiles) | Crítica |
| --- | --- | --- | --- | --- | --- | --- | --- | --- |
| 1 | RC / 5.1.4 Especificación y compra del sistema de cadena de frío |  | 42d | 2027-02-01 | 2027-03-31 |  | 0 | Sí |
| 2 | PT/H / 1.2.1 Documento de especificación de requerimientos y línea base de alcance de la Etapa 1 (H1) |  | 7d | 2027-02-01 | 2027-02-09 |  | 13 | No |
| 3 | PT/H / 1.2.2 Documento de reglas de ruteo capturadas al planificador de rutas |  | 64d | 2027-02-01 | 2027-04-30 |  |  | No |
| 4 | PT/H / 1.2.3 Documento de especificación de las interfaces sin documentación del ERP, del WMS de 2013 y de la telemetría del tercero |  | 7d | 2027-02-01 | 2027-02-09 |  | 77 | No |
| 5 | PT/H / 2 elementos: 2.3.1, 2.3.2 |  | 21d | 2027-02-01 | 2027-03-01 |  | 14 | No |
| 6 | PT/H / 1.2.4 Matriz de trazabilidad: requerimiento, módulo, paquete y prueba (H1) |  | 7d | 2027-03-01 | 2027-03-09 |  | 5 | No |
| 7 | PT/H / 2.1.1 Documento de arquitectura lógica: capas, módulos M1 a M12 e interfaces |  | 20d | 2027-03-01 | 2027-03-29 | 2FF, 14FF | 2 | No |
| 8 | PT/H / 3 elementos: 2.1.2, 2.1.3, 2.2.4 |  | 20d | 2027-03-01 | 2027-03-29 |  | 2 | No |
| 9 | PT/H / 2.2.1 Plan de seguridad de la información |  | 20d | 2027-03-01 | 2027-03-29 |  | 2 | No |
| 10 | PT/H / 5.2.1 Contrato de los servicios de AWS |  | 7d | 2027-03-01 | 2027-03-09 |  | 15 | No |
| 11 | PT/H / 5.3.4 Contrato de SIM M2M y servicio satelital de los camiones con frío |  | 10d | 2027-03-01 | 2027-03-12 | 1SS | 12 | No |
| 12 | PT/H / 5.1.2 Especificación y compra de la sala técnica, los racks, los servidores y los gabinetes de borde |  | 7d | 2027-03-02 | 2027-03-10 | 5 | 14 | No |
| 13 | PT/H / H1 — entrega del expediente | milestone | 0d | 2027-03-09 | 2027-03-09 | 2FS-1d, 6FS-1d |  | No |
| 14 | PT/H / H1 — acta del CLIENTE (límite: mes 2) | milestone | 0d | 2027-03-23 | 2027-03-23 | 13FS+10d | 5 | No |
| 15 | RC / 2.4.3 Validación del diseño del kit en banco de pruebas |  | 22d | 2027-04-01 | 2027-04-30 | 1, 11 | 0 | Sí |
| 16 | PT/H / 2.2.3 Plan de respuesta a incidentes de seguridad, con aviso al CLIENTE en dos horas |  | 12d | 2027-04-01 | 2027-04-16 |  | 1 | No |
| 17 | PT/H / 2.6.2 Prototipos y pruebas de usabilidad con participantes del CLIENTE |  | 21d | 2027-04-01 | 2027-04-29 |  | 1 | No |
| 18 | PT/H / 4 elementos: 6.1.1, 6.1.2, 6.1.3, 6.1.4 |  | 14d | 2027-04-01 | 2027-04-20 | 12 | 8 | No |
| 19 | PT/H / 2.4.1 Acta de aprobación de la arquitectura, el plan de seguridad y el modelo de datos (H2) |  | 9d | 2027-04-19 | 2027-04-29 | 7, 8, 9, 16 | 1 | No |
| 20 | PT/H / H2 — entrega del expediente | milestone | 0d | 2027-04-29 | 2027-04-29 | 19FS-1d |  | No |
| 21 | RC / 3.1.4 Cadena de integración y entrega continua, e infraestructura como código |  | 20d | 2027-05-03 | 2027-05-31 |  | 0 | Sí |
| 22 | RC / 4 elementos: 3.2.1, 3.2.2, 3.2.4, 3.2.5 |  | 20d | 2027-05-03 | 2027-05-31 | 10 | 0 | Sí |
| 23 | RC / 3.2.3 Servicio de nube de ingesta de IoT, telemetría cruda y plataforma analítica |  | 20d | 2027-05-03 | 2027-05-31 | 10 | 0 | Sí |
| 24 | RC / 6.1.5 Acta de recepción técnica de la sala |  | 14d | 2027-05-03 | 2027-05-20 | 12, 18 | 0 | Sí |
| 25 | PT/H / 2.4.4 Mapeo térmico por tipo de carrocería |  | 19d | 2027-05-03 | 2027-05-28 | 15 | 1 | No |
| 26 | PT/H / 6.3.3 Gabinete de borde de Concepción montado: servidores activo y en espera, firewalls, switches, UPS, climatización y monitoreo |  | 14d | 2027-05-03 | 2027-05-20 |  | 6 | No |
| 27 | PT/H / H2 — acta del CLIENTE (límite: mes 4) | milestone | 0d | 2027-05-13 | 2027-05-13 | 20FS+10d | 11 | No |
| 28 | RC / 2 elementos: 6.3.1, 6.3.2 |  | 13d | 2027-05-24 | 2027-06-09 | 24 | 0 | Sí |
| 29 | PT/H / 3 elementos: 3.1.1, 3.1.2, 3.1.3 |  | 14d | 2027-06-01 | 2027-06-18 | 22 | 6 | No |
| 30 | PT/H / 3.1.5 Observabilidad de los doce módulos y de los sitios, con tableros para el CLIENTE (H3) |  | 14d | 2027-06-01 | 2027-06-18 |  | 6 | No |
| 31 | PT/H / 3.2.6 Servicio de gestión de dispositivos móviles |  | 19d | 2027-06-01 | 2027-06-29 | 10 | 1 | No |
| 32 | PT/H / 3.3.1 Identidad y control de acceso, incluidos los conductores externos que rotan sin aviso |  | 45d | 2027-06-01 | 2027-08-05 | 9 | 10 | No |
| 33 | PT/H / 3.3.2 Integración con el ERP como único emisor de la guía de despacho (INT-06 e INT-07) |  | 21d | 2027-06-01 | 2027-07-01 | 4 | 10 | No |
| 34 | PT/H / 3.3.3 Convivencia con el WMS de 2013 durante el reemplazo |  | 25d | 2027-06-01 | 2027-07-07 |  | 10 | No |
| 35 | PT/H / 3.3.5 Registro auditable de stock, lotes y cobros |  | 43d | 2027-06-01 | 2027-08-03 |  | 10 | No |
| 36 | PT/H / 3.3.6 Operación sin conexión: 14 horas en terreno y 24 horas en el CD |  | 39d | 2027-06-07 | 2027-08-03 |  | 6 | No |
| 37 | RC / 2 elementos: 6.6.1, 6.6.2 |  | 13d | 2027-06-10 | 2027-06-30 | 26, 28 | 0 | Sí |
| 38 | PT/H / 3.3.4 Integración con la telemetría de los 42 camiones propios (INT-15) |  | 21d | 2027-06-10 | 2027-07-12 |  | 3 | No |
| 39 | PT/H / 3.4.1 Recepción de mercadería con captura de lote y vencimiento (M1 Recepción) |  | 41d | 2027-06-10 | 2027-08-10 | 17, 19, 21FF, 27, 29FF, 30FF, 32SS, 33SS, 34SS, 35SS, 36SS, 38SS | 3 | No |
| 40 | PT/H / 3.4.2 Inventario por ubicación y lote, con FEFO y conteo cíclico (M2 Inventario) |  | 42d | 2027-06-10 | 2027-08-11 | 17, 19, 21FF, 27, 29FF, 30FF, 32SS, 33SS, 34SS, 35SS, 36SS, 38SS | 3 | No |
| 41 | PT/H / 3.4.10 Cobro en ruta, rendición y conciliación (M7 Cobranza y rendición) |  | 79d | 2027-06-10 | 2027-10-04 | 17, 19, 21FF, 27, 29FF, 30FF, 32SS, 33SS, 34SS, 35SS, 36SS, 38SS, 48FF+2d | 5 | No |
| 42 | PT/H / 6.6.3 Borde de los CD en servicio, con la prueba de autonomía de 24 horas aprobada |  | 7d | 2027-06-10 | 2027-06-18 | 26, 28 | 6 | No |
| 43 | PT/H / 3.4.3 Preparación de pedidos en el turno de noche y en la cámara de congelado (M5 Preparación) |  | 45d | 2027-06-14 | 2027-08-18 | 17, 19, 21FF, 27, 29FF, 30FF, 32SS, 33SS, 34SS, 35SS, 36SS, 38SS, 39FF+2d, 40FF+2d | 7 | No |
| 44 | PT/H / 3.4.4 Cadena de frío, retención por SSCC y retiro sanitario (M9 Calidad y trazabilidad) |  | 74d | 2027-06-14 | 2027-09-29 | 15, 17, 19, 21FF, 25, 27, 29FF, 30FF, 32SS, 33SS, 34SS, 35SS, 36SS, 38SS, 39FF+2d, 40FF+2d | 1 | No |
| 45 | PT/H / 3.4.5 Ingesta de temperatura (M9) y posición de flota (M12) |  | 53d | 2027-06-14 | 2027-08-30 | 15, 17, 19, 21FF, 23, 25, 27, 29FF, 30FF, 32SS, 33SS, 34SS, 35SS, 36SS, 38SS | 1 | No |
| 46 | PT/H / 3.4.6 Aplicación móvil de preventa sin conexión, con stock y crédito (M3 Preventa) |  | 42d | 2027-06-16 | 2027-08-17 | 17, 19, 21FF, 27, 29FF, 30FF, 32SS, 33SS, 34SS, 35SS, 36SS, 38SS, 40SS | 5 | No |
| 47 | PT/H / 3.4.7 Planificación de rutas corregible por el planificador (M4 Rutas) |  | 58d | 2027-06-16 | 2027-09-08 | 3, 17, 19, 21FF, 27, 29FF, 30FF, 32SS, 33SS, 34SS, 35SS, 36SS, 38SS, 43FF+2d, 46FF+2d | 15 | No |
| 48 | PT/H / 3.4.8 Aplicación móvil de reparto con prueba de entrega digital (M6 Reparto) |  | 59d | 2027-06-16 | 2027-09-09 | 17, 19, 21FF, 27, 29FF, 30FF, 32SS, 33SS, 34SS, 35SS, 36SS, 38SS, 43FF+2d, 46FF+2d | 5 | No |
| 49 | RC / 3.4.9 Devoluciones en terreno y control de envases (M8 Devoluciones y envases) |  | 71d | 2027-06-18 | 2027-09-30 | 17, 19, 21FF, 27, 29FF, 30FF, 32SS, 33SS, 34SS, 35SS, 36SS, 38SS | 0 | Sí |
| 50 | PT/H / H3 — entrega del expediente | milestone | 0d | 2027-06-18 | 2027-06-18 | 29FS-1d, 30FS-1d, 42FS-1d |  | No |
| 51 | PT/H / 3 elementos: 3.6.2, 3.6.3, 3.6.4 |  | 22d | 2027-07-01 | 2027-08-02 |  | 21 | No |
| 52 | PT/H / H3 — acta del CLIENTE (límite: mes 6) | milestone | 0d | 2027-07-06 | 2027-07-06 | 50FS+10d | 17 | No |
| 53 | PT/H / 3.6.1 Intercambio de lote y trazabilidad con los proveedores |  | 23d | 2027-08-02 | 2027-09-01 |  | 20 | No |
| 54 | PT/H / 3.7.1 Informe de perfilamiento y datos saneados |  | 42d | 2027-08-04 | 2027-10-01 |  | 19 | No |
| 55 | PT/H / 6.5.4 Kit de cadena de frío instalado y recibido en los 28 camiones con frío |  | 94d | 2027-09-01 | 2028-01-14 | 1, 15, 25 | 11 | No |
| 56 | PT/H / 3.4.11 Indicadores operacionales y OTIF diario (M10 Analítica) |  | 17d | 2027-09-02 | 2027-09-27 | 17, 19, 21FF, 27, 29FF, 30FF, 32SS, 33SS, 34SS, 35SS, 36SS, 38SS | 3 | No |
| 57 | PT/H / Cuatro kits de frío recibidos para el piloto | milestone | 0d | 2027-09-30 | 2027-09-30 | 55SS |  | No |
| 58 | PT/H / 2 elementos: 5.4.1, 5.4.2 |  | 7d | 2027-10-01 | 2027-10-12 |  | 77 | No |
| 59 | PT/H / 3.7.2 Datos maestros cargados: 8.400 SKU, clientes e instalaciones |  | 21d | 2027-10-04 | 2027-11-03 |  | 19 | No |
| 60 | PT/H / 3.8.1 Pruebas de integración, regresión e idempotencia en QA (H4) |  | 13d | 2027-10-05 | 2027-10-22 | 39, 40, 41, 43, 44, 45, 46, 47, 48, 49, 51, 53, 56 | 5 | No |
| 61 | PT/H / 6.5.1 Terminales de preventa, reparto y bodega configurados y enrolados |  | 70d | 2027-10-06 | 2028-01-14 | 31 | 11 | No |
| 62 | PT/H / H4 — entrega del expediente | milestone | 0d | 2027-10-22 | 2027-10-22 | 60FS-1d |  | No |
| 63 | PT/H / 2 elementos: 3.8.2, 3.8.3 |  | 19d | 2027-10-25 | 2027-11-19 | 60 | 7 | No |
| 64 | PT/H / 4 elementos: 3.8.4, 3.8.5, 3.8.6, 3.8.8 |  | 13d | 2027-10-25 | 2027-11-11 | 60 | 13 | No |
| 65 | PT/H / 4.1.1 Plan de olas de la Etapa 1 por sitio y zona: Talca, Concepción y plataformas de cross-docking |  | 7d | 2027-11-02 | 2027-11-10 |  | 14 | No |
| 66 | PT/H / H4 — acta del CLIENTE (límite: mes 10) | milestone | 0d | 2027-11-08 | 2027-11-08 | 62FS+10d | 16 | No |
| 67 | PT/H / 4.1.4 Piloto de cadena de frío en cuatro camiones |  | 29d | 2027-11-09 | 2027-12-20 | 11, 15, 25, 44, 45, 57, 60, 66 | 9 | No |
| 68 | PT/H / 3.8.7 Acta de certificación de la Etapa 1 (H5) |  | 8d | 2027-11-22 | 2027-12-01 | 63, 64 | 21 | No |
| 69 | RC / 2 elementos: 3.7.3, 3.7.4 |  | 22d | 2027-12-01 | 2027-12-31 |  | 0 | Sí |
| 70 | PT/H / 4.1.2 Procedimiento de reversión de la Etapa 1 antes de las 05:30, con versión operativa local y DTE emitidos por el ERP |  | 7d | 2027-12-01 | 2027-12-10 |  | 15 | No |

Notes:
- 1: 5.1.4 Especificación y compra del sistema de cadena de frío / Mismas fechas, duración y dependencias que los elementos originales. Identificadores de origen: 188
- 2: 1.2.1 Documento de especificación de requerimientos y línea base de alcance de la Etapa 1 (H1) / Mismas fechas, duración y dependencias que los elementos originales. Identificadores de origen: 7
- 3: 1.2.2 Documento de reglas de ruteo capturadas al planificador de rutas / Mismas fechas, duración y dependencias que los elementos originales. Identificadores de origen: 8
- 4: 1.2.3 Documento de especificación de las interfaces sin documentación del ERP, del WMS de 2013 y de la telemetría del tercero / Mismas fechas, duración y dependencias que los elementos originales. Identificadores de origen: 9
- 5: 2.3.1 Plano de la sala técnica de Talca, con su cálculo eléctrico y térmico / 2.3.2 Plano de distribución de los racks R01 de servidores y R02 de comunicaciones / Mismas fechas, duración y dependencias que los elementos originales. Identificadores de origen: 58, 59
- 6: 1.2.4 Matriz de trazabilidad: requerimiento, módulo, paquete y prueba (H1) / Mismas fechas, duración y dependencias que los elementos originales. Identificadores de origen: 10
- 7: 2.1.1 Documento de arquitectura lógica: capas, módulos M1 a M12 e interfaces / Mismas fechas, duración y dependencias que los elementos originales. Identificadores de origen: 48
- 8: 2.1.2 Documento de arquitectura física híbrida: nube, centros de distribución y plataformas de cross-docking / 2.1.3 Modelo de datos y diccionario de datos, con la trazabilidad por lote / 2.2.4 Matriz de clasificación de la información y matriz de controles / Mismas fechas, duración y dependencias que los elementos originales. Identificadores de origen: 49, 50, 56
- 9: 2.2.1 Plan de seguridad de la información / Mismas fechas, duración y dependencias que los elementos originales. Identificadores de origen: 53
- 10: 5.2.1 Contrato de los servicios de AWS / Mismas fechas, duración y dependencias que los elementos originales. Identificadores de origen: 190
- 11: 5.3.4 Contrato de SIM M2M y servicio satelital de los camiones con frío / Mismas fechas, duración y dependencias que los elementos originales. Identificadores de origen: 197
- 12: 5.1.2 Especificación y compra de la sala técnica, los racks, los servidores y los gabinetes de borde / Mismas fechas, duración y dependencias que los elementos originales. Identificadores de origen: 186
- 13: H1 — entrega del expediente / Mismas fechas, duración y dependencias que los elementos originales. Identificadores de origen: 291
- 14: H1 — acta del CLIENTE (límite: mes 2) / Mismas fechas, duración y dependencias que los elementos originales. Identificadores de origen: 292
- 15: 2.4.3 Validación del diseño del kit en banco de pruebas / Mismas fechas, duración y dependencias que los elementos originales. Identificadores de origen: 64
- 16: 2.2.3 Plan de respuesta a incidentes de seguridad, con aviso al CLIENTE en dos horas / Mismas fechas, duración y dependencias que los elementos originales. Identificadores de origen: 55
- 17: 2.6.2 Prototipos y pruebas de usabilidad con participantes del CLIENTE / Mismas fechas, duración y dependencias que los elementos originales. Identificadores de origen: 71
- 18: 6.1.1 Coordinación de la obra civil de separación, a cargo del CLIENTE (RT-06.06), y piso técnico de la sala / 6.1.2 Hardware de energía instalado: UPS modular N+1, generador con 24 horas de autonomía, transferencia automática y PDU A/B / 6.1.3 Hardware de climatización de precisión N+1 instalado / 6.1.4 Hardware de detección temprana de incendio y extinción por agente limpio instalado / Mismas fechas, duración y dependencias que los elementos originales. Identificadores de origen: 205, 206, 207, 208
- 19: 2.4.1 Acta de aprobación de la arquitectura, el plan de seguridad y el modelo de datos (H2) / Mismas fechas, duración y dependencias que los elementos originales. Identificadores de origen: 62
- 20: H2 — entrega del expediente / Mismas fechas, duración y dependencias que los elementos originales. Identificadores de origen: 293
- 21: 3.1.4 Cadena de integración y entrega continua, e infraestructura como código / Mismas fechas, duración y dependencias que los elementos originales. Identificadores de origen: 78
- 22: 3.2.1 Servicio de nube para la aplicación y los portales / 3.2.2 Servicio de nube de base de datos, caché y mensajería / 3.2.4 Servicio de nube de respaldo inmutable y réplica entre regiones / 3.2.5 Servicio de nube de seguridad y gobierno, y detección en endpoints / Mismas fechas, duración y dependencias que los elementos originales. Identificadores de origen: 81, 82, 84, 85
- 23: 3.2.3 Servicio de nube de ingesta de IoT, telemetría cruda y plataforma analítica / Mismas fechas, duración y dependencias que los elementos originales. Identificadores de origen: 83
- 24: 6.1.5 Acta de recepción técnica de la sala / Mismas fechas, duración y dependencias que los elementos originales. Identificadores de origen: 209
- 25: 2.4.4 Mapeo térmico por tipo de carrocería / Mismas fechas, duración y dependencias que los elementos originales. Identificadores de origen: 65
- 26: 6.3.3 Gabinete de borde de Concepción montado: servidores activo y en espera, firewalls, switches, UPS, climatización y monitoreo / Mismas fechas, duración y dependencias que los elementos originales. Identificadores de origen: 217
- 27: H2 — acta del CLIENTE (límite: mes 4) / Mismas fechas, duración y dependencias que los elementos originales. Identificadores de origen: 294
- 28: 6.3.1 Rack R01 de servidores montado: clúster de tres nodos, respaldo local, consola KVM y traslado del servidor del ERP del CLIENTE / 6.3.2 Rack R02 de comunicaciones montado: firewalls, switches de núcleo y de gestión, y distribución de fibra / Mismas fechas, duración y dependencias que los elementos originales. Identificadores de origen: 215, 216
- 29: 3.1.1 Ambientes de Desarrollo y QA en la nube (H3) / 3.1.2 Ambientes de Preproducción y Producción en la nube (H3) / 3.1.3 Ambiente de recuperación ante desastres en la región secundaria (H3) / Mismas fechas, duración y dependencias que los elementos originales. Identificadores de origen: 75, 76, 77
- 30: 3.1.5 Observabilidad de los doce módulos y de los sitios, con tableros para el CLIENTE (H3) / Mismas fechas, duración y dependencias que los elementos originales. Identificadores de origen: 79
- 31: 3.2.6 Servicio de gestión de dispositivos móviles / Mismas fechas, duración y dependencias que los elementos originales. Identificadores de origen: 86
- 32: 3.3.1 Identidad y control de acceso, incluidos los conductores externos que rotan sin aviso / Mismas fechas, duración y dependencias que los elementos originales. Identificadores de origen: 88
- 33: 3.3.2 Integración con el ERP como único emisor de la guía de despacho (INT-06 e INT-07) / Mismas fechas, duración y dependencias que los elementos originales. Identificadores de origen: 89
- 34: 3.3.3 Convivencia con el WMS de 2013 durante el reemplazo / Mismas fechas, duración y dependencias que los elementos originales. Identificadores de origen: 90
- 35: 3.3.5 Registro auditable de stock, lotes y cobros / Mismas fechas, duración y dependencias que los elementos originales. Identificadores de origen: 92
- 36: 3.3.6 Operación sin conexión: 14 horas en terreno y 24 horas en el CD / Mismas fechas, duración y dependencias que los elementos originales. Identificadores de origen: 93
- 37: 6.6.1 Software de base instalado en los sitios: virtualización, contenedores, PostgreSQL, RabbitMQ y Keycloak / 6.6.2 Enlaces de fibra, LTE y Starlink habilitados, con conmutación al respaldo / Mismas fechas, duración y dependencias que los elementos originales. Identificadores de origen: 231, 232
- 38: 3.3.4 Integración con la telemetría de los 42 camiones propios (INT-15) / Mismas fechas, duración y dependencias que los elementos originales. Identificadores de origen: 91
- 39: 3.4.1 Recepción de mercadería con captura de lote y vencimiento (M1 Recepción) / Mismas fechas, duración y dependencias que los elementos originales. Identificadores de origen: 95
- 40: 3.4.2 Inventario por ubicación y lote, con FEFO y conteo cíclico (M2 Inventario) / Mismas fechas, duración y dependencias que los elementos originales. Identificadores de origen: 96
- 41: 3.4.10 Cobro en ruta, rendición y conciliación (M7 Cobranza y rendición) / Mismas fechas, duración y dependencias que los elementos originales. Identificadores de origen: 104
- 42: 6.6.3 Borde de los CD en servicio, con la prueba de autonomía de 24 horas aprobada / Mismas fechas, duración y dependencias que los elementos originales. Identificadores de origen: 233
- 43: 3.4.3 Preparación de pedidos en el turno de noche y en la cámara de congelado (M5 Preparación) / Mismas fechas, duración y dependencias que los elementos originales. Identificadores de origen: 97
- 44: 3.4.4 Cadena de frío, retención por SSCC y retiro sanitario (M9 Calidad y trazabilidad) / Mismas fechas, duración y dependencias que los elementos originales. Identificadores de origen: 98
- 45: 3.4.5 Ingesta de temperatura (M9) y posición de flota (M12) / Mismas fechas, duración y dependencias que los elementos originales. Identificadores de origen: 99
- 46: 3.4.6 Aplicación móvil de preventa sin conexión, con stock y crédito (M3 Preventa) / Mismas fechas, duración y dependencias que los elementos originales. Identificadores de origen: 100
- 47: 3.4.7 Planificación de rutas corregible por el planificador (M4 Rutas) / Mismas fechas, duración y dependencias que los elementos originales. Identificadores de origen: 101
- 48: 3.4.8 Aplicación móvil de reparto con prueba de entrega digital (M6 Reparto) / Mismas fechas, duración y dependencias que los elementos originales. Identificadores de origen: 102
- 49: 3.4.9 Devoluciones en terreno y control de envases (M8 Devoluciones y envases) / Mismas fechas, duración y dependencias que los elementos originales. Identificadores de origen: 103
- 50: H3 — entrega del expediente / Mismas fechas, duración y dependencias que los elementos originales. Identificadores de origen: 295
- 51: 3.6.2 Integración con la pasarela de pago para el cobro con tarjeta (INT-09) / 3.6.3 Integración con el servicio de mapas y geocodificación (INT-10) / 3.6.4 Integración con el servicio de avisos al cliente (INT-11) / Mismas fechas, duración y dependencias que los elementos originales. Identificadores de origen: 113, 114, 115
- 52: H3 — acta del CLIENTE (límite: mes 6) / Mismas fechas, duración y dependencias que los elementos originales. Identificadores de origen: 296
- 53: 3.6.1 Intercambio de lote y trazabilidad con los proveedores / Mismas fechas, duración y dependencias que los elementos originales. Identificadores de origen: 112
- 54: 3.7.1 Informe de perfilamiento y datos saneados / Mismas fechas, duración y dependencias que los elementos originales. Identificadores de origen: 119
- 55: 6.5.4 Kit de cadena de frío instalado y recibido en los 28 camiones con frío / Mismas fechas, duración y dependencias que los elementos originales. Identificadores de origen: 227
- 56: 3.4.11 Indicadores operacionales y OTIF diario (M10 Analítica) / Mismas fechas, duración y dependencias que los elementos originales. Identificadores de origen: 105
- 57: Cuatro kits de frío recibidos para el piloto / Mismas fechas, duración y dependencias que los elementos originales. Identificadores de origen: 313
- 58: 5.4.1 Acuerdos operacionales firmados con los diez transportistas / 5.4.2 Acta de acuerdo con el sindicato sobre terminales, GPS y cámaras / Mismas fechas, duración y dependencias que los elementos originales. Identificadores de origen: 199, 200
- 59: 3.7.2 Datos maestros cargados: 8.400 SKU, clientes e instalaciones / Mismas fechas, duración y dependencias que los elementos originales. Identificadores de origen: 120
- 60: 3.8.1 Pruebas de integración, regresión e idempotencia en QA (H4) / Mismas fechas, duración y dependencias que los elementos originales. Identificadores de origen: 125
- 61: 6.5.1 Terminales de preventa, reparto y bodega configurados y enrolados / Mismas fechas, duración y dependencias que los elementos originales. Identificadores de origen: 224
- 62: H4 — entrega del expediente / Mismas fechas, duración y dependencias que los elementos originales. Identificadores de origen: 297
- 63: 3.8.2 Pruebas de aceptación y de accesibilidad con preventistas, conductores y bodega / 3.8.3 Cinco condiciones físicas: −22 °C con guantes, lluvia, calor superior a 34 °C, sol directo y uso con una mano; desconexión separada de 14 horas / Mismas fechas, duración y dependencias que los elementos originales. Identificadores de origen: 126, 127
- 64: 3.8.4 Pruebas de carga con el peak de septiembre y de resiliencia / 3.8.5 Prueba de recuperación ante desastres con conmutación real / 3.8.6 Prueba de seguridad ofensiva de la Etapa 1, por un tercero independiente / 3.8.8 Demostración en Preproducción del despliegue sin interrupción de la Etapa 1 / Mismas fechas, duración y dependencias que los elementos originales. Identificadores de origen: 128, 129, 130, 132
- 65: 4.1.1 Plan de olas de la Etapa 1 por sitio y zona: Talca, Concepción y plataformas de cross-docking / Mismas fechas, duración y dependencias que los elementos originales. Identificadores de origen: 170
- 66: H4 — acta del CLIENTE (límite: mes 10) / Mismas fechas, duración y dependencias que los elementos originales. Identificadores de origen: 298
- 67: 4.1.4 Piloto de cadena de frío en cuatro camiones / Mismas fechas, duración y dependencias que los elementos originales. Identificadores de origen: 173
- 68: 3.8.7 Acta de certificación de la Etapa 1 (H5) / Mismas fechas, duración y dependencias que los elementos originales. Identificadores de origen: 131
- 69: 3.7.3 Saldos migrados desde el WMS de Talca / 3.7.4 Saldos cargados en Concepción desde el conteo físico / Mismas fechas, duración y dependencias que los elementos originales. Identificadores de origen: 121, 122
- 70: 4.1.2 Procedimiento de reversión de la Etapa 1 antes de las 05:30, con versión operativa local y DTE emitidos por el ERP / Mismas fechas, duración y dependencias que los elementos originales. Identificadores de origen: 171

| ID | Task | Type | Duration | Start | Finish | Predecessors | Crítica | Holgura (días hábiles) |
| --- | --- | --- | --- | --- | --- | --- | --- | --- |
| 71 | PT/H / H5 — entrega del expediente | milestone | 0d | 2027-12-01 | 2027-12-01 | 68FS-1d | No |  |
| 72 | PT/H / 3.7.5 Acta de conciliación y corte fuera de las ventanas de congelamiento |  | 19d | 2028-01-03 | 2028-01-27 | 54FF+3d, 59FF+3d, 69FF+3d | No | 2 |
| 73 | PT/H / H5 — acta del CLIENTE (límite: mes 12) | milestone | 0d | 2028-01-03 | 2028-01-03 | 71FS+10d | No | 20 |
| 74 | RC / H6 — inicio de marcha blanca (mes 13) | milestone | 0d | 2028-02-01 | 2028-02-01 | 75SS | Sí | 0 |
| 75 | PT/H / 4.2.1 Marcha blanca de la Etapa 1 con conciliación diaria (H6) |  | 63d | 2028-02-01 | 2028-04-28 | 65, 70, 72, 73 | No |  |
| 76 | PT/H / 7.3.1 Certificación de preventistas, conductores y preparadores (Etapa 1) |  | 39d | 2028-02-01 | 2028-03-24 |  | No | 24 |
| 77 | PT/H / Inicio de la ola 3 de reparto | milestone | 0d | 2028-02-29 | 2028-02-29 | 55FS-1d, 58FS-1d, 67FS-1d | No |  |
| 78 | PT/H / 4.2.3 Acta de paso a producción y cierre de la Etapa 1 (H7) |  | 7d | 2028-05-05 | 2028-05-15 | 75, 76 | No | 2 |
| 79 | PT/H / H7 — entrega del expediente | milestone | 0d | 2028-05-15 | 2028-05-15 | 78FS-1d | No |  |
| 80 | RC / H7 — acta del CLIENTE (límite: mes 16) | milestone | 0d | 2028-05-29 | 2028-05-29 | 79FS+10d | Sí | 2 |

Notes:
- 71: H5 — entrega del expediente / Mismas fechas, duración y dependencias que los elementos originales. Identificadores de origen: 299
- 72: 3.7.5 Acta de conciliación y corte fuera de las ventanas de congelamiento / Mismas fechas, duración y dependencias que los elementos originales. Identificadores de origen: 123
- 73: H5 — acta del CLIENTE (límite: mes 12) / Mismas fechas, duración y dependencias que los elementos originales. Identificadores de origen: 300
- 74: H6 — inicio de marcha blanca (mes 13) / Mismas fechas, duración y dependencias que los elementos originales. Identificadores de origen: 301
- 75: 4.2.1 Marcha blanca de la Etapa 1 con conciliación diaria (H6) / Mismas fechas, duración y dependencias que los elementos originales. Identificadores de origen: 175
- 76: 7.3.1 Certificación de preventistas, conductores y preparadores (Etapa 1) / Mismas fechas, duración y dependencias que los elementos originales. Identificadores de origen: 249
- 77: Inicio de la ola 3 de reparto / Mismas fechas, duración y dependencias que los elementos originales. Identificadores de origen: 314
- 78: 4.2.3 Acta de paso a producción y cierre de la Etapa 1 (H7) / Mismas fechas, duración y dependencias que los elementos originales. Identificadores de origen: 177
- 79: H7 — entrega del expediente / Mismas fechas, duración y dependencias que los elementos originales. Identificadores de origen: 304
- 80: H7 — acta del CLIENTE (límite: mes 16) / Mismas fechas, duración y dependencias que los elementos originales. Identificadores de origen: 305
