# Detalle nivelado de implementación y precedencias del SD7

Schedule from GanttProject, 2027-02-01 to 2031-09-30.
LafroX
Red SD7 generada desde T-14, T-15 y Anexo 7.B. El calendario es nominal. Las esperas de la carta nivelada se conservan en los desfases publicados. Duración usa el calendario del motor, con excepciones para representar fechas civiles. Días hábiles T-15 conserva la duración nominal de la fuente. Los ID coinciden entre vistas.

## Calendars

- Project calendar: Mon-Fri working; Sat-Sun off. Exceptions (off unless hours are given): 2027-03-26 to 2027-03-27, 2027-05-01, 2027-05-21, 2027-06-21, 2027-06-28, 2027-07-16, 2027-08-15, 2027-09-17 to 2027-09-19, 2027-10-11, 2027-10-31 to 2027-11-01, 2027-12-08, 2027-12-25, 2028-01-01, 2028-04-14 to 2028-04-15, 2028-05-01, 2028-05-21, 2028-06-20, 2028-06-26, 2028-07-16, 2028-08-15, 2028-09-18 to 2028-09-19, 2028-10-09, 2028-10-27, 2028-11-01, 2028-12-08, 2028-12-25, 2029-01-01, 2029-03-30 to 2029-03-31, 2029-05-01, 2029-05-21, 2029-06-20, 2029-07-02, 2029-07-16, 2029-08-15, 2029-09-17 to 2029-09-19, 2029-10-15, 2029-11-01 to 2029-11-02, 2029-12-08, 2029-12-25, 2030-01-01, 2030-04-19 to 2030-04-20, 2030-05-01, 2030-05-21, 2030-06-21, 2030-06-29, 2030-07-16, 2030-08-15, 2030-09-18 to 2030-09-20, 2030-10-12, 2030-10-31 to 2030-11-01, 2030-12-08, 2030-12-25, 2031-01-01, 2031-04-11 to 2031-04-12, 2031-05-01, 2031-05-21, 2031-06-21, 2031-06-29, 2031-07-16, 2031-08-15, 2031-09-18 to 2031-09-19.

## Schedule

| ID | Task | Type | Duration | Start | Finish | Predecessors | Días hábiles T-15 |
| --- | --- | --- | --- | --- | --- | --- | --- |
| 1 | 1.1.1 Acta de constitución del proyecto, firmada con la Contraparte Técnica |  | 7d | 2027-02-01 | 2027-02-09 | 16SS | 7 |
| 2 | 1.1.2 Documento de validación con el CLIENTE de los problemas y metas del proyecto |  | 7d | 2027-02-01 | 2027-02-09 | 1SS | 7 |
| 3 | 1.1.3 Acta de confirmaciones iniciales con el CLIENTE (inicio, lácteos, ventanas y acuse tributario) |  | 7d | 2027-02-01 | 2027-02-09 | 1SS | 7 |
| 4 | 1.3.1 Registro de interesados con su influencia, interés y estrategia |  | 7d | 2027-02-01 | 2027-02-09 | 1SS | 7 |
| 5 | 1.3.2 Plan de comunicaciones con calendario y canales por grupo de interés |  | 7d | 2027-02-01 | 2027-02-09 | 4SS | 7 |
| 6 | 1.8.1 Matriz de cumplimiento normativo por obligación legal, con su control y su evidencia |  | 7d | 2027-02-01 | 2027-02-09 | 1SS | 7 |
| 7 | 1.8.2 Acuerdo de tratamiento de datos personales con el CLIENTE |  | 7d | 2027-02-01 | 2027-02-09 | 1SS | 7 |
| 8 | 2.1.1 Documento de especificación de requerimientos y línea base de alcance de la Etapa 1 (H1) |  | 7d | 2027-02-01 | 2027-02-09 | 2SS | 7 |
| 9 | 2.1.5 Especificación de interfaces heredadas y perfil de intercambio con cadenas |  | 7d | 2027-02-01 | 2027-02-09 | 1SS | 7 |
| 10 | 2.4.1 Plano de la sala técnica de Talca, con su cálculo eléctrico y térmico |  | 20d | 2027-02-01 | 2027-02-26 | 16SS | 20 |
| 11 | 2.4.2 Plano de distribución de los racks R01 de servidores y R02 de comunicaciones |  | 20d | 2027-02-01 | 2027-02-26 | 10SS | 20 |
| 12 | 8.1.4 Especificación y compra del sistema de cadena de frío |  | 42d | 2027-02-01 | 2027-03-31 | 15SS | 42 |
| 13 | 2.1.4 Captura de reglas de ruteo |  | 64d | 2027-02-01 | 2027-04-30 |  | 64 |
| 14 | Etapa 1 · Desarrollo (meses 1 a 12) |  | 253d | 2027-02-01 | 2028-02-01 |  | 252 |
| 15 | Especificación de equipos de frío disponible | milestone | 0d | 2027-02-01 | 2027-02-01 |  | 0 |
| 16 | Inicio contractual (supuesto V-12) | milestone | 0d | 2027-02-01 | 2027-02-01 |  | 0 |
| 17 | 1.2.1 Plan para la dirección del proyecto y calendario de congelamientos |  | 7d | 2027-02-10 | 2027-02-18 | 1 | 7 |
| 18 | 1.2.2 EDT y diccionario de la EDT (línea base del alcance) |  | 7d | 2027-03-01 | 2027-03-09 | 8FS+13d | 7 |
| 19 | 1.2.3 Carta Gantt de 56 meses con los hitos H1 a H12 y la ruta crítica |  | 7d | 2027-03-01 | 2027-03-09 | 18SS | 7 |
| 20 | 1.2.4 Documento de nivelación de recursos y frentes de solapamiento |  | 7d | 2027-03-01 | 2027-03-09 | 19SS | 7 |
| 21 | 1.4.1 Plan de calidad y plan de pruebas |  | 7d | 2027-03-01 | 2027-03-09 | 8FS+13d | 7 |
| 22 | 1.5.1 Plan de riesgos y registro inicial de riesgos según ISO 31000 |  | 7d | 2027-03-01 | 2027-03-09 | 17FS+6d | 7 |
| 23 | 1.8.3 Registro de actividades de tratamiento y evaluación de impacto en protección de datos |  | 7d | 2027-03-01 | 2027-03-09 | 7FS+13d | 7 |
| 24 | 2.1.3 Matriz de trazabilidad: requerimiento, módulo, paquete y prueba (H1) |  | 7d | 2027-03-01 | 2027-03-09 | 8FS+13d, 18SS | 7 |
| 25 | 2.2.1 Documento de arquitectura lógica: capas, módulos M1 a M12 e interfaces |  | 20d | 2027-03-01 | 2027-03-29 | 8SS+20d, 40FF+4d | 20 |
| 26 | 2.2.2 Documento de arquitectura física híbrida |  | 20d | 2027-03-01 | 2027-03-29 | 8FS+13d, 10SS+20d | 20 |
| 27 | 2.2.3 Modelo de datos y diccionario de datos, con la trazabilidad por lote |  | 20d | 2027-03-01 | 2027-03-29 | 8FS+13d | 20 |
| 28 | 2.3.1 Plan de seguridad de la información |  | 20d | 2027-03-01 | 2027-03-29 | 6FS+13d, 25SS | 20 |
| 29 | 2.3.4 Matriz de clasificación de la información y matriz de controles |  | 20d | 2027-03-01 | 2027-03-29 | 6FS+13d | 20 |
| 30 | 2.6.1 Informe de investigación con usuarios de terreno |  | 20d | 2027-03-01 | 2027-03-29 | 4FS+13d | 20 |
| 31 | 7.2.1 Innovación 2: informe de medición inicial y contrato de evidencia (INN-02.P1) |  | 36d | 2027-03-01 | 2027-04-20 | 8FS+13d | 36 |
| 32 | 8.1.1 Especificación de compra de equipos de uso para el CLIENTE |  | 7d | 2027-03-01 | 2027-03-09 | 8FS+13d | 7 |
| 33 | 8.2.1 Contrato de los servicios de AWS |  | 7d | 2027-03-01 | 2027-03-09 | 26SS | 7 |
| 34 | 8.2.7 Contrato de SIM M2M y servicio satelital de los camiones con frío |  | 10d | 2027-03-01 | 2027-03-12 | 12SS+20d | 10 |
| 35 | 9.6.3 Diagnóstico del impacto organizacional por área y perfil, con agentes de cambio |  | 60d | 2027-03-01 | 2027-05-25 | 4FS+13d | 60 |
| 36 | 2.4.3 Plano de los gabinetes de borde de Concepción y de las plataformas de cross-docking |  | 19d | 2027-03-02 | 2027-03-29 | 10FS+1d | 19 |
| 37 | 8.1.2 Especificación y compra de la sala técnica, los racks, los servidores y los gabinetes de borde |  | 7d | 2027-03-02 | 2027-03-10 | 10FS+1d, 11FS+1d | 7 |
| 38 | H1 · Entrega de expediente | milestone | 0d | 2027-03-09 | 2027-03-09 | 20FS-1d, 24FS-1d | 0 |
| 39 | H1 · Revisión de la Contraparte (10 días hábiles) |  | 10d | 2027-03-10 | 2027-03-23 | 38FS+1d | 10 |
| 40 | H1 · Firma del acta | milestone | 0d | 2027-03-23 | 2027-03-23 | 39FS-1d | 0 |
| 41 | 1.6.1 Plan de Reversibilidad inicial |  | 7d | 2027-04-01 | 2027-04-09 | 26FS+2d | 7 |
| 42 | 2.3.3 Plan de respuesta a incidentes de seguridad |  | 12d | 2027-04-01 | 2027-04-16 | 28FS+2d | 12 |
| 43 | 2.5.1 Plan de continuidad del negocio (ISO 22301) y análisis de impacto |  | 21d | 2027-04-01 | 2027-04-29 | 26FS+2d | 21 |
| 44 | 2.5.2 Plan de continuidad TIC según ISO/IEC 27031 y plan de recuperación ante desastres |  | 21d | 2027-04-01 | 2027-04-29 | 26FS+2d, 43SS | 21 |
| 45 | 2.6.2 Prototipos y pruebas de usabilidad con participantes del CLIENTE |  | 21d | 2027-04-01 | 2027-04-29 | 30FS+2d | 21 |
| 46 | 2.7.1 Informe de validación del kit de cadena de frío en banco de pruebas |  | 22d | 2027-04-01 | 2027-04-30 | 12, 34FS+12d | 22 |
| 47 | 7.2.2 Innovación 2: circuito mínimo de reproducción en la preventa (INN-02.P2) |  | 49d | 2027-04-01 | 2027-06-09 | 31SS+22d, 54SF+36d | 49 |
| 48 | 7.3.1 Innovación 3: documento de familias priorizadas y parámetros aprobados (INN-03.P1) |  | 49d | 2027-04-01 | 2027-06-09 | 8FS+35d, 27SS+22d | 49 |
| 49 | 8.3.1 Piso técnico de la sala y recepción de obra civil de separación (BTT, cap. 6, RT-06.06, p. 15) |  | 14d | 2027-04-01 | 2027-04-20 | 37FS+14d | 14 |
| 50 | 8.3.2 Sistema de energía de la sala instalado (UPS N+1, generador y PDU) |  | 14d | 2027-04-01 | 2027-04-20 | 37FS+14d | 14 |
| 51 | 8.3.3 Hardware de climatización de precisión N+1 instalado |  | 14d | 2027-04-01 | 2027-04-20 | 37FS+14d | 14 |
| 52 | 8.3.4 Hardware de detección temprana de incendio y extinción por agente limpio instalado |  | 14d | 2027-04-01 | 2027-04-20 | 37FS+14d | 14 |
| 53 | 2.8.1 Acta de aprobación de la arquitectura, el plan de seguridad y el modelo de datos (H2) |  | 9d | 2027-04-19 | 2027-04-29 | 25FS+14d, 26FS+14d, 27FS+14d, 28FS+14d, 29FS+14d, 42 | 9 |
| 54 | 7.2.1 · Fin de referencia para la precedencia | milestone | 0d | 2027-04-20 | 2027-04-20 | 31FS-1d | 0 |
| 55 | H2 · Entrega de expediente | milestone | 0d | 2027-04-26 | 2027-04-26 | 56SS | 0 |
| 56 | H2 · Evidencia disponible (2.8.1) | milestone | 0d | 2027-04-26 | 2027-04-26 | 25FS+19d, 26FS+19d, 27FS+19d, 28FS+19d, 29FS+19d, 42FS+5d, 53SS+5d | 0 |
| 57 | H2 · Revisión de la Contraparte (10 días hábiles) |  | 10d | 2027-04-27 | 2027-05-10 | 55FS+1d | 10 |
| 58 | 2.8.1 · Cierre del paquete | milestone | 0d | 2027-04-29 | 2027-04-29 | 53FS-1d, 56SS+3d | 0 |
| 59 | 2.6.3 Indicadores de usabilidad comprometidos por transacción crítica |  | 20d | 2027-05-03 | 2027-05-31 | 45FS+1d | 20 |
| 60 | 2.7.2 Mapeo térmico por tipo de carrocería |  | 19d | 2027-05-03 | 2027-05-28 | 46 | 19 |
| 61 | 3.1.4 Cadena de integración y entrega continua, e infraestructura como código |  | 20d | 2027-05-03 | 2027-05-31 | 62SS | 20 |
| 62 | 3.2.1 Servicio de nube para la aplicación y los portales |  | 20d | 2027-05-03 | 2027-05-31 | 33FS+37d | 20 |
| 63 | 3.2.2 Servicio de nube de base de datos, caché y mensajería |  | 20d | 2027-05-03 | 2027-05-31 | 33FS+37d | 20 |
| 64 | 3.2.3 Servicio de nube de ingesta de IoT, telemetría cruda y plataforma analítica |  | 20d | 2027-05-03 | 2027-05-31 | 33FS+37d | 20 |
| 65 | 3.2.4 Servicio de nube de respaldo inmutable y réplica entre regiones |  | 20d | 2027-05-03 | 2027-05-31 | 33FS+37d | 20 |
| 66 | 3.2.5 Servicio de nube de seguridad y gobierno, y detección en endpoints |  | 20d | 2027-05-03 | 2027-05-31 | 33FS+37d | 20 |
| 67 | 8.2.2 Suscripción del servicio de gestión de dispositivos y de detección en endpoints |  | 7d | 2027-05-03 | 2027-05-11 | 33FS+37d | 7 |
| 68 | 8.2.4 Contrato de fibra óptica de los CD de Talca y Concepción |  | 7d | 2027-05-03 | 2027-05-11 | 26FS+24d | 7 |
| 69 | 8.2.5 Contrato de planes LTE con dos proveedores (ocho planes) |  | 7d | 2027-05-03 | 2027-05-11 | 26FS+24d | 7 |
| 70 | 8.2.6 Contrato de Starlink para los cinco sitios |  | 7d | 2027-05-03 | 2027-05-11 | 36FS+24d | 7 |

Notes:
- 1: 80 HH · responsable JP · ejecución JP · Inicio del contrato
- 2: 80 HH · responsable JP · ejecución JP · 1.1.1 CC
- 3: 80 HH · responsable JP · ejecución JP · 1.1.1 CC
- 4: 80 HH · responsable JP · ejecución JP · 1.1.1 CC
- 5: 80 HH · responsable JP · ejecución JP · 1.3.1 CC
- 6: 80 HH · responsable SEG · ejecución SEG · 1.1.1 CC
- 7: 80 HH · responsable SEG · ejecución SEG · 1.1.1 CC
- 8: 80 HH · responsable ARQ · ejecución ARQ · 1.1.2 CC
- 9: 80 HH · responsable ARQ · ejecución ARQ · 1.1.1 CC
- 10: 240 HH · responsable SRE · ejecución SRE · Inicio del contrato
- 11: 240 HH · responsable SRE · ejecución SRE · 2.4.1 CC
- 12: 240 HH · responsable ARQ · ejecución ARQ · Disponibilidad de la especificación del SD4 al inicio (ARQ); ocho semanas de homologación móvil
- 15: Insumo externo del SD4; Arquitectura confirma disponibilidad al inicio.
- 17: 80 HH · responsable JP · ejecución JP · 1.1.1
- 18: 80 HH · responsable JP · ejecución JP · 2.1.1
- 19: 80 HH · responsable JP · ejecución JP · 1.2.2 CC
- 20: 80 HH · responsable JP · ejecución JP · 1.2.3 CC
- 21: 80 HH · responsable CAL · ejecución CAL · 2.1.1
- 22: 80 HH · responsable JP · ejecución JP · 1.2.1
- 23: 80 HH · responsable SEG · ejecución SEG · 1.8.2
- 24: 80 HH · responsable CAL · ejecución CAL · 2.1.1, 1.2.2 CC
- 25: 240 HH · responsable ARQ · ejecución ARQ · 2.1.1 (D-01, por etapa)
- 26: 240 HH · responsable ARQ · ejecución ARQ · 2.1.1, 2.4.1 CC
- 27: 240 HH · responsable DAT · ejecución DAT · 2.1.1
- 28: 240 HH · responsable SEG · ejecución SEG · 1.8.1, 2.2.1 CC
- 29: 240 HH · responsable SEG · ejecución SEG · 1.8.1
- 30: 240 HH · responsable IMP · ejecución IMP · 1.3.1
- 31: 240 HH · responsable CAL · ejecución CAL · 2.1.1
- 32: 80 HH · responsable ARQ · ejecución ARQ · 2.1.1
- 33: 80 HH · responsable SRE · ejecución SRE · 2.2.2 CC
- 34: 80 HH · responsable SRE · ejecución SRE · 8.1.4 (especificación, CC); servicio de banco antes de 2.7.1
- 35: 160 HH · responsable IMP · ejecución IMP · 1.3.1
- 36: 240 HH · responsable SRE · ejecución SRE · 2.4.1
- 37: 80 HH · responsable ARQ · ejecución ARQ · 2.4.1, 2.4.2 (D-09)
- 41: 80 HH · responsable JP · ejecución JP · 2.2.2
- 42: 240 HH · responsable SEG · ejecución SEG · 2.3.1
- 43: 240 HH · responsable SRE · ejecución SRE · 2.2.2
- 44: 240 HH · responsable SRE · ejecución SRE · 2.2.2, 2.5.1 CC
- 45: 240 HH · responsable IMP · ejecución IMP · 2.6.1
- 46: 341.33 HH · responsable SRE · ejecución SRE · 8.1.4, 8.2.7; prototipo Greengrass y TC58e
- 47: 240 HH · responsable CAL · ejecución CAL · 7.2.1 (contrato de evidencia)
- 48: 240 HH · responsable DAT · ejecución DAT · 2.1.1, 2.2.3 CC
- 49: 160 HH · responsable SRE · ejecución RED · 8.1.2 (D-10)
- 50: 160 HH · responsable SRE · ejecución RED · 8.1.2 (D-10)
- 51: 160 HH · responsable SRE · ejecución RED · 8.1.2 (D-10)
- 52: 160 HH · responsable SRE · ejecución RED · 8.1.2 (D-10)
- 53: 240 HH · responsable ARQ · ejecución ARQ · 2.2.1–2.2.3, 2.3.1, 2.3.3, 2.3.4
- 54: 240 HH · responsable CAL · ejecución CAL · 2.1.1
- 56: Expediente de arquitectura, seguridad y datos; cierre administrativo posterior
- 58: 240 HH · responsable ARQ · ejecución ARQ · 2.2.1–2.2.3, 2.3.1, 2.3.3, 2.3.4
- 59: 240 HH · responsable IMP · ejecución IMP · 2.6.2
- 60: 240 HH · responsable ARQ · ejecución ARQ · 2.7.1; Calidad del CLIENTE
- 61: 240 HH · responsable SRE · ejecución SRE · 3.2.1 CC; habilitación para QA tras el acta H2
- 62: 240 HH · responsable SRE · ejecución SRE · 8.2.1 (D-07)
- 63: 240 HH · responsable SRE · ejecución SRE · 8.2.1 (D-07)
- 64: 240 HH · responsable SRE · ejecución SRE · 8.2.1 (D-07)
- 65: 240 HH · responsable SRE · ejecución SRE · 8.2.1 (D-07)
- 66: 240 HH · responsable SEG · ejecución SEG · 8.2.1 (D-07)
- 67: 80 HH · responsable SRE · ejecución SRE · 8.2.1
- 68: 80 HH · responsable SRE · ejecución SRE · 2.2.2
- 69: 80 HH · responsable SRE · ejecución SRE · 2.2.2
- 70: 80 HH · responsable SRE · ejecución SRE · 2.4.3

| ID | Task | Type | Duration | Start | Finish | Predecessors | Días hábiles T-15 |
| --- | --- | --- | --- | --- | --- | --- | --- |
| 71 | 8.3.5 Acta de recepción técnica de la sala |  | 14d | 2027-05-03 | 2027-05-20 | 37FS+36d, 49FS+8d, 50FS+8d, 51FS+8d, 52FS+8d | 14 |
| 72 | 8.4.1 Cableado de cobre Cat6A y fibra OM4 tendido, con dos ductos de ingreso independientes |  | 14d | 2027-05-03 | 2027-05-20 | 11FS+44d, 49FS+8d | 14 |
| 73 | 8.4.6 Gabinete de borde de Concepción montado |  | 14d | 2027-05-03 | 2027-05-20 | 36FS+24d, 37FS+36d | 14 |
| 74 | H2 · Firma del acta | milestone | 0d | 2027-05-10 | 2027-05-10 | 57FS-1d | 0 |
| 75 | 8.2.3 Licencias de software de terceros constituidas a nombre del CLIENTE |  | 7d | 2027-05-11 | 2027-05-19 | 74FS+1d | 7 |
| 76 | 3.1.4 · Habilitación de la cadena para QA | milestone | 0d | 2027-05-12 | 2027-05-12 | 61SS+7d, 74FS+2d | 0 |
| 77 | 8.4.4 Rack R01 de servidores montado y traslado del servidor ERP |  | 35d | 2027-05-24 | 2027-07-13 | 71 | 34 |
| 78 | 8.4.5 Rack R02 de comunicaciones montado |  | 13d | 2027-05-24 | 2027-06-09 | 71 | 13 |
| 79 | 3.1.4 · Cierre del paquete | milestone | 0d | 2027-05-31 | 2027-05-31 | 61FS-1d, 76SS+12d | 0 |
| 80 | 3.1.1 Ambientes de Desarrollo y QA en la nube (H3) |  | 14d | 2027-06-01 | 2027-06-18 | 62, 63, 65, 66, 79SS+1d | 14 |
| 81 | 3.1.2 Ambientes de Preproducción y Producción en la nube (H3) |  | 14d | 2027-06-01 | 2027-06-18 | 62, 63, 65, 66 | 14 |
| 82 | 3.1.3 Ambiente de recuperación ante desastres en la región secundaria (H3) |  | 14d | 2027-06-01 | 2027-06-18 | 62, 63, 65, 66 | 14 |
| 83 | 3.1.5 Observabilidad de los doce módulos y de los sitios, con tableros para el CLIENTE (H3) |  | 14d | 2027-06-01 | 2027-06-18 | 80SS | 14 |
| 84 | 3.2.6 Servicio de gestión de dispositivos móviles |  | 19d | 2027-06-01 | 2027-06-29 | 33FS+57d | 19 |
| 85 | 3.3.1 Identidad y control de acceso (incluidos conductores externos) |  | 46d | 2027-06-01 | 2027-08-06 | 28FS+44d | 45 |
| 86 | 3.3.2 Registro auditable de stock, lotes y cobros |  | 44d | 2027-06-01 | 2027-08-04 | 27FS+44d, 74FS+15d | 43 |
| 87 | 5.1.1 Integración con el ERP como único emisor de la guía de despacho (INT-06 e INT-07) |  | 21d | 2027-06-01 | 2027-07-01 | 9FS+77d | 21 |
| 88 | 5.1.2 Mecanismo de convivencia con el WMS de 2013 |  | 25d | 2027-06-01 | 2027-07-07 | 9FS+77d, 74FS+15d | 25 |
| 89 | 7.2.3 Innovación 2: captura de evidencia en las aplicaciones de preventa, preparación y reparto (INN-02.P3) |  | 91d | 2027-06-01 | 2027-10-12 | 47SS+42d, 95SF+85d | 90 |
| 90 | 8.1.3 Actas de recepción técnica de equipamiento de terreno e infraestructura |  | 7d | 2027-06-01 | 2027-06-09 | 32FS+57d, 37FS+56d | 7 |
| 91 | 8.5.1 Hardware de control de acceso biométrico y esclusa instalado |  | 14d | 2027-06-01 | 2027-06-18 | 71FS+6d | 14 |
| 92 | 3.3.3 Operación sin conexión: 14 horas en terreno y 24 horas en el CD |  | 40d | 2027-06-07 | 2027-08-04 | 74FS+19d, 85SS+4d | 39 |
| 93 | 7.3.2 Innovación 3: asociación lote–sensor en el borde y en el camión (INN-03.P2) |  | 73d | 2027-06-07 | 2027-09-21 | 48SS+46d, 96SF+71d | 72 |
| 94 | 8.5.2 Hardware de videovigilancia instalado |  | 13d | 2027-06-07 | 2027-06-24 | 71FS+10d | 13 |
| 95 | 7.2.2 · Fin de referencia para la precedencia | milestone | 0d | 2027-06-09 | 2027-06-09 | 47FS-1d | 0 |
| 96 | 7.3.1 · Fin de referencia para la precedencia | milestone | 0d | 2027-06-09 | 2027-06-09 | 48FS-1d | 0 |
| 97 | 8.4.4 · Rack R01 montado | milestone | 0d | 2027-06-09 | 2027-06-09 | 77SS+12d | 0 |
| 98 | 4.1.1 Recepción de mercadería con captura de lote y vencimiento (M1 Recepción) |  | 39d | 2027-06-10 | 2027-08-06 | 45FS+28d, 74FS+22d, 79SF+47d, 80FF+32d, 81FF+32d, 82FF+32d, 83FF+32d, 85SS+7d, 86SS+7d, 87SS+7d, 88SS+7d, 92SS+3d, 101SS | 38 |
| 99 | 4.1.2 Inventario por ubicación y lote, con FEFO y conteo cíclico (M2 Inventario) |  | 34d | 2027-06-10 | 2027-07-30 | 45FS+28d, 74FS+22d, 79SF+42d, 80FF+27d, 81FF+27d, 82FF+27d, 83FF+27d, 85SS+7d, 86SS+7d, 87SS+7d, 88SS+7d, 92SS+3d, 101SS | 33 |
| 100 | 4.3.1 Aplicación móvil de preventa sin conexión, con stock y crédito (M3 Preventa) |  | 38d | 2027-06-10 | 2027-08-05 | 45FS+28d, 74FS+22d, 79SF+46d, 80FF+31d, 81FF+31d, 82FF+31d, 83FF+31d, 85SS+7d, 86SS+7d, 87SS+7d, 88SS+7d, 92SS+3d, 99SS, 101SS | 37 |
| 101 | 5.1.3 Integración con la telemetría de los 42 camiones propios (INT-15) |  | 22d | 2027-06-10 | 2027-07-13 | 9FS+84d, 64FS+7d | 21 |
| 102 | 8.7.1 Software de base instalado en los cinco sitios |  | 13d | 2027-06-10 | 2027-06-30 | 73FS+13d, 78, 97FS+1d | 13 |
| 103 | 8.7.2 Enlaces de fibra, LTE y Starlink habilitados, con conmutación al respaldo |  | 13d | 2027-06-10 | 2027-06-30 | 73FS+13d, 78, 97FS+1d | 13 |
| 104 | 8.7.3 Borde de los CD en servicio, con la prueba de autonomía de 24 horas aprobada |  | 7d | 2027-06-10 | 2027-06-18 | 73FS+13d, 78, 97FS+1d | 7 |
| 105 | Seguimiento de construcción E1 · 15/06/2027 | milestone | 0d | 2027-06-15 | 2027-06-15 |  | 0 |
| 106 | 4.1.2 → 4.1.3 · Contrato de interfaz disponible | milestone | 0d | 2027-06-16 | 2027-06-16 | 99SS+4d | 0 |
| 107 | 4.1.2 → 4.2.1 · Contrato de interfaz disponible | milestone | 0d | 2027-06-16 | 2027-06-16 | 99SS+4d | 0 |
| 108 | 4.3.1 → 4.3.2 · Contrato de interfaz disponible | milestone | 0d | 2027-06-16 | 2027-06-16 | 100SS+4d | 0 |
| 109 | 4.3.1 → 4.3.3 · Contrato de interfaz disponible | milestone | 0d | 2027-06-16 | 2027-06-16 | 100SS+4d | 0 |
| 110 | 4.1.3 Preparación de pedidos en el turno de noche y en la cámara de congelado (M5 Preparación) |  | 33d | 2027-06-18 | 2027-08-06 | 45FS+34d, 74FS+28d, 79SF+47d, 80FF+32d, 81FF+32d, 82FF+32d, 83FF+32d, 85SS+13d, 86SS+13d, 87SS+13d, 88SS+13d, 92SS+9d, 99SS+6d, 101SS+6d | 32 |
| 111 | 4.2.1 Cadena de frío, retención por SSCC y retiro sanitario (M9 Calidad y trazabilidad) |  | 46d | 2027-06-18 | 2027-08-25 | 45FS+34d, 46FS+33d, 60FS+14d, 74FS+28d, 79SF+60d, 80FF+45d, 81FF+45d, 82FF+45d, 83FF+45d, 85SS+13d, 86SS+13d, 87SS+13d, 88SS+13d, 92SS+9d, 99SS+6d, 101SS+6d | 45 |
| 112 | 4.2.2 Ingesta de temperatura (M9) y posición de flota (M12) |  | 40d | 2027-06-18 | 2027-08-17 | 45FS+34d, 46FS+33d, 60FS+14d, 64FS+13d, 74FS+28d, 79SF+54d, 80FF+39d, 81FF+39d, 82FF+39d, 83FF+39d, 85SS+13d, 86SS+13d, 87SS+13d, 88SS+13d, 92SS+9d, 99SS+6d, 101SS+6d | 39 |
| 113 | 4.1.1 → 4.1.3 · Contrato de interfaz disponible | milestone | 0d | 2027-06-18 | 2027-06-18 | 98SS+6d | 0 |
| 114 | 4.1.1 → 4.2.1 · Contrato de interfaz disponible | milestone | 0d | 2027-06-18 | 2027-06-18 | 98SS+6d | 0 |
| 115 | 8.5.3 Recinto de custodia de respaldos habilitado |  | 13d | 2027-06-22 | 2027-07-09 | 91 | 13 |
| 116 | H3 · Entrega de expediente | milestone | 0d | 2027-06-22 | 2027-06-22 | 80, 81, 82, 83, 104 | 0 |
| 117 | H3 · Revisión de la Contraparte (10 días hábiles) |  | 10d | 2027-06-23 | 2027-07-07 | 116FS+1d | 10 |
| 118 | 4.1.3 → 4.3.2 · Contrato de interfaz disponible | milestone | 0d | 2027-06-25 | 2027-06-25 | 110SS+4d | 0 |
| 119 | 4.1.3 → 4.3.3 · Contrato de interfaz disponible | milestone | 0d | 2027-06-25 | 2027-06-25 | 110SS+4d | 0 |
| 120 | 4.1.3 · Construcción dependiente de 4.1.1 | milestone | 0d | 2027-06-29 | 2027-06-29 | 113FS+5d | 0 |
| 121 | 4.2.1 · Construcción dependiente de 4.1.1 | milestone | 0d | 2027-06-29 | 2027-06-29 | 114FS+5d | 0 |
| 122 | 4.1.3 · Construcción dependiente de 4.1.2 | milestone | 0d | 2027-06-29 | 2027-06-29 | 106FS+7d | 0 |
| 123 | 4.2.1 · Construcción dependiente de 4.1.2 | milestone | 0d | 2027-06-29 | 2027-06-29 | 107FS+7d | 0 |
| 124 | Seguimiento de construcción E1 · 30/06/2027 | milestone | 0d | 2027-06-30 | 2027-06-30 |  | 0 |
| 125 | 5.2.2 Integración con la pasarela de pago para el cobro con tarjeta (INT-09) |  | 23d | 2027-07-01 | 2027-08-03 | 9FS+97d | 22 |
| 126 | 8.4.2 Certificación de enlaces, etiquetado y planos as-built |  | 14d | 2027-07-01 | 2027-07-21 | 72FS+26d | 13 |
| 127 | H3 · Firma del acta | milestone | 0d | 2027-07-07 | 2027-07-07 | 117FS-1d | 0 |
| 128 | 8.4.4 · Traslado dominical del ERP a R01 | milestone | 0d | 2027-07-11 | 2027-07-11 | 97FS+21d, 127FS+3d | 0 |
| 129 | 8.4.4 · Cierre del paquete | milestone | 0d | 2027-07-12 | 2027-07-12 | 77FS-1d, 128SS+1d | 0 |
| 130 | Seguimiento de construcción E1 · 15/07/2027 | milestone | 0d | 2027-07-15 | 2027-07-15 |  | 0 |
| 131 | 5.2.4 Integración con el servicio de avisos al cliente (INT-11) |  | 20d | 2027-07-20 | 2027-08-16 | 9FS+110d | 20 |
| 132 | 4.1.2 · Cierre del paquete | milestone | 0d | 2027-07-29 | 2027-07-29 | 99FS-1d, 133SS, 134SS | 0 |
| 133 | 4.1.2 → 4.1.3 · Incremento para integración | milestone | 0d | 2027-07-29 | 2027-07-29 | 106FS+29d | 0 |
| 134 | 4.1.2 → 4.2.1 · Incremento para integración | milestone | 0d | 2027-07-29 | 2027-07-29 | 107FS+29d | 0 |
| 135 | Entrega a QA · 4.1.2 | milestone | 0d | 2027-07-29 | 2027-07-29 | 132SS | 0 |
| 136 | 4.3.4 Devoluciones en terreno y control de envases (M8 Devoluciones y envases) |  | 34d | 2027-07-30 | 2027-09-15 | 45FS+62d, 74FS+56d, 79SF+76d, 80FF+61d, 81FF+61d, 82FF+61d, 83FF+61d, 85SS+41d, 86SS+41d, 87SS+41d, 88SS+41d, 92SS+37d, 101SS+34d, 132SS+1d | 34 |
| 137 | Demostración de módulos en QA E1 · 30/07/2027 | milestone | 0d | 2027-07-30 | 2027-07-30 | 135SS+1d | 0 |
| 138 | Seguimiento de construcción E1 · 30/07/2027 | milestone | 0d | 2027-07-30 | 2027-07-30 |  | 0 |
| 139 | 5.2.1 Intercambio de lote y trazabilidad con los proveedores |  | 23d | 2027-08-02 | 2027-09-01 | 3FS+119d | 23 |
| 140 | 6.8.7 Contrato de custodia de fuentes con un tercero independiente |  | 7d | 2027-08-02 | 2027-08-10 | 79SS+43d | 7 |

Notes:
- 71: 160 HH · responsable SRE · ejecución RED · 8.1.2, 8.3.1–8.3.4 (recepción)
- 72: 160 HH · responsable SRE · ejecución RED · 8.3.1, 2.4.2
- 73: 160 HH · responsable SRE · ejecución RED · 2.4.3, 8.1.2
- 75: 80 HH · responsable ARQ · ejecución ARQ · 2.8.1
- 77: 160 HH · responsable SRE · ejecución RED · 8.3.5 (D-11); montaje al 09-06; traslado dominical tras acta H3 y verificación posterior (D-12)
- 78: 160 HH · responsable SRE · ejecución RED · 8.3.5 (D-11)
- 79: 240 HH · responsable SRE · ejecución SRE · 3.2.1 CC; habilitación para QA tras el acta H2
- 80: 240 HH · responsable SRE · ejecución SRE · 3.2.1, 3.2.2, 3.2.4, 3.2.5 (D-08)
- 81: 240 HH · responsable SRE · ejecución SRE · 3.2.1, 3.2.2, 3.2.4, 3.2.5 (D-08)
- 82: 240 HH · responsable SRE · ejecución SRE · 3.2.1, 3.2.2, 3.2.4, 3.2.5 (D-08)
- 83: 240 HH · responsable SRE · ejecución SRE · 3.1.1 CC
- 84: 240 HH · responsable SRE · ejecución SRE · 8.2.1 (D-07)
- 85: 480 HH · responsable SEG · ejecución SEG · 2.3.1 (D-06)
- 86: 480 HH · responsable ARQ · ejecución ARQ · 2.2.3, 2.8.1
- 87: 516 HH · responsable ARQ · ejecución ARQ · 2.1.5 (D-02)
- 88: 480 HH · responsable ARQ · ejecución ARQ · 2.1.5, 2.8.1
- 89: 240 HH · responsable CAL · ejecución CAL · 7.2.2 (circuito mínimo)
- 90: 80 HH · responsable SRE · ejecución SRE · 8.1.1, 8.1.2
- 91: 160 HH · responsable SEG · ejecución SEG · 8.3.5
- 92: 480 HH · responsable ARQ · ejecución ARQ · 2.8.1, 3.3.1 CC
- 93: 240 HH · responsable DAT · ejecución DAT · 7.3.1 (parámetros aprobados)
- 94: 160 HH · responsable SEG · ejecución SEG · 8.3.5
- 95: 240 HH · responsable CAL · ejecución CAL · 7.2.1 (contrato de evidencia)
- 96: 240 HH · responsable DAT · ejecución DAT · 2.1.1, 2.2.3 CC
- 98: 880.33 HH · responsable DES · ejecución DES · 2.8.1, 2.6.2, 3.1 (QA), 3.3.1–3.3.3 (CC), 5.1 (CC)
- 99: 1006.67 HH · responsable DES · ejecución DES · 2.8.1, 2.6.2, 3.1 (QA), 3.3.1–3.3.3 (CC), 5.1 (CC)
- 100: 1314.17 HH · responsable DES · ejecución DES · 2.8.1, 2.6.2, 3.1 (QA), 3.3.1–3.3.3 (CC), 5.1 (CC), 4.1.2 (CC)
- 101: 480 HH · responsable ARQ · ejecución ARQ · 2.1.5, 3.2.3
- 102: 160 HH · responsable SRE · ejecución SRE · Montaje 8.4.4, 8.4.5 y 8.4.6 (D-12)
- 103: 160 HH · responsable SRE · ejecución RED · Montaje 8.4.4, 8.4.5 y 8.4.6 (D-12)
- 104: 160 HH · responsable SRE · ejecución RED · Montaje 8.4.4, 8.4.5 y 8.4.6 (D-12)
- 105: Líder de Desarrollo: estado, horas, pruebas y bloqueos. EDT: 4.1.1, 4.1.2, 4.3.1.
- 110: 973.83 HH · responsable DES · ejecución DES · 2.8.1, 2.6.2, 3.1 (QA), 3.3.1–3.3.3 (CC), 5.1 (CC), 4.1.1/4.1.2 (interfaz), 4.1.2 CC
- 111: 1587.33 HH · responsable DES · ejecución DES · 2.8.1, 2.6.2, 3.1 (QA), 3.3.1–3.3.3 (CC), 5.1 (CC), 4.1.1/4.1.2 (interfaz), 2.7.1, 2.7.2, 4.1.2 CC
- 112: 919.5 HH · responsable DES · ejecución DES · 2.8.1, 2.6.2, 3.1 (QA), 3.2.3, 3.3.1–3.3.3 (CC), 5.1 (CC), 2.7.1, 2.7.2, 4.1.2 CC
- 115: 160 HH · responsable SEG · ejecución SEG · 8.5.1
- 124: Líder de Desarrollo: estado, horas, pruebas y bloqueos. EDT: 4.1.1, 4.1.2, 4.1.3, 4.2.1, 4.2.2, 4.3.1.
- 125: 480 HH · responsable DES · ejecución DES · 2.1.5
- 126: 160 HH · responsable SRE · ejecución RED · 8.4.1
- 128: Ventana especial sin cambios de software; respaldo completo verificado.
- 129: 160 HH · responsable SRE · ejecución RED · 8.3.5 (D-11); montaje al 09-06; traslado dominical tras acta H3 y verificación posterior (D-12)
- 130: Líder de Desarrollo: estado, horas, pruebas y bloqueos. EDT: 4.1.1, 4.1.2, 4.1.3, 4.2.1, 4.2.2, 4.3.1.
- 131: 480 HH · responsable DES · ejecución DES · 2.1.5
- 132: 1006.67 HH · responsable DES · ejecución DES · 2.8.1, 2.6.2, 3.1 (QA), 3.3.1–3.3.3 (CC), 5.1 (CC)
- 135: Líder de Desarrollo y Calidad: versión desplegada e integración registrada.
- 136: 588 HH · responsable DES · ejecución DES · 2.8.1, 2.6.2, 3.1 (QA), 3.3.1–3.3.3 (CC), 5.1 (CC), 4.1.2
- 137: Líder Funcional y Calidad: versión y observaciones. EDT: 4.1.2.
- 138: Líder de Desarrollo: estado, horas, pruebas y bloqueos. EDT: 4.1.1, 4.1.2, 4.1.3, 4.2.1, 4.2.2, 4.3.1, 4.3.4.
- 139: 480 HH · responsable DAT · ejecución DAT · 1.1.3
- 140: 80 HH · responsable JP · ejecución JP · 3.1.4

| ID | Task | Type | Duration | Start | Finish | Predecessors | Días hábiles T-15 |
| --- | --- | --- | --- | --- | --- | --- | --- |
| 141 | 7.1.1 Innovación 1: documento de catálogo de acciones y protocolo del piloto (INN-01.P1) |  | 49d | 2027-08-02 | 2027-10-08 | 74FS+57d | 49 |
| 142 | 8.4.3 Gabinetes de piso y switches de acceso instalados en las bodegas de Talca y Concepción |  | 14d | 2027-08-02 | 2027-08-19 | 36FS+86d, 126FS+8d | 14 |
| 143 | 4.1.1 → 4.1.3 · Incremento para integración | milestone | 0d | 2027-08-02 | 2027-08-02 | 113FS+29d | 0 |
| 144 | 4.1.3 · Integración con 4.1.1 | milestone | 0d | 2027-08-03 | 2027-08-03 | 120SS+25d, 143FS+1d | 0 |
| 145 | 4.1.3 · Integración con 4.1.2 | milestone | 0d | 2027-08-03 | 2027-08-03 | 122SS+25d, 133FS+3d | 0 |
| 146 | 5.4.1 Informe de perfilamiento y datos saneados |  | 42d | 2027-08-04 | 2027-10-01 | 27FS+88d, 87FS+23d | 42 |
| 147 | 4.3.1 · Cierre del paquete | milestone | 0d | 2027-08-04 | 2027-08-04 | 100FS-1d, 148SS, 149SS | 0 |
| 148 | 4.3.1 → 4.3.2 · Incremento para integración | milestone | 0d | 2027-08-04 | 2027-08-04 | 108FS+33d | 0 |
| 149 | 4.3.1 → 4.3.3 · Incremento para integración | milestone | 0d | 2027-08-04 | 2027-08-04 | 109FS+33d | 0 |
| 150 | Entrega a QA · 4.3.1 | milestone | 0d | 2027-08-04 | 2027-08-04 | 147SS | 0 |
| 151 | 4.3.3 Aplicación móvil de reparto con prueba de entrega digital (M6 Reparto) |  | 37d | 2027-08-05 | 2027-09-27 | 45FS+66d, 74FS+60d, 79SF+83d, 80FF+68d, 81FF+68d, 82FF+68d, 83FF+68d, 85SS+45d, 86SS+45d, 87SS+45d, 88SS+45d, 92SS+41d, 101SS+38d, 147SS+1d | 37 |
| 152 | 4.1.1 · Cierre del paquete | milestone | 0d | 2027-08-05 | 2027-08-05 | 98FS-1d, 143SS+3d, 154SS | 0 |
| 153 | 4.1.3 · Cierre del paquete | milestone | 0d | 2027-08-05 | 2027-08-05 | 110FS-1d, 144SS+2d, 145SS+2d, 155SS, 156SS | 0 |
| 154 | 4.1.1 → 4.2.1 · Incremento para integración | milestone | 0d | 2027-08-05 | 2027-08-05 | 114FS+32d | 0 |
| 155 | 4.1.3 → 4.3.2 · Incremento para integración | milestone | 0d | 2027-08-05 | 2027-08-05 | 118FS+28d | 0 |
| 156 | 4.1.3 → 4.3.3 · Incremento para integración | milestone | 0d | 2027-08-05 | 2027-08-05 | 119FS+28d | 0 |
| 157 | Entrega a QA · 4.1.1 | milestone | 0d | 2027-08-05 | 2027-08-05 | 152SS | 0 |
| 158 | Entrega a QA · 4.1.3 | milestone | 0d | 2027-08-05 | 2027-08-05 | 153SS | 0 |
| 159 | 4.3.2 Planificación de rutas corregible por el planificador (M4 Rutas) |  | 31d | 2027-08-06 | 2027-09-20 | 13FS+66d, 45FS+67d, 74FS+61d, 79SF+78d, 80FF+63d, 81FF+63d, 82FF+63d, 83FF+63d, 85SS+46d, 86SS+46d, 87SS+46d, 88SS+46d, 92SS+42d, 101SS+39d, 152SS+1d | 31 |
| 160 | 4.3.3 → 4.3.5 · Contrato de interfaz disponible | milestone | 0d | 2027-08-10 | 2027-08-10 | 151SS+3d | 0 |
| 161 | 4.3.5 Cobro en ruta, rendición y conciliación (M7 Cobranza y rendición) |  | 36d | 2027-08-11 | 2027-09-30 | 45FS+70d, 74FS+64d, 79SF+86d, 80FF+71d, 81FF+71d, 82FF+71d, 83FF+71d, 85SS+49d, 86SS+49d, 87SS+49d, 88SS+49d, 92SS+45d, 101SS+42d, 151SS+4d | 36 |
| 162 | 4.3.3 · Construcción dependiente de 4.1.3 | milestone | 0d | 2027-08-11 | 2027-08-11 | 119FS+32d | 0 |
| 163 | 4.3.3 · Construcción dependiente de 4.3.1 | milestone | 0d | 2027-08-11 | 2027-08-11 | 109FS+38d | 0 |
| 164 | 4.3.2 · Construcción dependiente de 4.1.3 | milestone | 0d | 2027-08-13 | 2027-08-13 | 118FS+34d | 0 |
| 165 | 4.3.2 · Construcción dependiente de 4.3.1 | milestone | 0d | 2027-08-13 | 2027-08-13 | 108FS+40d | 0 |
| 166 | Demostración de módulos en QA E1 · 13/08/2027 | milestone | 0d | 2027-08-13 | 2027-08-13 | 150SS+7d, 157SS+6d, 158SS+6d | 0 |
| 167 | Seguimiento de construcción E1 · 13/08/2027 | milestone | 0d | 2027-08-13 | 2027-08-13 |  | 0 |
| 168 | 5.2.3 Integración con el servicio de mapas y geocodificación (INT-10) |  | 20d | 2027-08-16 | 2027-09-10 | 9FS+129d | 20 |
| 169 | Entrega a QA · 4.2.2 | milestone | 0d | 2027-08-16 | 2027-08-16 | 112FS-1d | 0 |
| 170 | 4.3.5 · Construcción dependiente de 4.3.3 | milestone | 0d | 2027-08-18 | 2027-08-18 | 160FS+6d | 0 |
| 171 | 4.2.1 · Integración con 4.1.1 | milestone | 0d | 2027-08-20 | 2027-08-20 | 121SS+38d, 154FS+11d | 0 |
| 172 | 4.2.1 · Integración con 4.1.2 | milestone | 0d | 2027-08-20 | 2027-08-20 | 123SS+38d, 134FS+16d | 0 |
| 173 | 4.2.1 · Cierre del paquete | milestone | 0d | 2027-08-24 | 2027-08-24 | 111FS-1d, 171SS+2d, 172SS+2d | 0 |
| 174 | Entrega a QA · 4.2.1 | milestone | 0d | 2027-08-24 | 2027-08-24 | 173SS | 0 |
| 175 | 4.5.1 Indicadores operacionales y OTIF diario (M10 Analítica) |  | 25d | 2027-08-25 | 2027-09-29 | 45FS+80d, 74FS+74d, 79SF+85d, 80FF+70d, 81FF+70d, 82FF+70d, 83FF+70d, 85SS+59d, 86SS+59d, 87SS+59d, 88SS+59d, 92SS+55d, 101SS+52d, 173SS+1d | 25 |
| 176 | Demostración de módulos en QA E1 · 31/08/2027 | milestone | 0d | 2027-08-31 | 2027-08-31 | 169SS+11d, 174SS+5d | 0 |
| 177 | Seguimiento de construcción E1 · 31/08/2027 | milestone | 0d | 2027-08-31 | 2027-08-31 |  | 0 |
| 178 | 3.3.4 Parametrización y motor de reglas versionados |  | 21d | 2027-09-01 | 2027-09-30 | 74FS+79d, 86FS+20d | 21 |
| 179 | 3.3.5 Gestión documental con versionado, búsqueda y vista previa |  | 21d | 2027-09-01 | 2027-09-30 | 74FS+79d, 85FS+18d | 21 |
| 180 | 3.3.6 Generación de documentos con plantillas administrables |  | 21d | 2027-09-01 | 2027-09-30 | 74FS+79d, 179SS | 21 |
| 181 | 8.6.4 Kit de cadena de frío instalado y recibido en los 28 camiones con frío |  | 94d | 2027-09-01 | 2028-01-14 | 12FS+106d, 46FS+84d, 60FS+65d | 94 |
| 182 | 4.3.2 · Integración con 4.1.3 | milestone | 0d | 2027-09-15 | 2027-09-15 | 155FS+29d, 164SS+23d | 0 |
| 183 | 4.3.2 · Integración con 4.3.1 | milestone | 0d | 2027-09-15 | 2027-09-15 | 148FS+30d, 165SS+23d | 0 |
| 184 | Demostración de módulos en QA E1 · 15/09/2027 | milestone | 0d | 2027-09-15 | 2027-09-15 | 185SS | 0 |
| 185 | Entrega a QA · 4.3.4 | milestone | 0d | 2027-09-15 | 2027-09-15 | 136FS-1d | 0 |
| 186 | Seguimiento de construcción E1 · 15/09/2027 | milestone | 0d | 2027-09-15 | 2027-09-15 |  | 0 |
| 187 | 4.3.2 · Cierre del paquete | milestone | 0d | 2027-09-20 | 2027-09-20 | 159FS-1d, 182SS+2d, 183SS+2d | 0 |
| 188 | Entrega a QA · 4.3.2 | milestone | 0d | 2027-09-20 | 2027-09-20 | 187SS | 0 |
| 189 | 4.3.3 · Integración con 4.1.3 | milestone | 0d | 2027-09-24 | 2027-09-24 | 156FS+35d, 162SS+31d | 0 |
| 190 | 4.3.3 · Integración con 4.3.1 | milestone | 0d | 2027-09-24 | 2027-09-24 | 149FS+36d, 163SS+31d | 0 |
| 191 | 4.3.3 · Cierre del paquete | milestone | 0d | 2027-09-27 | 2027-09-27 | 151FS-1d, 189SS+1d, 190SS+1d, 192SS | 0 |
| 192 | 4.3.3 → 4.3.5 · Incremento para integración | milestone | 0d | 2027-09-27 | 2027-09-27 | 160FS+33d | 0 |
| 193 | Entrega a QA · 4.3.3 | milestone | 0d | 2027-09-27 | 2027-09-27 | 191SS | 0 |
| 194 | 4.3.5 · Integración con 4.3.3 | milestone | 0d | 2027-09-28 | 2027-09-28 | 170SS+28d, 192FS+1d | 0 |
| 195 | Entrega a QA · 4.5.1 | milestone | 0d | 2027-09-29 | 2027-09-29 | 175FS-1d | 0 |
| 196 | 4.3.5 · Cierre del paquete | milestone | 0d | 2027-09-30 | 2027-09-30 | 161FS-1d, 194SS+2d | 0 |
| 197 | 8.6.4 · Recepción parcial de cuatro kits | milestone | 0d | 2027-09-30 | 2027-09-30 | 181SS+20d | 0 |
| 198 | Demostración de módulos en QA E1 · 30/09/2027 | milestone | 0d | 2027-09-30 | 2027-09-30 | 188SS+8d, 193SS+3d, 195SS+1d, 199SS | 0 |
| 199 | Entrega a QA · 4.3.5 | milestone | 0d | 2027-09-30 | 2027-09-30 | 196SS | 0 |
| 200 | Seguimiento de construcción E1 · 30/09/2027 | milestone | 0d | 2027-09-30 | 2027-09-30 |  | 0 |
| 201 | 5.3.1 Intercambio electrónico certificado con la cadena principal (INT-08) |  | 171d | 2027-10-01 | 2028-06-02 | 9FS+162d, 81SS+85d, 261FF+23d | 169 |
| 202 | 7.1.2 Innovación 1: estimador de saldo y ritmo de reposición (INN-01.P2) |  | 34d | 2027-10-01 | 2027-11-19 | 141SS+43d, 213SF+29d | 34 |
| 203 | 7.1.3 Innovación 1: función de lista sin conexión en la aplicación de preventa (INN-01.P3) |  | 34d | 2027-10-01 | 2027-11-19 | 141SS+43d, 213SF+29d | 34 |
| 204 | 7.3.3 Innovación 3: vista en M9 y orden de salida sugerido (INN-03.P3) |  | 34d | 2027-10-01 | 2027-11-19 | 93FS+8d | 34 |
| 205 | 8.4.7 Gabinetes de borde de plataformas de cross-docking montados |  | 13d | 2027-10-01 | 2027-10-20 | 73FS+91d | 13 |
| 206 | 9.7.1 Acuerdos operacionales firmados con los diez transportistas |  | 7d | 2027-10-01 | 2027-10-12 | 5FS+162d, 35FS+89d | 7 |
| 207 | 9.7.2 Acta de acuerdo con el sindicato sobre terminales, GPS y cámaras |  | 7d | 2027-10-01 | 2027-10-12 | 35FS+89d | 7 |
| 208 | 5.4.2 Datos maestros cargados: 8.400 SKU, clientes e instalaciones |  | 21d | 2027-10-04 | 2027-11-03 | 146 | 21 |
| 209 | 6.1.1 Pruebas de integración, regresión e idempotencia en QA (H4) |  | 13d | 2027-10-05 | 2027-10-22 | 112FS+34d, 125FS+44d, 131FS+34d, 132SS+47d, 136FS+12d, 139FS+22d, 147SS+43d, 152SS+42d, 153SS+42d, 168FS+15d, 173SS+29d, 175FS+3d, 178FS+2d, 179FS+2d, 180FS+2d, 187SS+11d, 191SS+6d, 196SS+3d | 13 |
| 210 | 8.6.1 Terminales de preventa, reparto y bodega configurados y enrolados |  | 70d | 2027-10-06 | 2028-01-14 | 84FS+69d | 70 |

Notes:
- 141: 240 HH · responsable DAT · ejecución DAT · 2.8.1
- 142: 160 HH · responsable SRE · ejecución RED · 8.4.2, 2.4.3
- 146: 512 HH · responsable DAT · ejecución DAT · 2.2.3, 5.1.1
- 147: 1314.17 HH · responsable DES · ejecución DES · 2.8.1, 2.6.2, 3.1 (QA), 3.3.1–3.3.3 (CC), 5.1 (CC), 4.1.2 (CC)
- 150: Líder de Desarrollo y Calidad: versión desplegada e integración registrada.
- 151: 1586.67 HH · responsable DES · ejecución DES · 2.8.1, 2.6.2, 3.1 (QA), 3.3.1–3.3.3 (CC), 5.1 (CC), 4.1.3/4.3.1 (interfaz), 4.3.1
- 152: 880.33 HH · responsable DES · ejecución DES · 2.8.1, 2.6.2, 3.1 (QA), 3.3.1–3.3.3 (CC), 5.1 (CC)
- 153: 973.83 HH · responsable DES · ejecución DES · 2.8.1, 2.6.2, 3.1 (QA), 3.3.1–3.3.3 (CC), 5.1 (CC), 4.1.1/4.1.2 (interfaz), 4.1.2 CC
- 157: Líder de Desarrollo y Calidad: versión desplegada e integración registrada.
- 158: Líder de Desarrollo y Calidad: versión desplegada e integración registrada.
- 159: 937.67 HH · responsable DES · ejecución DES · 2.1.4, 2.8.1, 2.6.2, 3.1 (QA), 3.3.1–3.3.3 (CC), 5.1 (CC), 4.1.3/4.3.1 (interfaz), 4.1.1
- 161: 1248.33 HH · responsable DES · ejecución DES · 2.8.1, 2.6.2, 3.1 (QA), 3.3.1–3.3.3 (CC), 5.1 (CC), 4.3.3 (interfaz), 4.3.3 CC
- 166: Líder Funcional y Calidad: versión y observaciones. EDT: 4.1.1, 4.1.3, 4.3.1.
- 167: Líder de Desarrollo: estado, horas, pruebas y bloqueos. EDT: 4.1.1, 4.1.3, 4.2.1, 4.2.2, 4.3.1, 4.3.2, 4.3.3, 4.3.4, 4.3.5.
- 168: 480 HH · responsable DES · ejecución DES · 2.1.5
- 169: Líder de Desarrollo y Calidad: versión desplegada e integración registrada.
- 173: 1587.33 HH · responsable DES · ejecución DES · 2.8.1, 2.6.2, 3.1 (QA), 3.3.1–3.3.3 (CC), 5.1 (CC), 4.1.1/4.1.2 (interfaz), 2.7.1, 2.7.2, 4.1.2 CC
- 174: Líder de Desarrollo y Calidad: versión desplegada e integración registrada.
- 175: 836.5 HH · responsable DAT · ejecución DAT · 2.8.1, 2.6.2, 3.1 (QA), 3.3.1–3.3.3 (CC), 5.1 (CC), 4.2.1
- 176: Líder Funcional y Calidad: versión y observaciones. EDT: 4.2.1, 4.2.2.
- 177: Líder de Desarrollo: estado, horas, pruebas y bloqueos. EDT: 4.2.1, 4.2.2, 4.3.2, 4.3.3, 4.3.4, 4.3.5, 4.5.1.
- 178: 480 HH · responsable DES · ejecución DES · 2.8.1, 3.3.2
- 179: 480 HH · responsable DES · ejecución DES · 2.8.1, 3.3.1
- 180: 480 HH · responsable DES · ejecución DES · 2.8.1, 3.3.5 CC
- 181: 320 HH · responsable SRE · ejecución SRE · 8.1.4, 2.7.1, 2.7.2; cuatro kits al 30-09-2027 para 2.7.3
- 184: Líder Funcional y Calidad: versión y observaciones. EDT: 4.3.4.
- 185: Líder de Desarrollo y Calidad: versión desplegada e integración registrada.
- 186: Líder de Desarrollo: estado, horas, pruebas y bloqueos. EDT: 4.3.2, 4.3.3, 4.3.4, 4.3.5, 4.5.1.
- 187: 937.67 HH · responsable DES · ejecución DES · 2.1.4, 2.8.1, 2.6.2, 3.1 (QA), 3.3.1–3.3.3 (CC), 5.1 (CC), 4.1.3/4.3.1 (interfaz), 4.1.1
- 188: Líder de Desarrollo y Calidad: versión desplegada e integración registrada.
- 191: 1586.67 HH · responsable DES · ejecución DES · 2.8.1, 2.6.2, 3.1 (QA), 3.3.1–3.3.3 (CC), 5.1 (CC), 4.1.3/4.3.1 (interfaz), 4.3.1
- 193: Líder de Desarrollo y Calidad: versión desplegada e integración registrada.
- 195: Líder de Desarrollo y Calidad: versión desplegada e integración registrada.
- 196: 1248.33 HH · responsable DES · ejecución DES · 2.8.1, 2.6.2, 3.1 (QA), 3.3.1–3.3.3 (CC), 5.1 (CC), 4.3.3 (interfaz), 4.3.3 CC
- 198: Líder Funcional y Calidad: versión y observaciones. EDT: 4.3.2, 4.3.3, 4.3.5, 4.5.1.
- 199: Líder de Desarrollo y Calidad: versión desplegada e integración registrada.
- 200: Líder de Desarrollo: estado, horas, pruebas y bloqueos. EDT: 4.3.2, 4.3.3, 4.3.5, 4.5.1.
- 201: 516 HH · responsable DES · ejecución DES · 2.1.5 (perfil de intercambio), 3.1.2 CC, 4.4.1 (QA)
- 202: 240 HH · responsable DAT · ejecución DAT · 7.1.1 (protocolo inicial)
- 203: 240 HH · responsable DAT · ejecución DAT · 7.1.1 (protocolo inicial)
- 204: 240 HH · responsable DAT · ejecución DAT · 7.3.2
- 205: 160 HH · responsable SRE · ejecución RED · 8.4.6
- 206: 80 HH · responsable IMP · ejecución IMP · 1.3.2, 9.6.3
- 207: 80 HH · responsable IMP · ejecución IMP · 9.6.3
- 208: 504 HH · responsable DAT · ejecución DAT · 5.4.1
- 209: 160 HH · responsable CAL · ejecución CAL · 3.3.4–3.3.6, 4.1.1–4.1.3, 4.2.1–4.2.2, 4.3.1–4.3.5, 4.5.1, 5.2.1–5.2.4 (D-20)
- 210: 160 HH · responsable SRE · ejecución SRE · 3.2.6

| ID | Task | Type | Duration | Start | Finish | Predecessors | Días hábiles T-15 |
| --- | --- | --- | --- | --- | --- | --- | --- |
| 211 | 8.6.3 Sensores de cámara y gateways IoT instalados en Talca y Concepción |  | 35d | 2027-10-06 | 2027-11-25 | 90FS+81d, 142FS+32d | 35 |
| 212 | 8.6.6 Impresoras de andén y balanzas de recepción instaladas |  | 70d | 2027-10-06 | 2028-01-14 | 90FS+81d, 142FS+32d | 70 |
| 213 | 7.1.1 · Fin de referencia para la precedencia | milestone | 0d | 2027-10-08 | 2027-10-08 | 141FS-1d | 0 |
| 214 | H4 · Entrega de expediente | milestone | 0d | 2027-10-20 | 2027-10-20 | 215SS | 0 |
| 215 | H4 · Evidencia disponible (6.1.1) | milestone | 0d | 2027-10-20 | 2027-10-20 | 125FS+54d, 131FS+44d, 139FS+32d, 168FS+25d, 178FS+12d, 179FS+12d, 180FS+12d, 209SS+10d | 0 |
| 216 | H4 · Revisión de la Contraparte (10 días hábiles) |  | 10d | 2027-10-21 | 2027-11-04 | 214FS+1d | 10 |
| 217 | 6.1.1 · Cierre del paquete | milestone | 0d | 2027-10-22 | 2027-10-22 | 209FS-1d, 215SS+2d | 0 |
| 218 | 6.2.1 Pruebas de aceptación y de accesibilidad con preventistas, conductores y bodega |  | 19d | 2027-10-25 | 2027-11-19 | 217SS+1d | 19 |
| 219 | 6.2.2 Pruebas de operación en condiciones físicas extremas y sin conexión |  | 19d | 2027-10-25 | 2027-11-19 | 217SS+1d | 19 |
| 220 | 6.3.1 Pruebas de carga con el peak de septiembre y de resiliencia |  | 13d | 2027-10-25 | 2027-11-11 | 217SS+1d | 13 |
| 221 | 6.4.1 Prueba de recuperación ante desastres con conmutación real |  | 13d | 2027-10-25 | 2027-11-11 | 217SS+1d | 13 |
| 222 | 6.5.1 Prueba de seguridad ofensiva de la Etapa 1, por un tercero independiente |  | 13d | 2027-10-25 | 2027-11-11 | 217SS+1d | 13 |
| 223 | 6.6.1 Demostración en Preproducción del despliegue sin interrupción de la Etapa 1 |  | 13d | 2027-10-25 | 2027-11-11 | 217SS+1d | 13 |
| 224 | 9.1.1 Plan de olas de la Etapa 1 por sitio y zona |  | 7d | 2027-11-02 | 2027-11-10 | 217SS+6d | 7 |
| 225 | 9.5.1 Plan de capacitación por perfil |  | 38d | 2027-11-02 | 2027-12-24 | 59FS+105d, 224SS | 38 |
| 226 | 9.5.6 Plataforma de autoformación en línea con registro de avance |  | 38d | 2027-11-02 | 2027-12-24 | 225SS | 38 |
| 227 | 8.6.2 Terminales de pago configurados, uno por camión |  | 51d | 2027-11-04 | 2028-01-14 | 90FS+100d, 125FS+64d | 51 |
| 228 | 8.6.5 Impresoras de cabina instaladas |  | 51d | 2027-11-04 | 2028-01-14 | 90FS+100d | 51 |
| 229 | H4 · Firma del acta | milestone | 0d | 2027-11-04 | 2027-11-04 | 216FS-1d | 0 |
| 230 | 2.7.3 Informe de piloto de cadena de frío en cuatro camiones |  | 29d | 2027-11-09 | 2027-12-20 | 34FS+164d, 46FS+130d, 60FS+111d, 112FS+57d, 173SS+52d, 197FS+26d, 217SS+11d, 229FS+3d | 29 |
| 231 | 6.7.1 Acta de certificación de la Etapa 1 (H5) |  | 8d | 2027-11-22 | 2027-12-01 | 218, 219, 220FS+6d, 221FS+6d, 222FS+6d, 223FS+6d | 8 |
| 232 | 5.4.3 Saldos migrados desde el WMS de Talca |  | 22d | 2027-12-01 | 2027-12-31 | 208FS+19d | 22 |
| 233 | 5.4.4 Saldos cargados en Concepción desde el conteo físico |  | 22d | 2027-12-01 | 2027-12-31 | 208FS+19d | 22 |
| 234 | 7.1.4 Innovación 1: informe del piloto en marcha blanca y habilitación (INN-01.P4) |  | 107d | 2027-12-01 | 2028-05-02 | 202FS+7d, 203FS+7d | 106 |
| 235 | 7.2.4 Innovación 2: informe de validación comparada (INN-02.P4, parte 1) |  | 107d | 2027-12-01 | 2028-05-02 | 89FS+35d | 106 |
| 236 | 7.3.4 Innovación 3: informe de validación en marcha blanca con Calidad (INN-03.P4) |  | 107d | 2027-12-01 | 2028-05-02 | 204FS+7d | 106 |
| 237 | 9.1.2 Procedimiento y ensayo de reversión de la Etapa 1 |  | 7d | 2027-12-01 | 2027-12-10 | 208FS+19d, 218FS+7d, 224FS+14d | 7 |
| 238 | H5 · Entrega de expediente | milestone | 0d | 2027-12-01 | 2027-12-01 | 239SS | 0 |
| 239 | H5 · Evidencia disponible (6.7.1) | milestone | 0d | 2027-12-01 | 2027-12-01 | 218FS+7d, 219FS+7d, 220FS+13d, 221FS+13d, 222FS+13d, 223FS+13d, 231SS+7d | 0 |
| 240 | 6.7.1 · Cierre del paquete | milestone | 0d | 2027-12-01 | 2027-12-01 | 231FS-1d, 239SS | 0 |
| 241 | H5 · Revisión de la Contraparte (10 días hábiles) |  | 10d | 2027-12-02 | 2027-12-16 | 238FS+1d | 10 |
| 242 | 5.4.5 Acta de conciliación y corte fuera de las ventanas de congelamiento |  | 19d | 2028-01-03 | 2028-01-27 | 146FS+62d, 208FS+41d, 232, 233 | 19 |
| 243 | H5 · Firma del acta | milestone | 0d | 2028-01-03 | 2028-01-03 | 241FS+11d | 0 |
| 244 | 2.1.2 Documento de línea base de alcance de la Etapa 2: canal moderno y costo de servir (H8) |  | 7d | 2028-02-01 | 2028-02-09 | 243FS+21d | 7 |
| 245 | 2.2.4 Documento de diseño detallado de M11 y del intercambio con las cadenas |  | 11d | 2028-02-01 | 2028-02-15 | 244SS | 11 |
| 246 | 7.5.1 Innovación 5: prototipo e informe de la prueba de comprensión (INN-05.P1) |  | 36d | 2028-02-01 | 2028-03-21 | 191SS+88d, 244SS | 36 |
| 247 | 9.5.7 Certificación de preventistas, conductores y preparadores (Etapa 1) |  | 39d | 2028-02-01 | 2028-03-24 | 225FS+26d, 248SS | 39 |
| 248 | 9.2.1 Marcha blanca de la Etapa 1 |  | 65d | 2028-02-01 | 2028-05-03 | 249SS | 63 |
| 249 | H6 · Inicio contractual de marcha blanca | milestone | 0d | 2028-02-01 | 2028-02-01 | 129SS+141d, 224FS+57d, 237FS+36d, 242FS+2d, 243FS+21d, 251SS | 0 |
| 250 | Etapa 2 · Desarrollo (meses 13 a 18) |  | 128d | 2028-02-01 | 2028-08-02 |  | 126 |
| 251 | H6 · Entrega de expediente | milestone | 0d | 2028-02-01 | 2028-02-01 |  | 0 |
| 252 | 2.8.2 Acta de aprobación del diseño detallado de la Etapa 2 (H8) |  | 8d | 2028-02-16 | 2028-02-25 | 244FS+4d, 245 | 8 |
| 253 | H8 · Entrega de expediente | milestone | 0d | 2028-02-24 | 2028-02-24 | 254SS | 0 |
| 254 | H8 · Evidencia disponible (2.8.2) | milestone | 0d | 2028-02-24 | 2028-02-24 | 244FS+10d, 245FS+6d, 252SS+6d | 0 |
| 255 | 2.8.2 · Cierre del paquete | milestone | 0d | 2028-02-25 | 2028-02-25 | 252FS-1d, 254SS+1d | 0 |
| 256 | H8 · Revisión de la Contraparte (10 días hábiles) |  | 10d | 2028-02-25 | 2028-03-09 | 253FS+1d | 10 |
| 257 | E1 · Puerta de la ola de reparto | milestone | 0d | 2028-02-29 | 2028-02-29 | 181FS+31d, 206FS+97d, 207FS+97d, 230FS+50d | 0 |
| 258 | 7.5.2 Innovación 5: evaluación de privacidad y diseño de la impresión en cabina (INN-05.P2) |  | 36d | 2028-03-01 | 2028-04-20 | 246SS+21d, 265SF+22d | 35 |
| 259 | H8 · Firma del acta | milestone | 0d | 2028-03-09 | 2028-03-09 | 256FS-1d | 0 |
| 260 | 4.4.2 Portal web de clientes: cuenta, saldo, entregas y documentos |  | 35d | 2028-03-13 | 2028-05-02 | 244FS+22d, 259FS+2d | 34 |
| 261 | 4.4.1 Canal moderno y portal de proveedores (M11) |  | 33d | 2028-03-15 | 2028-05-02 | 244FS+24d, 259FS+4d | 32 |
| 262 | 4.4.3 Portal web de transportistas: rutas asignadas del día siguiente |  | 33d | 2028-03-15 | 2028-05-02 | 244FS+24d, 259FS+4d | 32 |
| 263 | 4.5.2 Costo de servir por cliente y por entrega (M10 Analítica) |  | 33d | 2028-03-15 | 2028-05-02 | 244FS+24d, 259FS+4d | 32 |
| 264 | Seguimiento de construcción E2 · 15/03/2028 | milestone | 0d | 2028-03-15 | 2028-03-15 |  | 0 |
| 265 | 7.5.1 · Fin de referencia para la precedencia | milestone | 0d | 2028-03-21 | 2028-03-21 | 246FS-1d | 0 |
| 266 | Seguimiento de construcción E2 · 31/03/2028 | milestone | 0d | 2028-03-31 | 2028-03-31 |  | 0 |
| 267 | 9.5.4 Traspaso al equipo de TI del CLIENTE |  | 126d | 2028-04-01 | 2028-10-04 |  | 123 |
| 268 | 1.6.2 Primera actualización anual del Plan de Reversibilidad |  | 7d | 2028-04-03 | 2028-04-11 | 41FS+249d | 7 |
| 269 | 7.5.3 Innovación 5: cálculo y bloques 1 a 3 de la hoja de negocio (INN-05.P3) |  | 49d | 2028-04-03 | 2028-06-12 | 246SS+45d, 258SS+24d, 265SF+59d, 271SF+38d | 48 |
| 270 | Seguimiento de construcción E2 · 13/04/2028 | milestone | 0d | 2028-04-13 | 2028-04-13 |  | 0 |
| 271 | 7.5.2 · Fin de referencia para la precedencia | milestone | 0d | 2028-04-19 | 2028-04-19 | 258FS-1d | 0 |
| 272 | Demostración de módulos en QA E2 · 28/04/2028 | milestone | 0d | 2028-04-28 | 2028-04-28 | 273SS, 274SS, 275SS, 276SS | 0 |
| 273 | Entrega a QA · 4.4.1 | milestone | 0d | 2028-04-28 | 2028-04-28 | 261FS-1d | 0 |
| 274 | Entrega a QA · 4.4.2 | milestone | 0d | 2028-04-28 | 2028-04-28 | 260FS-1d | 0 |
| 275 | Entrega a QA · 4.4.3 | milestone | 0d | 2028-04-28 | 2028-04-28 | 262FS-1d | 0 |
| 276 | Entrega a QA · 4.5.2 | milestone | 0d | 2028-04-28 | 2028-04-28 | 263FS-1d | 0 |
| 277 | Seguimiento de construcción E2 · 28/04/2028 | milestone | 0d | 2028-04-28 | 2028-04-28 |  | 0 |
| 278 | H7 · Cierre de cuatro semanas de evidencia | milestone | 0d | 2028-04-30 | 2028-04-30 | 248FS-1d, 257FS+44d | 0 |
| 279 | 5.3.2 Intercambio electrónico con las demás cadenas (INT-08) |  | 52d | 2028-05-02 | 2028-07-14 | 9FS+311d, 201SS+149d, 261FF+53d | 52 |
| 280 | 6.1.2 Pruebas de integración y regresión sin afectar la Etapa 1 en producción (H9) |  | 13d | 2028-05-02 | 2028-05-18 | 260FS+1d, 261FS+1d, 262FS+1d, 263FS+1d | 13 |

Notes:
- 211: 160 HH · responsable SRE · ejecución SRE · 8.1.3, 8.4.3
- 212: 160 HH · responsable SRE · ejecución SRE · 8.1.3, 8.4.3
- 213: 240 HH · responsable DAT · ejecución DAT · 2.8.1
- 215: Versiones integradas en QA, informes y pruebas
- 217: 160 HH · responsable CAL · ejecución CAL · 3.3.4–3.3.6, 4.1.1–4.1.3, 4.2.1–4.2.2, 4.3.1–4.3.5, 4.5.1, 5.2.1–5.2.4 (D-20)
- 218: 320 HH · responsable CAL · ejecución CAL · 6.1.1
- 219: 320 HH · responsable CAL · ejecución CAL · 6.1.1
- 220: 320 HH · responsable CAL · ejecución CAL · 6.1.1
- 221: 320 HH · responsable CAL · ejecución CAL · 6.1.1
- 222: 320 HH · responsable SEG · ejecución SEG · 6.1.1
- 223: 320 HH · responsable SRE · ejecución SRE · 6.1.1
- 224: 80 HH · responsable IMP · ejecución IMP · 6.1.1 (D-48)
- 225: 160 HH · responsable IMP · ejecución IMP · 2.6.3, 9.1.1 CC
- 226: 160 HH · responsable IMP · ejecución IMP · 9.5.1 CC
- 227: 160 HH · responsable SRE · ejecución SRE · 8.1.3, 5.2.2
- 228: 160 HH · responsable SRE · ejecución SRE · 8.1.3
- 230: 341.33 HH · responsable IMP · ejecución IMP · 2.7.1, 2.7.2, 4.2.1, 4.2.2, 6.1.1 y H4, 8.2.7; cuatro actas parciales 8.6.4
- 231: 160 HH · responsable CAL · ejecución CAL · 6.2.1, 6.2.2, 6.3.1, 6.4.1, 6.5.1, 6.6.1
- 232: 504 HH · responsable DAT · ejecución DAT · 5.4.2
- 233: 504 HH · responsable DAT · ejecución DAT · 5.4.2
- 234: 240 HH · responsable DAT · ejecución DAT · 7.1.2 y 7.1.3
- 235: 240 HH · responsable CAL · ejecución CAL · 7.2.3
- 236: 240 HH · responsable DAT · ejecución DAT · 7.3.3
- 237: 80 HH · responsable IMP · ejecución IMP · 9.1.1, 5.4.2, 6.2.1 (D-49)
- 239: Pruebas aprobadas de las cuentas 6.2 a 6.6 e informe de certificación 6.7.1
- 240: 160 HH · responsable CAL · ejecución CAL · 6.2.1, 6.2.2, 6.3.1, 6.4.1, 6.5.1, 6.6.1
- 242: 480 HH · responsable DAT · ejecución DAT · 5.4.1, 5.4.2, 5.4.3, 5.4.4
- 244: 80 HH · responsable ARQ · ejecución ARQ · 6.7.1
- 245: 240 HH · responsable ARQ · ejecución ARQ · 2.1.2 CC
- 246: 240 HH · responsable IMP · ejecución IMP · 4.3.3, 2.1.2 CC
- 247: 160 HH · responsable IMP · ejecución IMP · 9.5.1, 9.2.1 CC
- 252: 240 HH · responsable ARQ · ejecución ARQ · 2.1.2, 2.2.4
- 254: Línea base y diseño detallado; cierre administrativo posterior
- 255: 240 HH · responsable ARQ · ejecución ARQ · 2.1.2, 2.2.4
- 258: 240 HH · responsable IMP · ejecución IMP · 7.5.1 (prototipo inicial)
- 260: 1033.17 HH · responsable DES · ejecución DES · 2.1.2, 2.8.2 (D-29)
- 261: 973 HH · responsable DES · ejecución DES · 2.1.2, 2.8.2 (D-29)
- 262: 280 HH · responsable DES · ejecución DES · 2.1.2, 2.8.2 (D-29)
- 263: 653 HH · responsable DAT · ejecución DAT · 2.1.2, 2.8.2 (D-29)
- 264: Líder de Desarrollo: estado, horas, pruebas y bloqueos. EDT: 4.4.1, 4.4.2, 4.4.3, 4.5.2.
- 265: 240 HH · responsable IMP · ejecución IMP · 4.3.3, 2.1.2 CC
- 266: Líder de Desarrollo: estado, horas, pruebas y bloqueos. EDT: 4.4.1, 4.4.2, 4.4.3, 4.5.2.
- 268: 80 HH · responsable JP · ejecución JP · 1.6.1
- 269: 240 HH · responsable IMP · ejecución IMP · 7.5.1 y 7.5.2 (diseño validado)
- 270: Líder de Desarrollo: estado, horas, pruebas y bloqueos. EDT: 4.4.1, 4.4.2, 4.4.3, 4.5.2.
- 271: 240 HH · responsable IMP · ejecución IMP · 7.5.1 (prototipo inicial)
- 272: Líder Funcional y Calidad: versión y observaciones. EDT: 4.4.1, 4.4.2, 4.4.3, 4.5.2.
- 273: Líder de Desarrollo y Calidad: versión desplegada e integración registrada.
- 274: Líder de Desarrollo y Calidad: versión desplegada e integración registrada.
- 275: Líder de Desarrollo y Calidad: versión desplegada e integración registrada.
- 276: Líder de Desarrollo y Calidad: versión desplegada e integración registrada.
- 277: Líder de Desarrollo: estado, horas, pruebas y bloqueos. EDT: 4.4.1, 4.4.2, 4.4.3, 4.5.2.
- 279: 508 HH · responsable DES · ejecución DES · 2.1.5 (perfil de intercambio), 5.3.1 CC, 4.4.1 (QA)
- 280: 160 HH · responsable CAL · ejecución CAL · 4.4.1, 4.4.2, 4.4.3 y 4.5.2

| ID | Task | Type | Duration | Start | Finish | Predecessors | Días hábiles T-15 |
| --- | --- | --- | --- | --- | --- | --- | --- |
| 281 | 9.4.1 Expediente y acta de aceptación de la Etapa 1 (H7) |  | 12d | 2028-05-02 | 2028-05-17 | 283SS | 12 |
| 282 | 9.6.2 Plan de gestión del cambio con cadenas y transportistas |  | 38d | 2028-05-02 | 2028-06-23 | 201SS+149d, 259FS+38d | 38 |
| 283 | H7 · Entrega de expediente | milestone | 0d | 2028-05-02 | 2028-05-02 | 247FS+26d, 278FS+1d | 0 |
| 284 | H7 · Revisión de la Contraparte (10 días hábiles) |  | 10d | 2028-05-03 | 2028-05-16 | 283FS+1d | 10 |
| 285 | H7 · Firma del acta | milestone | 0d | 2028-05-16 | 2028-05-16 | 284FS-1d | 0 |
| 286 | 9.3.1 Estabilización y soporte puente E1 |  | 94d | 2028-05-17 | 2028-10-02 | 287SS | 93 |
| 287 | H7 · Paso a producción | milestone | 0d | 2028-05-17 | 2028-05-17 | 285FS+1d | 0 |
| 288 | 9.4.1 · Cierre del paquete | milestone | 0d | 2028-05-17 | 2028-05-17 | 281FS-1d, 289SS | 0 |
| 289 | H7 · Registro de producción y cumplimiento | milestone | 0d | 2028-05-17 | 2028-05-17 | 287SS | 0 |
| 290 | H9 · Entrega de expediente | milestone | 0d | 2028-05-18 | 2028-05-18 | 280FS-1d | 0 |
| 291 | 6.3.2 Pruebas de carga con ambas etapas activas y de resiliencia |  | 10d | 2028-05-19 | 2028-06-01 | 280 | 10 |
| 292 | 6.4.2 Prueba de recuperación ante desastres con ambas etapas |  | 10d | 2028-05-19 | 2028-06-01 | 280 | 10 |
| 293 | 6.5.2 Prueba de seguridad ofensiva de la Etapa 2, por un tercero independiente |  | 6d | 2028-05-19 | 2028-05-26 | 280 | 6 |
| 294 | 6.6.2 Demostración en Preproducción del despliegue sin interrupción de la Etapa 2 |  | 10d | 2028-05-19 | 2028-06-01 | 280 | 10 |
| 295 | H9 · Revisión de la Contraparte (10 días hábiles) |  | 10d | 2028-05-19 | 2028-06-01 | 290FS+1d | 10 |
| 296 | 7.4.1 Innovación 4: fórmula aprobada del tramo variable (INN-04.P1) |  | 7d | 2028-06-01 | 2028-06-09 | 263FS+23d | 7 |
| 297 | 9.1.3 Plan de implantación y reversión de la Etapa 2 |  | 7d | 2028-06-01 | 2028-06-09 | 237FS+123d, 280FS+9d | 7 |
| 298 | H9 · Firma del acta | milestone | 0d | 2028-06-01 | 2028-06-01 | 295FS-1d | 0 |
| 299 | 6.2.3 Pruebas de aceptación y de accesibilidad con cadenas, transportistas, Comercial y Finanzas |  | 10d | 2028-06-02 | 2028-06-15 | 280FS+10d | 10 |
| 300 | 6.7.2 Acta de certificación de la Etapa 2 y cierre del desarrollo (H10) |  | 7d | 2028-06-16 | 2028-06-28 | 280FS+20d, 291FS+10d, 292FS+10d, 293FS+14d, 294FS+10d, 299 | 7 |
| 301 | H10 · Entrega de expediente | milestone | 0d | 2028-06-27 | 2028-06-27 | 302SS | 0 |
| 302 | H10 · Evidencia disponible (6.7.2) | milestone | 0d | 2028-06-27 | 2028-06-27 | 280FS+25d, 291FS+15d, 292FS+15d, 293FS+19d, 294FS+15d, 299FS+5d, 300SS+5d | 0 |
| 303 | 6.7.2 · Cierre del paquete | milestone | 0d | 2028-06-28 | 2028-06-28 | 300FS-1d, 302SS+1d | 0 |
| 304 | H10 · Revisión de la Contraparte (10 días hábiles) |  | 10d | 2028-06-28 | 2028-07-11 | 301FS+1d | 10 |
| 305 | 7.5.4 Innovación 5: hoja certificada, en marcha blanca y en producción (INN-05.P4, primera parte) |  | 62d | 2028-07-03 | 2028-09-29 | 269FS+13d | 62 |
| 306 | 9.5.8 Certificación de Comercial y Finanzas en costo de servir (Etapa 2) |  | 17d | 2028-07-03 | 2028-07-25 | 263FS+43d, 299FS+9d | 17 |
| 307 | H10 · Firma del acta | milestone | 0d | 2028-07-11 | 2028-07-11 | 304FS-1d | 0 |
| 308 | 9.2.2 Marcha blanca de la Etapa 2 |  | 42d | 2028-08-01 | 2028-10-02 | 309SS | 41 |
| 309 | H11 · Inicio contractual de marcha blanca | milestone | 0d | 2028-08-01 | 2028-08-01 | 201FS+41d, 297FS+34d, 307FS+15d, 310SS | 0 |
| 310 | H11 · Entrega de expediente | milestone | 0d | 2028-08-01 | 2028-08-01 |  | 0 |
| 311 | E2 · Cadenas habilitadas antes de F − 28 | milestone | 0d | 2028-08-31 | 2028-08-31 | 279FS+32d | 0 |
| 312 | 9.4.3 Garantía de correcto funcionamiento constituida (H12) |  | 7d | 2028-09-13 | 2028-09-25 | 307FS+45d | 7 |
| 313 | H12 · Cierre de cuatro semanas de evidencia | milestone | 0d | 2028-09-30 | 2028-09-30 | 308FS-1d, 311FS+20d | 0 |
| 314 | Mes 21 · Cobertura de transición previa al corte E2 |  | 12d | 2028-10-01 | 2028-10-18 |  | 11 |
| 315 | 6.8.6 Entrega del código fuente, la infraestructura como código y los procedimientos de despliegue |  | 7d | 2028-10-02 | 2028-10-11 | 307FS+58d | 7 |
| 316 | 9.4.2 Expediente y acta de aceptación final (H12) |  | 12d | 2028-10-02 | 2028-10-18 | 317SS | 12 |
| 317 | H12 · Entrega de expediente | milestone | 0d | 2028-10-02 | 2028-10-02 | 267FS+1d, 306FS+47d, 312FS+6d, 313FS+2d | 0 |
| 318 | H12 · Revisión de la Contraparte (10 días hábiles) |  | 10d | 2028-10-03 | 2028-10-17 | 317FS+1d | 10 |
| 319 | H12 · Firma del acta | milestone | 0d | 2028-10-17 | 2028-10-17 | 315FS+3d, 318FS-1d | 0 |
| 320 | 9.3.2 Estabilización de la Etapa 2 |  | 30d | 2028-10-18 | 2028-11-30 | 321SS | 30 |
| 321 | H12 · Paso a producción | milestone | 0d | 2028-10-18 | 2028-10-18 | 319FS+1d | 0 |
| 322 | 9.4.2 · Cierre del paquete | milestone | 0d | 2028-10-18 | 2028-10-18 | 316FS-1d, 324SS | 0 |
| 323 | Producto 10 · Operación con ambos alcances (meses 21 a 56) |  | 730d | 2028-10-18 | 2031-09-30 | 314, 321SS | 730 |
| 324 | H12 · Registro de producción y cumplimiento | milestone | 0d | 2028-10-18 | 2028-10-18 | 321SS | 0 |
| 325 | 1.7.9 Informe de lecciones aprendidas y archivo de la implementación |  | 7d | 2028-10-26 | 2028-11-07 | 322SS+6d | 7 |
| 326 | 10.5.1 Traspaso de reversibilidad y acompañamiento de salida |  | 40d | 2031-08-01 | 2031-09-30 |  | 40 |
| 327 | 10.5.2 Certificado de devolución o eliminación de datos personales |  | 7d | 2031-09-01 | 2031-09-09 | 326SS+20d | 7 |

Notes:
- 281: 80 HH · responsable JP · ejecución JP · Cierre de evidencia 9.2.1 y 9.5.7; revisión, firma, corte y registro (D-28)
- 282: 160 HH · responsable IMP · ejecución IMP · 2.8.2, 5.3.1 CC
- 288: 80 HH · responsable JP · ejecución JP · Cierre de evidencia 9.2.1 y 9.5.7; revisión, firma, corte y registro (D-28)
- 291: 320 HH · responsable CAL · ejecución CAL · 6.1.2
- 292: 320 HH · responsable CAL · ejecución CAL · 6.1.2
- 293: 160 HH · responsable SEG · ejecución SEG · 6.1.2
- 294: 160 HH · responsable SRE · ejecución SRE · 6.1.2
- 296: 80 HH · responsable JP · ejecución JP · 4.5.2
- 297: 80 HH · responsable IMP · ejecución IMP · 9.1.2, 6.1.2 (D-50)
- 299: 320 HH · responsable CAL · ejecución CAL · 6.1.2
- 300: 160 HH · responsable CAL · ejecución CAL · 6.1.2, 6.2.3, 6.3.2, 6.4.2, 6.5.2, 6.6.2
- 302: Integración y pruebas aprobadas; cierre documental posterior
- 303: 160 HH · responsable CAL · ejecución CAL · 6.1.2, 6.2.3, 6.3.2, 6.4.2, 6.5.2, 6.6.2
- 305: 240 HH · responsable IMP · ejecución IMP · 7.5.3
- 306: 160 HH · responsable IMP · ejecución IMP · 4.5.2, 6.2.3
- 312: 80 HH · responsable JP · ejecución JP · 6.7.2
- 315: 80 HH · responsable DES · ejecución DES · 6.7.2
- 316: 80 HH · responsable JP · ejecución JP · Cierre de evidencia 9.2.2, 9.4.3, 9.5.4 y 9.5.8; 6.8.6 antes de la firma (D-33)
- 322: 80 HH · responsable JP · ejecución JP · Cierre de evidencia 9.2.2, 9.4.3, 9.5.4 y 9.5.8; 6.8.6 antes de la firma (D-33)
- 325: 80 HH · responsable JP · ejecución JP · 9.4.2
- 327: 80 HH · responsable SEG · ejecución SEG · 10.5.1 CC
