# Vista de ruta crítica y puertas de aceptación del SD7

Schedule from GanttProject, 2027-02-01 to 2028-10-18.
LafroX
Red SD7 generada desde T-14, T-15 y Anexo 7.B. El calendario es nominal. Las esperas de la carta nivelada se conservan en los desfases publicados. Duración usa el calendario del motor, con excepciones para representar fechas civiles. Días hábiles T-15 conserva la duración nominal de la fuente. Los ID coinciden entre vistas.

## Calendars

- Project calendar: Mon-Fri working; Sat-Sun off. Exceptions (off unless hours are given): 2027-03-26 to 2027-03-27, 2027-05-01, 2027-05-21, 2027-06-21, 2027-06-28, 2027-07-16, 2027-08-15, 2027-09-17 to 2027-09-19, 2027-10-11, 2027-10-31 to 2027-11-01, 2027-12-08, 2027-12-25, 2028-01-01, 2028-04-14 to 2028-04-15, 2028-05-01, 2028-05-21, 2028-06-20, 2028-06-26, 2028-07-16, 2028-08-15, 2028-09-18 to 2028-09-19, 2028-10-09.

## Schedule

| ID | Task | Type | Duration | Start | Finish | Predecessors | Días hábiles T-15 |
| --- | --- | --- | --- | --- | --- | --- | --- |
| 1 | 8.1.4 Especificación y compra del sistema de cadena de frío |  | 42d | 2027-02-01 | 2027-03-31 |  | 42 |
| 2 | 2.7.1 Informe de validación del kit de cadena de frío en banco de pruebas |  | 22d | 2027-04-01 | 2027-04-30 | 1 | 22 |
| 3 | 2.6.3 Indicadores de usabilidad comprometidos por transacción crítica |  | 20d | 2027-05-03 | 2027-05-31 |  | 20 |
| 4 | 3.1.4 Cadena de integración y entrega continua, e infraestructura como código |  | 20d | 2027-05-03 | 2027-05-31 | 5SS | 20 |
| 5 | 3.2.1 Servicio de nube para la aplicación y los portales |  | 20d | 2027-05-03 | 2027-05-31 |  | 20 |
| 6 | 3.2.2 Servicio de nube de base de datos, caché y mensajería |  | 20d | 2027-05-03 | 2027-05-31 |  | 20 |
| 7 | 3.2.3 Servicio de nube de ingesta de IoT, telemetría cruda y plataforma analítica |  | 20d | 2027-05-03 | 2027-05-31 |  | 20 |
| 8 | 3.2.4 Servicio de nube de respaldo inmutable y réplica entre regiones |  | 20d | 2027-05-03 | 2027-05-31 |  | 20 |
| 9 | 3.2.5 Servicio de nube de seguridad y gobierno, y detección en endpoints |  | 20d | 2027-05-03 | 2027-05-31 |  | 20 |
| 10 | 8.3.5 Acta de recepción técnica de la sala |  | 14d | 2027-05-03 | 2027-05-20 |  | 14 |
| 11 | 8.4.5 Rack R02 de comunicaciones montado |  | 13d | 2027-05-24 | 2027-06-09 | 10 | 13 |
| 12 | 8.7.1 Software de base instalado en los cinco sitios |  | 13d | 2027-06-10 | 2027-06-30 | 11 | 13 |
| 13 | 8.7.2 Enlaces de fibra, LTE y Starlink habilitados, con conmutación al respaldo |  | 13d | 2027-06-10 | 2027-06-30 | 11 | 13 |
| 14 | 4.3.5 Cobro en ruta, rendición y conciliación (M7 Cobranza y rendición) |  | 36d | 2027-08-11 | 2027-09-30 |  | 36 |
| 15 | 3.3.4 Parametrización y motor de reglas versionados |  | 21d | 2027-09-01 | 2027-09-30 |  | 21 |
| 16 | 3.3.5 Gestión documental con versionado, búsqueda y vista previa |  | 21d | 2027-09-01 | 2027-09-30 |  | 21 |
| 17 | 3.3.6 Generación de documentos con plantillas administrables |  | 21d | 2027-09-01 | 2027-09-30 | 16SS | 21 |
| 18 | 5.3.1 Intercambio electrónico certificado con la cadena principal (INT-08) |  | 171d | 2027-10-01 | 2028-06-02 | 26FF+23d | 169 |
| 19 | 5.4.3 Saldos migrados desde el WMS de Talca |  | 22d | 2027-12-01 | 2027-12-31 |  | 22 |
| 20 | 5.4.4 Saldos cargados en Concepción desde el conteo físico |  | 22d | 2027-12-01 | 2027-12-31 |  | 22 |
| 21 | 7.1.4 Innovación 1: informe del piloto en marcha blanca y habilitación (INN-01.P4) |  | 107d | 2027-12-01 | 2028-05-02 |  | 106 |
| 22 | 7.2.4 Innovación 2: informe de validación comparada (INN-02.P4, parte 1) |  | 107d | 2027-12-01 | 2028-05-02 |  | 106 |
| 23 | 7.3.4 Innovación 3: informe de validación en marcha blanca con Calidad (INN-03.P4) |  | 107d | 2027-12-01 | 2028-05-02 |  | 106 |
| 24 | H6 · Inicio contractual de marcha blanca | milestone | 0d | 2028-02-01 | 2028-02-01 |  | 0 |
| 25 | 4.4.2 Portal web de clientes: cuenta, saldo, entregas y documentos |  | 35d | 2028-03-13 | 2028-05-02 |  | 34 |
| 26 | 4.4.1 Canal moderno y portal de proveedores (M11) |  | 33d | 2028-03-15 | 2028-05-02 |  | 32 |
| 27 | 4.4.3 Portal web de transportistas: rutas asignadas del día siguiente |  | 33d | 2028-03-15 | 2028-05-02 |  | 32 |
| 28 | 4.5.2 Costo de servir por cliente y por entrega (M10 Analítica) |  | 33d | 2028-03-15 | 2028-05-02 |  | 32 |
| 29 | H7 · Cierre de cuatro semanas de evidencia | milestone | 0d | 2028-04-30 | 2028-04-30 |  | 0 |
| 30 | H7 · Entrega de expediente | milestone | 0d | 2028-05-02 | 2028-05-02 | 29FS+1d | 0 |
| 31 | H7 · Revisión de la Contraparte (10 días hábiles) |  | 10d | 2028-05-03 | 2028-05-16 | 30FS+1d | 10 |
| 32 | H7 · Firma del acta | milestone | 0d | 2028-05-16 | 2028-05-16 | 31FS-1d | 0 |
| 33 | H7 · Paso a producción | milestone | 0d | 2028-05-17 | 2028-05-17 | 32FS+1d | 0 |
| 34 | H7 · Registro de producción y cumplimiento | milestone | 0d | 2028-05-17 | 2028-05-17 | 33SS | 0 |
| 35 | H11 · Inicio contractual de marcha blanca | milestone | 0d | 2028-08-01 | 2028-08-01 | 18FS+41d | 0 |
| 36 | H12 · Cierre de cuatro semanas de evidencia | milestone | 0d | 2028-09-30 | 2028-09-30 |  | 0 |
| 37 | H12 · Entrega de expediente | milestone | 0d | 2028-10-02 | 2028-10-02 | 36FS+2d | 0 |
| 38 | H12 · Revisión de la Contraparte (10 días hábiles) |  | 10d | 2028-10-03 | 2028-10-17 | 37FS+1d | 10 |
| 39 | H12 · Firma del acta | milestone | 0d | 2028-10-17 | 2028-10-17 | 38FS-1d | 0 |
| 40 | H12 · Paso a producción | milestone | 0d | 2028-10-18 | 2028-10-18 | 39FS+1d | 0 |
| 41 | H12 · Registro de producción y cumplimiento | milestone | 0d | 2028-10-18 | 2028-10-18 | 40SS | 0 |

Notes:
- 1: 240 HH · responsable ARQ · ejecución ARQ · Disponibilidad de la especificación del SD4 al inicio (ARQ); ocho semanas de homologación móvil
- 2: 341.33 HH · responsable SRE · ejecución SRE · 8.1.4, 8.2.7; prototipo Greengrass y TC58e
- 3: 240 HH · responsable IMP · ejecución IMP · 2.6.2
- 4: 240 HH · responsable SRE · ejecución SRE · 3.2.1 CC; habilitación para QA tras el acta H2
- 5: 240 HH · responsable SRE · ejecución SRE · 8.2.1 (D-07)
- 6: 240 HH · responsable SRE · ejecución SRE · 8.2.1 (D-07)
- 7: 240 HH · responsable SRE · ejecución SRE · 8.2.1 (D-07)
- 8: 240 HH · responsable SRE · ejecución SRE · 8.2.1 (D-07)
- 9: 240 HH · responsable SEG · ejecución SEG · 8.2.1 (D-07)
- 10: 160 HH · responsable SRE · ejecución RED · 8.1.2, 8.3.1–8.3.4 (recepción)
- 11: 160 HH · responsable SRE · ejecución RED · 8.3.5 (D-11)
- 12: 160 HH · responsable SRE · ejecución SRE · Montaje 8.4.4, 8.4.5 y 8.4.6 (D-12)
- 13: 160 HH · responsable SRE · ejecución RED · Montaje 8.4.4, 8.4.5 y 8.4.6 (D-12)
- 14: 1248.33 HH · responsable DES · ejecución DES · 2.8.1, 2.6.2, 3.1 (QA), 3.3.1–3.3.3 (CC), 5.1 (CC), 4.3.3 (interfaz), 4.3.3 CC
- 15: 480 HH · responsable DES · ejecución DES · 2.8.1, 3.3.2
- 16: 480 HH · responsable DES · ejecución DES · 2.8.1, 3.3.1
- 17: 480 HH · responsable DES · ejecución DES · 2.8.1, 3.3.5 CC
- 18: 516 HH · responsable DES · ejecución DES · 2.1.5 (perfil de intercambio), 3.1.2 CC, 4.4.1 (QA)
- 19: 504 HH · responsable DAT · ejecución DAT · 5.4.2
- 20: 504 HH · responsable DAT · ejecución DAT · 5.4.2
- 21: 240 HH · responsable DAT · ejecución DAT · 7.1.2 y 7.1.3
- 22: 240 HH · responsable CAL · ejecución CAL · 7.2.3
- 23: 240 HH · responsable DAT · ejecución DAT · 7.3.3
- 25: 1033.17 HH · responsable DES · ejecución DES · 2.1.2, 2.8.2 (D-29)
- 26: 973 HH · responsable DES · ejecución DES · 2.1.2, 2.8.2 (D-29)
- 27: 280 HH · responsable DES · ejecución DES · 2.1.2, 2.8.2 (D-29)
- 28: 653 HH · responsable DAT · ejecución DAT · 2.1.2, 2.8.2 (D-29)
