Id.,Nombre,Fecha de inicio,Fecha de fin,Duración,Progreso,Costo,Prioridad,Coordinador,Antecesores,Número de esquema,Recursos,Assignments,Nueva tarea,Notas,Página web
0,1 Inicio,1/2/27,30/9/31,1217,0,0,1,,,1,,,#526D82,"Escenario nominal histórico anterior a la reestimación. Mes 1: febrero de 2027. Calendario gráfico: lunes a viernes, sin descontar feriados. Duración de la barra: días hábiles de la ventana, no HH de esfuerzo. Tarea resumen; fechas derivadas del primer y último paquete o hito descendiente.",
1,"  1.1 Definición inicial del proyecto",1/2/27,9/2/27,7,0,0,1,,,1.1,,,#526D82,"Escenario nominal histórico anterior a la reestimación. Mes 1: febrero de 2027. Calendario gráfico: lunes a viernes, sin descontar feriados. Duración de la barra: días hábiles de la ventana, no HH de esfuerzo. Tarea resumen; fechas derivadas del primer y último paquete o hito descendiente.",
2,"    1.1.1 Acta de constitución del proyecto, firmada con la Contraparte Técnica",1/2/27,9/2/27,7,0,0,1,,,1.1.1,,,#526D82,"Escenario nominal histórico anterior a la reestimación. Mes 1: febrero de 2027. Calendario gráfico: lunes a viernes, sin descontar feriados. Duración de la barra: días hábiles de la ventana, no HH de esfuerzo. Fuente de fechas: T-15, tabla Programación de los paquetes con entregable, paquete 1.1.1. Fechas publicadas: 01-02-2027 a 09-02-2027. Predecesoras agregadas publicadas: —. Responsable del paquete: JP.",
3,"    1.1.2 Documento de validación con el CLIENTE de los problemas y metas del proyecto",1/2/27,9/2/27,7,0,0,1,,,1.1.2,,,#526D82,"Escenario nominal histórico anterior a la reestimación. Mes 1: febrero de 2027. Calendario gráfico: lunes a viernes, sin descontar feriados. Duración de la barra: días hábiles de la ventana, no HH de esfuerzo. Fuente de fechas: T-15, tabla Programación de los paquetes con entregable, paquete 1.1.2. Fechas publicadas: 01-02-2027 a 09-02-2027. Predecesoras agregadas publicadas: —. Responsable del paquete: JP.",
4,"    1.1.3 Acta de confirmación con el CLIENTE de la fecha de inicio, la evidencia para el proveedor de lácteos, las ventanas de paso a producción y el acuse tributario",1/2/27,9/2/27,7,0,0,1,,,1.1.3,,,#526D82,"Escenario nominal histórico anterior a la reestimación. Mes 1: febrero de 2027. Calendario gráfico: lunes a viernes, sin descontar feriados. Duración de la barra: días hábiles de la ventana, no HH de esfuerzo. Fuente de fechas: T-15, tabla Programación de los paquetes con entregable, paquete 1.1.3. Fechas publicadas: 01-02-2027 a 09-02-2027. Predecesoras agregadas publicadas: —. Responsable del paquete: JP.",
5,"  1.2 Alcance del proyecto",1/2/27,9/2/28,268,0,0,1,,,1.2,,,#526D82,"Escenario nominal histórico anterior a la reestimación. Mes 1: febrero de 2027. Calendario gráfico: lunes a viernes, sin descontar feriados. Duración de la barra: días hábiles de la ventana, no HH de esfuerzo. Tarea resumen; fechas derivadas del primer y último paquete o hito descendiente.",
6,"    1.2.1 Documento de especificación de requerimientos y línea base de alcance de la Etapa 1 (H1)",1/2/27,9/2/27,7,0,0,1,,,1.2.1,,,#526D82,"Escenario nominal histórico anterior a la reestimación. Mes 1: febrero de 2027. Calendario gráfico: lunes a viernes, sin descontar feriados. Duración de la barra: días hábiles de la ventana, no HH de esfuerzo. Fuente de fechas: T-15, tabla Programación de los paquetes con entregable, paquete 1.2.1. Fechas publicadas: 01-02-2027 a 09-02-2027. Predecesoras agregadas publicadas: —. Responsable del paquete: ARQ.",
7,"    1.2.2 Documento de reglas de ruteo capturadas al planificador de rutas",1/2/27,30/4/27,65,0,0,1,,,1.2.2,,,#526D82,"Escenario nominal histórico anterior a la reestimación. Mes 1: febrero de 2027. Calendario gráfico: lunes a viernes, sin descontar feriados. Duración de la barra: días hábiles de la ventana, no HH de esfuerzo. Fuente de ventana: T-15, tabla Actividades de los paquetes de esfuerzo continuo, meses 1–3. Se representa la ventana completa, no dedicación diaria continua. Regla original: Una actividad por quincena, por presencia continua o periódica. Responsable del paquete: IMP.",
8,"    1.2.3 Documento de especificación de las interfaces sin documentación del ERP, del WMS de 2013 y de la telemetría del tercero",1/2/27,9/2/27,7,0,0,1,,,1.2.3,,,#526D82,"Escenario nominal histórico anterior a la reestimación. Mes 1: febrero de 2027. Calendario gráfico: lunes a viernes, sin descontar feriados. Duración de la barra: días hábiles de la ventana, no HH de esfuerzo. Fuente de fechas: T-15, tabla Programación de los paquetes con entregable, paquete 1.2.3. Fechas publicadas: 01-02-2027 a 09-02-2027. Predecesoras agregadas publicadas: —. Responsable del paquete: ARQ.",
9,"    1.2.4 Matriz de trazabilidad: requerimiento, módulo, paquete y prueba (H1)",1/3/27,9/3/27,7,0,0,1,,,1.2.4,,,#526D82,"Escenario nominal histórico anterior a la reestimación. Mes 1: febrero de 2027. Calendario gráfico: lunes a viernes, sin descontar feriados. Duración de la barra: días hábiles de la ventana, no HH de esfuerzo. Fuente de fechas: T-15, tabla Programación de los paquetes con entregable, paquete 1.2.4. Fechas publicadas: 01-03-2027 a 09-03-2027. Predecesoras agregadas publicadas: —. Responsable del paquete: CAL.",
10,"    1.2.5 Documento de línea base de alcance de la Etapa 2: canal moderno y costo de servir (H8)",1/2/28,9/2/28,7,0,0,1,,,1.2.5,,,#526D82,"Escenario nominal histórico anterior a la reestimación. Mes 1: febrero de 2027. Calendario gráfico: lunes a viernes, sin descontar feriados. Duración de la barra: días hábiles de la ventana, no HH de esfuerzo. Fuente de fechas: T-15, tabla Programación de los paquetes con entregable, paquete 1.2.5. Fechas publicadas: 01-02-2028 a 09-02-2028. Predecesoras agregadas publicadas: —. Responsable del paquete: ARQ.",
11,"  1.3 Planificación del proyecto",1/2/27,29/9/28,435,0,0,1,,,1.3,,,#526D82,"Escenario nominal histórico anterior a la reestimación. Mes 1: febrero de 2027. Calendario gráfico: lunes a viernes, sin descontar feriados. Duración de la barra: días hábiles de la ventana, no HH de esfuerzo. Tarea resumen; fechas derivadas del primer y último paquete o hito descendiente.",
12,"    1.3.1 Plan para la dirección del proyecto, con el calendario de congelamientos de septiembre, diciembre y el cierre mensual",10/2/27,18/2/27,7,0,0,1,,,1.3.1,,,#526D82,"Escenario nominal histórico anterior a la reestimación. Mes 1: febrero de 2027. Calendario gráfico: lunes a viernes, sin descontar feriados. Duración de la barra: días hábiles de la ventana, no HH de esfuerzo. Fuente de fechas: T-15, tabla Programación de los paquetes con entregable, paquete 1.3.1. Fechas publicadas: 10-02-2027 a 18-02-2027. Predecesoras agregadas publicadas: —. Responsable del paquete: JP.",
13,"    1.3.2 EDT y diccionario de la EDT (línea base del alcance)",1/3/27,9/3/27,7,0,0,1,,,1.3.2,,,#526D82,"Escenario nominal histórico anterior a la reestimación. Mes 1: febrero de 2027. Calendario gráfico: lunes a viernes, sin descontar feriados. Duración de la barra: días hábiles de la ventana, no HH de esfuerzo. Fuente de fechas: T-15, tabla Programación de los paquetes con entregable, paquete 1.3.2. Fechas publicadas: 01-03-2027 a 09-03-2027. Predecesoras agregadas publicadas: —. Responsable del paquete: JP.",
14,"    1.3.3 Carta Gantt de 56 meses con los hitos H1 a H12 y la ruta crítica",1/3/27,9/3/27,7,0,0,1,,,1.3.3,,,#526D82,"Escenario nominal histórico anterior a la reestimación. Mes 1: febrero de 2027. Calendario gráfico: lunes a viernes, sin descontar feriados. Duración de la barra: días hábiles de la ventana, no HH de esfuerzo. Fuente de fechas: T-15, tabla Programación de los paquetes con entregable, paquete 1.3.3. Fechas publicadas: 01-03-2027 a 09-03-2027. Predecesoras agregadas publicadas: —. Responsable del paquete: JP.",
15,"    1.3.4 Documento de nivelación de recursos y frentes del solapamiento de los meses 13 a 15 y 19 a 20",1/3/27,9/3/27,7,0,0,1,,,1.3.4,,,#526D82,"Escenario nominal histórico anterior a la reestimación. Mes 1: febrero de 2027. Calendario gráfico: lunes a viernes, sin descontar feriados. Duración de la barra: días hábiles de la ventana, no HH de esfuerzo. Fuente de fechas: T-15, tabla Programación de los paquetes con entregable, paquete 1.3.4. Fechas publicadas: 01-03-2027 a 09-03-2027. Predecesoras agregadas publicadas: —. Responsable del paquete: JP.",
16,"    1.3.5 Reunión semanal de seguimiento con su informe semanal",1/2/27,29/9/28,435,0,0,1,,,1.3.5,,,#526D82,"Escenario nominal histórico anterior a la reestimación. Mes 1: febrero de 2027. Calendario gráfico: lunes a viernes, sin descontar feriados. Duración de la barra: días hábiles de la ventana, no HH de esfuerzo. Fuente de ventana: T-15, tabla Actividades de los paquetes de esfuerzo continuo, meses 1–20. Se representa la ventana completa, no dedicación diaria continua. Regla original: Una actividad de nivel de esfuerzo por quincena. Responsable del paquete: JP.",
17,"  1.4 Gestión de interesados y comunicaciones",1/2/27,30/9/31,1217,0,0,1,,,1.4,,,#526D82,"Escenario nominal histórico anterior a la reestimación. Mes 1: febrero de 2027. Calendario gráfico: lunes a viernes, sin descontar feriados. Duración de la barra: días hábiles de la ventana, no HH de esfuerzo. Tarea resumen; fechas derivadas del primer y último paquete o hito descendiente.",
18,"    1.4.1 Registro de interesados con su influencia, interés y estrategia",1/2/27,9/2/27,7,0,0,1,,,1.4.1,,,#526D82,"Escenario nominal histórico anterior a la reestimación. Mes 1: febrero de 2027. Calendario gráfico: lunes a viernes, sin descontar feriados. Duración de la barra: días hábiles de la ventana, no HH de esfuerzo. Fuente de fechas: T-15, tabla Programación de los paquetes con entregable, paquete 1.4.1. Fechas publicadas: 01-02-2027 a 09-02-2027. Predecesoras agregadas publicadas: —. Responsable del paquete: JP.",
19,"    1.4.2 Plan de comunicaciones con calendario y canales por grupo de interés",1/2/27,9/2/27,7,0,0,1,,,1.4.2,,,#526D82,"Escenario nominal histórico anterior a la reestimación. Mes 1: febrero de 2027. Calendario gráfico: lunes a viernes, sin descontar feriados. Duración de la barra: días hábiles de la ventana, no HH de esfuerzo. Fuente de fechas: T-15, tabla Programación de los paquetes con entregable, paquete 1.4.2. Fechas publicadas: 01-02-2027 a 09-02-2027. Predecesoras agregadas publicadas: —. Responsable del paquete: JP.",
20,"    1.4.3 Registro de solicitudes de cambio con análisis de impacto",1/2/27,30/9/31,1217,0,0,1,,,1.4.3,,,#526D82,"Escenario nominal histórico anterior a la reestimación. Mes 1: febrero de 2027. Calendario gráfico: lunes a viernes, sin descontar feriados. Duración de la barra: días hábiles de la ventana, no HH de esfuerzo. Fuente de ventana: T-15, tabla Actividades de los paquetes de esfuerzo continuo, meses 1–56. Se representa la ventana completa, no dedicación diaria continua. Regla original: Una actividad de nivel de esfuerzo por quincena. Responsable del paquete: JP.",
21,"  1.5 Gestión de calidad",1/3/27,29/9/28,415,0,0,1,,,1.5,,,#526D82,"Escenario nominal histórico anterior a la reestimación. Mes 1: febrero de 2027. Calendario gráfico: lunes a viernes, sin descontar feriados. Duración de la barra: días hábiles de la ventana, no HH de esfuerzo. Tarea resumen; fechas derivadas del primer y último paquete o hito descendiente.",
22,"    1.5.1 Plan de calidad y plan de pruebas",1/3/27,9/3/27,7,0,0,1,,,1.5.1,,,#526D82,"Escenario nominal histórico anterior a la reestimación. Mes 1: febrero de 2027. Calendario gráfico: lunes a viernes, sin descontar feriados. Duración de la barra: días hábiles de la ventana, no HH de esfuerzo. Fuente de fechas: T-15, tabla Programación de los paquetes con entregable, paquete 1.5.1. Fechas publicadas: 01-03-2027 a 09-03-2027. Predecesoras agregadas publicadas: —. Responsable del paquete: CAL.",
23,"    1.5.2 Puertas de calidad automáticas en la cadena de integración (cobertura mínima del 80 %)",1/7/27,29/9/28,327,0,0,1,,,1.5.2,,,#526D82,"Escenario nominal histórico anterior a la reestimación. Mes 1: febrero de 2027. Calendario gráfico: lunes a viernes, sin descontar feriados. Duración de la barra: días hábiles de la ventana, no HH de esfuerzo. Fuente de ventana: T-15, tabla Actividades de los paquetes de esfuerzo continuo, meses 6–20. Se representa la ventana completa, no dedicación diaria continua. Regla original: Una actividad cada 3 quincenas, por presencia continua o periódica. Responsable del paquete: CAL.",
24,"  1.6 Gestión de riesgos",1/2/27,29/9/28,435,0,0,1,,,1.6,,,#526D82,"Escenario nominal histórico anterior a la reestimación. Mes 1: febrero de 2027. Calendario gráfico: lunes a viernes, sin descontar feriados. Duración de la barra: días hábiles de la ventana, no HH de esfuerzo. Tarea resumen; fechas derivadas del primer y último paquete o hito descendiente.",
25,"    1.6.1 Plan de riesgos y registro inicial de riesgos según ISO 31000",1/3/27,9/3/27,7,0,0,1,,,1.6.1,,,#526D82,"Escenario nominal histórico anterior a la reestimación. Mes 1: febrero de 2027. Calendario gráfico: lunes a viernes, sin descontar feriados. Duración de la barra: días hábiles de la ventana, no HH de esfuerzo. Fuente de fechas: T-15, tabla Programación de los paquetes con entregable, paquete 1.6.1. Fechas publicadas: 01-03-2027 a 09-03-2027. Predecesoras agregadas publicadas: —. Responsable del paquete: JP.",
26,"    1.6.2 Registro de riesgos revisado en cada Comité de Proyecto",1/2/27,29/9/28,435,0,0,1,,,1.6.2,,,#526D82,"Escenario nominal histórico anterior a la reestimación. Mes 1: febrero de 2027. Calendario gráfico: lunes a viernes, sin descontar feriados. Duración de la barra: días hábiles de la ventana, no HH de esfuerzo. Fuente de ventana: T-15, tabla Actividades de los paquetes de esfuerzo continuo, meses 1–20. Se representa la ventana completa, no dedicación diaria continua. Regla original: Una actividad por ocurrencia (quincenal, en cada Comité de Proyecto), ejecutada dentro de una quincena; 1 actividad(es) por ocurrencia. Responsable del paquete: JP.",
27,"  1.7 Plan de Reversibilidad",1/4/27,11/4/28,269,0,0,1,,,1.7,,,#526D82,"Escenario nominal histórico anterior a la reestimación. Mes 1: febrero de 2027. Calendario gráfico: lunes a viernes, sin descontar feriados. Duración de la barra: días hábiles de la ventana, no HH de esfuerzo. Tarea resumen; fechas derivadas del primer y último paquete o hito descendiente.",
28,"    1.7.1 Plan de Reversibilidad inicial (primeros 90 días)",1/4/27,9/4/27,7,0,0,1,,,1.7.1,,,#526D82,"Escenario nominal histórico anterior a la reestimación. Mes 1: febrero de 2027. Calendario gráfico: lunes a viernes, sin descontar feriados. Duración de la barra: días hábiles de la ventana, no HH de esfuerzo. Fuente de fechas: T-15, tabla Programación de los paquetes con entregable, paquete 1.7.1. Fechas publicadas: 01-04-2027 a 09-04-2027. Predecesoras agregadas publicadas: —. Responsable del paquete: JP.",
29,"    1.7.2 Primera actualización anual del Plan de Reversibilidad durante la implementación",3/4/28,11/4/28,7,0,0,1,,,1.7.2,,,#526D82,"Escenario nominal histórico anterior a la reestimación. Mes 1: febrero de 2027. Calendario gráfico: lunes a viernes, sin descontar feriados. Duración de la barra: días hábiles de la ventana, no HH de esfuerzo. Fuente de fechas: T-15, tabla Programación de los paquetes con entregable, paquete 1.7.2. Fechas publicadas: 03-04-2028 a 11-04-2028. Predecesoras agregadas publicadas: —. Responsable del paquete: JP.",
30,"  1.8 Gobierno y control del proyecto",1/2/27,30/9/31,1217,0,0,1,,,1.8,,,#526D82,"Escenario nominal histórico anterior a la reestimación. Mes 1: febrero de 2027. Calendario gráfico: lunes a viernes, sin descontar feriados. Duración de la barra: días hábiles de la ventana, no HH de esfuerzo. Tarea resumen; fechas derivadas del primer y último paquete o hito descendiente.",
31,"    1.8.1 Oficina de gestión del proyecto con metodología basada en el PMBOK",1/2/27,29/9/28,435,0,0,1,,,1.8.1,,,#526D82,"Escenario nominal histórico anterior a la reestimación. Mes 1: febrero de 2027. Calendario gráfico: lunes a viernes, sin descontar feriados. Duración de la barra: días hábiles de la ventana, no HH de esfuerzo. Fuente de ventana: T-15, tabla Actividades de los paquetes de esfuerzo continuo, meses 1–20. Se representa la ventana completa, no dedicación diaria continua. Regla original: Una actividad de nivel de esfuerzo por quincena. Responsable del paquete: JP.",
32,"    1.8.2 Actas del Comité Ejecutivo mensual, con la aprobación de los cambios de alcance",1/2/27,30/9/31,1217,0,0,1,,,1.8.2,,,#526D82,"Escenario nominal histórico anterior a la reestimación. Mes 1: febrero de 2027. Calendario gráfico: lunes a viernes, sin descontar feriados. Duración de la barra: días hábiles de la ventana, no HH de esfuerzo. Fuente de ventana: T-15, tabla Actividades de los paquetes de esfuerzo continuo, meses 1–56. Se representa la ventana completa, no dedicación diaria continua. Regla original: Una actividad por ocurrencia (mensual), ejecutada dentro de una quincena; 1 actividad(es) por ocurrencia. Responsable del paquete: JP.",
33,"    1.8.3 Actas del Comité de Proyecto quincenal",1/2/27,29/9/28,435,0,0,1,,,1.8.3,,,#526D82,"Escenario nominal histórico anterior a la reestimación. Mes 1: febrero de 2027. Calendario gráfico: lunes a viernes, sin descontar feriados. Duración de la barra: días hábiles de la ventana, no HH de esfuerzo. Fuente de ventana: T-15, tabla Actividades de los paquetes de esfuerzo continuo, meses 1–20. Se representa la ventana completa, no dedicación diaria continua. Regla original: Una actividad por ocurrencia (quincenal), ejecutada dentro de una quincena; 1 actividad(es) por ocurrencia. Responsable del paquete: JP.",
34,"    1.8.4 Actas del Comité de Arquitectura mensual",1/2/27,30/9/31,1217,0,0,1,,,1.8.4,,,#526D82,"Escenario nominal histórico anterior a la reestimación. Mes 1: febrero de 2027. Calendario gráfico: lunes a viernes, sin descontar feriados. Duración de la barra: días hábiles de la ventana, no HH de esfuerzo. Fuente de ventana: T-15, tabla Actividades de los paquetes de esfuerzo continuo, meses 1–56. Se representa la ventana completa, no dedicación diaria continua. Regla original: Una actividad por ocurrencia (mensual), ejecutada dentro de una quincena; 1 actividad(es) por ocurrencia. Responsable del paquete: ARQ.",
35,"    1.8.5 Actas del Comité de Operación mensual, desde el mes 13",1/2/28,30/9/31,956,0,0,1,,,1.8.5,,,#526D82,"Escenario nominal histórico anterior a la reestimación. Mes 1: febrero de 2027. Calendario gráfico: lunes a viernes, sin descontar feriados. Duración de la barra: días hábiles de la ventana, no HH de esfuerzo. Fuente de ventana: T-15, tabla Actividades de los paquetes de esfuerzo continuo, meses 13–56. Se representa la ventana completa, no dedicación diaria continua. Regla original: Una actividad por ocurrencia (mensual), ejecutada dentro de una quincena; 1 actividad(es) por ocurrencia. Responsable del paquete: SRE.",
36,"    1.8.6 Informe mensual de avance con valor ganado",1/2/27,29/9/28,435,0,0,1,,,1.8.6,,,#526D82,"Escenario nominal histórico anterior a la reestimación. Mes 1: febrero de 2027. Calendario gráfico: lunes a viernes, sin descontar feriados. Duración de la barra: días hábiles de la ventana, no HH de esfuerzo. Fuente de ventana: T-15, tabla Actividades de los paquetes de esfuerzo continuo, meses 1–20. Se representa la ventana completa, no dedicación diaria continua. Regla original: Una actividad por ocurrencia (mensual), ejecutada dentro de una quincena; 1 actividad(es) por ocurrencia. Responsable del paquete: JP.",
37,"    1.8.7 Tablero de estado del proyecto disponible para el CLIENTE",1/3/27,30/9/31,1197,0,0,1,,,1.8.7,,,#526D82,"Escenario nominal histórico anterior a la reestimación. Mes 1: febrero de 2027. Calendario gráfico: lunes a viernes, sin descontar feriados. Duración de la barra: días hábiles de la ventana, no HH de esfuerzo. Fuente de ventana: T-15, tabla Actividades de los paquetes de esfuerzo continuo, meses 2–56. Se representa la ventana completa, no dedicación diaria continua. Regla original: Una actividad cada 2 quincenas, ejecutada en la última quincena del grupo. Responsable del paquete: JP.",
38,"    1.8.8 Espacio colaborativo con la documentación, los entregables, las actas, los riesgos y los cambios",1/2/27,30/9/31,1217,0,0,1,,,1.8.8,,,#526D82,"Escenario nominal histórico anterior a la reestimación. Mes 1: febrero de 2027. Calendario gráfico: lunes a viernes, sin descontar feriados. Duración de la barra: días hábiles de la ventana, no HH de esfuerzo. Fuente de ventana: T-15, tabla Actividades de los paquetes de esfuerzo continuo, meses 1–56. Se representa la ventana completa, no dedicación diaria continua. Regla original: Una actividad cada 2 quincenas, ejecutada en la última quincena del grupo. Responsable del paquete: JP.",
39,"  1.9 Cumplimiento normativo y contractual",1/2/27,30/9/31,1217,0,0,1,,,1.9,,,#526D82,"Escenario nominal histórico anterior a la reestimación. Mes 1: febrero de 2027. Calendario gráfico: lunes a viernes, sin descontar feriados. Duración de la barra: días hábiles de la ventana, no HH de esfuerzo. Tarea resumen; fechas derivadas del primer y último paquete o hito descendiente.",
40,"    1.9.1 Matriz de cumplimiento normativo por obligación legal, con su control y su evidencia",1/2/27,9/2/27,7,0,0,1,,,1.9.1,,,#526D82,"Escenario nominal histórico anterior a la reestimación. Mes 1: febrero de 2027. Calendario gráfico: lunes a viernes, sin descontar feriados. Duración de la barra: días hábiles de la ventana, no HH de esfuerzo. Fuente de fechas: T-15, tabla Programación de los paquetes con entregable, paquete 1.9.1. Fechas publicadas: 01-02-2027 a 09-02-2027. Predecesoras agregadas publicadas: —. Responsable del paquete: SEG.",
41,"    1.9.2 Acuerdo de tratamiento de datos personales con el CLIENTE",1/2/27,9/2/27,7,0,0,1,,,1.9.2,,,#526D82,"Escenario nominal histórico anterior a la reestimación. Mes 1: febrero de 2027. Calendario gráfico: lunes a viernes, sin descontar feriados. Duración de la barra: días hábiles de la ventana, no HH de esfuerzo. Fuente de fechas: T-15, tabla Programación de los paquetes con entregable, paquete 1.9.2. Fechas publicadas: 01-02-2027 a 09-02-2027. Predecesoras agregadas publicadas: —. Responsable del paquete: SEG.",
42,"    1.9.3 Registro de actividades de tratamiento y evaluación de impacto en protección de datos",1/3/27,9/3/27,7,0,0,1,,,1.9.3,,,#526D82,"Escenario nominal histórico anterior a la reestimación. Mes 1: febrero de 2027. Calendario gráfico: lunes a viernes, sin descontar feriados. Duración de la barra: días hábiles de la ventana, no HH de esfuerzo. Fuente de fechas: T-15, tabla Programación de los paquetes con entregable, paquete 1.9.3. Fechas publicadas: 01-03-2027 a 09-03-2027. Predecesoras agregadas publicadas: —. Responsable del paquete: SEG.",
43,"    1.9.4 Certificación ISO/IEC 27001 vigente y entrega anual de los informes de certificación",1/2/27,30/9/31,1217,0,0,1,,,1.9.4,,,#526D82,"Escenario nominal histórico anterior a la reestimación. Mes 1: febrero de 2027. Calendario gráfico: lunes a viernes, sin descontar feriados. Duración de la barra: días hábiles de la ventana, no HH de esfuerzo. Fuente de ventana: T-15, tabla Actividades de los paquetes de esfuerzo continuo, meses 1–56. Se representa la ventana completa, no dedicación diaria continua. Regla original: Una actividad por ocurrencia (anual), ejecutada dentro de una quincena; 1 actividad(es) por ocurrencia. Responsable del paquete: SEG.",
44,"    1.9.5 Garantía de fiel cumplimiento, seguros y certificados laborales vigentes durante el contrato",1/2/27,30/9/31,1217,0,0,1,,,1.9.5,,,#526D82,"Escenario nominal histórico anterior a la reestimación. Mes 1: febrero de 2027. Calendario gráfico: lunes a viernes, sin descontar feriados. Duración de la barra: días hábiles de la ventana, no HH de esfuerzo. Fuente de ventana: T-15, tabla Actividades de los paquetes de esfuerzo continuo, meses 1–56. Se representa la ventana completa, no dedicación diaria continua. Regla original: Una actividad cada 4 quincenas, ejecutada en la última quincena del grupo. Responsable del paquete: JP.",
45,2 Elaboración,1/2/27,13/3/28,291,0,0,1,,,2,,,#237A69,"Escenario nominal histórico anterior a la reestimación. Mes 1: febrero de 2027. Calendario gráfico: lunes a viernes, sin descontar feriados. Duración de la barra: días hábiles de la ventana, no HH de esfuerzo. Tarea resumen; fechas derivadas del primer y último paquete o hito descendiente.",
46,"  2.1 Arquitectura de la solución",1/3/27,16/2/28,253,0,0,1,,,2.1,,,#237A69,"Escenario nominal histórico anterior a la reestimación. Mes 1: febrero de 2027. Calendario gráfico: lunes a viernes, sin descontar feriados. Duración de la barra: días hábiles de la ventana, no HH de esfuerzo. Tarea resumen; fechas derivadas del primer y último paquete o hito descendiente.",
47,"    2.1.1 Documento de arquitectura lógica: capas, módulos M1 a M12 e interfaces",1/3/27,29/3/27,21,0,0,1,,6-FS>P0D,2.1.1,,,#237A69,"Escenario nominal histórico anterior a la reestimación. Mes 1: febrero de 2027. Calendario gráfico: lunes a viernes, sin descontar feriados. Duración de la barra: días hábiles de la ventana, no HH de esfuerzo. Fuente de fechas: T-15, tabla Programación de los paquetes con entregable, paquete 2.1.1. Fechas publicadas: 01-03-2027 a 29-03-2027. Predecesoras agregadas publicadas: 1.2. D-01: 1.2.1 → 2.1.1, FC. Responsable del paquete: ARQ. Antecesores con restricción mínima (>) para conservar los huecos del escenario nominal; no se agregaron desfases ni reservas calculadas.",
48,"    2.1.2 Documento de arquitectura física híbrida: nube, centros de distribución y plataformas de cross-docking",1/3/27,29/3/27,21,0,0,1,,,2.1.2,,,#237A69,"Escenario nominal histórico anterior a la reestimación. Mes 1: febrero de 2027. Calendario gráfico: lunes a viernes, sin descontar feriados. Duración de la barra: días hábiles de la ventana, no HH de esfuerzo. Fuente de fechas: T-15, tabla Programación de los paquetes con entregable, paquete 2.1.2. Fechas publicadas: 01-03-2027 a 29-03-2027. Predecesoras agregadas publicadas: —. Responsable del paquete: ARQ.",
49,"    2.1.3 Modelo de datos y diccionario de datos, con la trazabilidad por lote",1/3/27,29/3/27,21,0,0,1,,,2.1.3,,,#237A69,"Escenario nominal histórico anterior a la reestimación. Mes 1: febrero de 2027. Calendario gráfico: lunes a viernes, sin descontar feriados. Duración de la barra: días hábiles de la ventana, no HH de esfuerzo. Fuente de fechas: T-15, tabla Programación de los paquetes con entregable, paquete 2.1.3. Fechas publicadas: 01-03-2027 a 29-03-2027. Predecesoras agregadas publicadas: —. Responsable del paquete: DAT.",
50,"    2.1.4 Documento de diseño detallado de M11 y del intercambio con las cadenas",1/2/28,16/2/28,12,0,0,1,,,2.1.4,,,#237A69,"Escenario nominal histórico anterior a la reestimación. Mes 1: febrero de 2027. Calendario gráfico: lunes a viernes, sin descontar feriados. Duración de la barra: días hábiles de la ventana, no HH de esfuerzo. Fuente de fechas: T-15, tabla Programación de los paquetes con entregable, paquete 2.1.4. Fechas publicadas: 01-02-2028 a 16-02-2028. Predecesoras agregadas publicadas: —. Responsable del paquete: ARQ.",
51,"  2.2 Diseño de la seguridad",1/3/27,30/11/27,197,0,0,1,,,2.2,,,#237A69,"Escenario nominal histórico anterior a la reestimación. Mes 1: febrero de 2027. Calendario gráfico: lunes a viernes, sin descontar feriados. Duración de la barra: días hábiles de la ventana, no HH de esfuerzo. Tarea resumen; fechas derivadas del primer y último paquete o hito descendiente.",
52,"    2.2.1 Plan de seguridad de la información",1/3/27,29/3/27,21,0,0,1,,,2.2.1,,,#237A69,"Escenario nominal histórico anterior a la reestimación. Mes 1: febrero de 2027. Calendario gráfico: lunes a viernes, sin descontar feriados. Duración de la barra: días hábiles de la ventana, no HH de esfuerzo. Fuente de fechas: T-15, tabla Programación de los paquetes con entregable, paquete 2.2.1. Fechas publicadas: 01-03-2027 a 29-03-2027. Predecesoras agregadas publicadas: —. Responsable del paquete: SEG.",
53,"    2.2.2 Modelado de amenazas por componente y por integración externa, actualizado ante cada cambio",1/4/27,30/11/27,174,0,0,1,,,2.2.2,,,#237A69,"Escenario nominal histórico anterior a la reestimación. Mes 1: febrero de 2027. Calendario gráfico: lunes a viernes, sin descontar feriados. Duración de la barra: días hábiles de la ventana, no HH de esfuerzo. Fuente de ventana: T-15, tabla Actividades de los paquetes de esfuerzo continuo, meses 3–10. Se representa la ventana completa, no dedicación diaria continua. Regla original: Una actividad por quincena, por presencia continua o periódica. Responsable del paquete: SEG.",
54,"    2.2.3 Plan de respuesta a incidentes de seguridad, con aviso al CLIENTE en dos horas",1/4/27,16/4/27,12,0,0,1,,,2.2.3,,,#237A69,"Escenario nominal histórico anterior a la reestimación. Mes 1: febrero de 2027. Calendario gráfico: lunes a viernes, sin descontar feriados. Duración de la barra: días hábiles de la ventana, no HH de esfuerzo. Fuente de fechas: T-15, tabla Programación de los paquetes con entregable, paquete 2.2.3. Fechas publicadas: 01-04-2027 a 16-04-2027. Predecesoras agregadas publicadas: —. Responsable del paquete: SEG.",
55,"    2.2.4 Matriz de clasificación de la información y matriz de controles",1/3/27,29/3/27,21,0,0,1,,,2.2.4,,,#237A69,"Escenario nominal histórico anterior a la reestimación. Mes 1: febrero de 2027. Calendario gráfico: lunes a viernes, sin descontar feriados. Duración de la barra: días hábiles de la ventana, no HH de esfuerzo. Fuente de fechas: T-15, tabla Programación de los paquetes con entregable, paquete 2.2.4. Fechas publicadas: 01-03-2027 a 29-03-2027. Predecesoras agregadas publicadas: —. Responsable del paquete: SEG.",
56,"  2.3 Diseño de la sala técnica y de los racks",1/2/27,29/3/27,41,0,0,1,,,2.3,,,#237A69,"Escenario nominal histórico anterior a la reestimación. Mes 1: febrero de 2027. Calendario gráfico: lunes a viernes, sin descontar feriados. Duración de la barra: días hábiles de la ventana, no HH de esfuerzo. Tarea resumen; fechas derivadas del primer y último paquete o hito descendiente.",
57,"    2.3.1 Plano de la sala técnica de Talca, con su cálculo eléctrico y térmico",1/2/27,1/3/27,21,0,0,1,,,2.3.1,,,#237A69,"Escenario nominal histórico anterior a la reestimación. Mes 1: febrero de 2027. Calendario gráfico: lunes a viernes, sin descontar feriados. Duración de la barra: días hábiles de la ventana, no HH de esfuerzo. Fuente de fechas: T-15, tabla Programación de los paquetes con entregable, paquete 2.3.1. Fechas publicadas: 01-02-2027 a 01-03-2027. Predecesoras agregadas publicadas: —. Responsable del paquete: SRE.",
58,"    2.3.2 Plano de distribución de los racks R01 de servidores y R02 de comunicaciones",1/2/27,1/3/27,21,0,0,1,,,2.3.2,,,#237A69,"Escenario nominal histórico anterior a la reestimación. Mes 1: febrero de 2027. Calendario gráfico: lunes a viernes, sin descontar feriados. Duración de la barra: días hábiles de la ventana, no HH de esfuerzo. Fuente de fechas: T-15, tabla Programación de los paquetes con entregable, paquete 2.3.2. Fechas publicadas: 01-02-2027 a 01-03-2027. Predecesoras agregadas publicadas: —. Responsable del paquete: SRE.",
59,"    2.3.3 Plano de los gabinetes de borde de Concepción y de las plataformas de cross-docking",1/3/27,29/3/27,21,0,0,1,,,2.3.3,,,#237A69,"Escenario nominal histórico anterior a la reestimación. Mes 1: febrero de 2027. Calendario gráfico: lunes a viernes, sin descontar feriados. Duración de la barra: días hábiles de la ventana, no HH de esfuerzo. Fuente de fechas: T-15, tabla Programación de los paquetes con entregable, paquete 2.3.3. Fechas publicadas: 01-03-2027 a 29-03-2027. Predecesoras agregadas publicadas: —. Responsable del paquete: SRE.",
60,"  2.4 Validación de diseños",19/4/27,13/3/28,236,0,0,1,,,2.4,,,#237A69,"Escenario nominal histórico anterior a la reestimación. Mes 1: febrero de 2027. Calendario gráfico: lunes a viernes, sin descontar feriados. Duración de la barra: días hábiles de la ventana, no HH de esfuerzo. Tarea resumen; fechas derivadas del primer y último paquete o hito descendiente.",
61,"    2.4.1 Acta de aprobación de la arquitectura, el plan de seguridad y el modelo de datos (H2)",19/4/27,29/4/27,9,0,0,1,,47-FS>P0D;48-FS>P0D;49-FS>P0D;52-FS>P0D;54-FS>P0D;55-FS>P0D,2.4.1,,,#237A69,"Escenario nominal histórico anterior a la reestimación. Mes 1: febrero de 2027. Calendario gráfico: lunes a viernes, sin descontar feriados. Duración de la barra: días hábiles de la ventana, no HH de esfuerzo. Fuente de fechas: T-15, tabla Programación de los paquetes con entregable, paquete 2.4.1. Fechas publicadas: 19-04-2027 a 29-04-2027. Predecesoras agregadas publicadas: 2.1, 2.2. Diseño-H2: 2.1.1 → 2.4.1, FC. Diseño-H2: 2.1.2 → 2.4.1, FC. Diseño-H2: 2.1.3 → 2.4.1, FC. Diseño-H2: 2.2.1 → 2.4.1, FC. Diseño-H2: 2.2.3 → 2.4.1, FC. Diseño-H2: 2.2.4 → 2.4.1, FC. Responsable del paquete: ARQ. Antecesores con restricción mínima (>) para conservar los huecos del escenario nominal; no se agregaron desfases ni reservas calculadas.",
62,"    2.4.2 Acta de aprobación del diseño detallado de la Etapa 2 (H8)",1/3/28,13/3/28,9,0,0,1,,10-FS>P0D;50-FS>P0D,2.4.2,,,#237A69,"Escenario nominal histórico anterior a la reestimación. Mes 1: febrero de 2027. Calendario gráfico: lunes a viernes, sin descontar feriados. Duración de la barra: días hábiles de la ventana, no HH de esfuerzo. Fuente de fechas: T-15, tabla Programación de los paquetes con entregable, paquete 2.4.2. Fechas publicadas: 01-03-2028 a 13-03-2028. Predecesoras agregadas publicadas: 1.2, 2.1. Diseño-H8: 1.2.5 → 2.4.2, FC. Diseño-H8: 2.1.4 → 2.4.2, FC. Responsable del paquete: ARQ. Antecesores con restricción mínima (>) para conservar los huecos del escenario nominal; no se agregaron desfases ni reservas calculadas.",
63,"  2.5 Continuidad del negocio",1/4/27,29/4/27,21,0,0,1,,,2.5,,,#237A69,"Escenario nominal histórico anterior a la reestimación. Mes 1: febrero de 2027. Calendario gráfico: lunes a viernes, sin descontar feriados. Duración de la barra: días hábiles de la ventana, no HH de esfuerzo. Tarea resumen; fechas derivadas del primer y último paquete o hito descendiente.",
64,"    2.5.1 Plan de continuidad del negocio según ISO 22301, con análisis de impacto y procedimientos manuales",1/4/27,29/4/27,21,0,0,1,,,2.5.1,,,#237A69,"Escenario nominal histórico anterior a la reestimación. Mes 1: febrero de 2027. Calendario gráfico: lunes a viernes, sin descontar feriados. Duración de la barra: días hábiles de la ventana, no HH de esfuerzo. Fuente de fechas: T-15, tabla Programación de los paquetes con entregable, paquete 2.5.1. Fechas publicadas: 01-04-2027 a 29-04-2027. Predecesoras agregadas publicadas: —. Responsable del paquete: SRE.",
65,"    2.5.2 Plan de continuidad TIC según ISO/IEC 27031 y plan de recuperación ante desastres",1/4/27,29/4/27,21,0,0,1,,,2.5.2,,,#237A69,"Escenario nominal histórico anterior a la reestimación. Mes 1: febrero de 2027. Calendario gráfico: lunes a viernes, sin descontar feriados. Duración de la barra: días hábiles de la ventana, no HH de esfuerzo. Fuente de fechas: T-15, tabla Programación de los paquetes con entregable, paquete 2.5.2. Fechas publicadas: 01-04-2027 a 29-04-2027. Predecesoras agregadas publicadas: —. Responsable del paquete: SRE.",
66,"  2.6 Experiencia de usuario",1/3/27,31/5/27,66,0,0,1,,,2.6,,,#237A69,"Escenario nominal histórico anterior a la reestimación. Mes 1: febrero de 2027. Calendario gráfico: lunes a viernes, sin descontar feriados. Duración de la barra: días hábiles de la ventana, no HH de esfuerzo. Tarea resumen; fechas derivadas del primer y último paquete o hito descendiente.",
67,"    2.6.1 Investigación con preparadores, preventistas, conductores y almaceneros",1/3/27,29/3/27,21,0,0,1,,,2.6.1,,,#237A69,"Escenario nominal histórico anterior a la reestimación. Mes 1: febrero de 2027. Calendario gráfico: lunes a viernes, sin descontar feriados. Duración de la barra: días hábiles de la ventana, no HH de esfuerzo. Fuente de fechas: T-15, tabla Programación de los paquetes con entregable, paquete 2.6.1. Fechas publicadas: 01-03-2027 a 29-03-2027. Predecesoras agregadas publicadas: —. Responsable del paquete: IMP.",
68,"    2.6.2 Prototipos y pruebas de usabilidad con participantes del CLIENTE",1/4/27,29/4/27,21,0,0,1,,,2.6.2,,,#237A69,"Escenario nominal histórico anterior a la reestimación. Mes 1: febrero de 2027. Calendario gráfico: lunes a viernes, sin descontar feriados. Duración de la barra: días hábiles de la ventana, no HH de esfuerzo. Fuente de fechas: T-15, tabla Programación de los paquetes con entregable, paquete 2.6.2. Fechas publicadas: 01-04-2027 a 29-04-2027. Predecesoras agregadas publicadas: —. Responsable del paquete: IMP.",
69,"    2.6.3 Indicadores de usabilidad comprometidos por transacción crítica",3/5/27,31/5/27,21,0,0,1,,,2.6.3,,,#237A69,"Escenario nominal histórico anterior a la reestimación. Mes 1: febrero de 2027. Calendario gráfico: lunes a viernes, sin descontar feriados. Duración de la barra: días hábiles de la ventana, no HH de esfuerzo. Fuente de fechas: T-15, tabla Programación de los paquetes con entregable, paquete 2.6.3. Fechas publicadas: 03-05-2027 a 31-05-2027. Predecesoras agregadas publicadas: —. Responsable del paquete: IMP.",
70,3 Construcción,1/3/27,31/10/28,437,0,0,1,,,3,,,#D17A32,"Escenario nominal histórico anterior a la reestimación. Mes 1: febrero de 2027. Calendario gráfico: lunes a viernes, sin descontar feriados. Duración de la barra: días hábiles de la ventana, no HH de esfuerzo. Tarea resumen; fechas derivadas del primer y último paquete o hito descendiente.",
71,"  3.1 Ambientes y cadena de desarrollo",3/5/27,21/6/27,36,0,0,1,,,3.1,,,#D17A32,"Escenario nominal histórico anterior a la reestimación. Mes 1: febrero de 2027. Calendario gráfico: lunes a viernes, sin descontar feriados. Duración de la barra: días hábiles de la ventana, no HH de esfuerzo. Tarea resumen; fechas derivadas del primer y último paquete o hito descendiente.",
72,"    3.1.1 Ambientes de Desarrollo y QA en la nube (H3)",1/6/27,21/6/27,15,0,0,1,,78-FS>P0D;79-FS>P0D;81-FS>P0D;82-FS>P0D,3.1.1,,,#D17A32,"Escenario nominal histórico anterior a la reestimación. Mes 1: febrero de 2027. Calendario gráfico: lunes a viernes, sin descontar feriados. Duración de la barra: días hábiles de la ventana, no HH de esfuerzo. Fuente de fechas: T-15, tabla Programación de los paquetes con entregable, paquete 3.1.1. Fechas publicadas: 01-06-2027 a 21-06-2027. Predecesoras agregadas publicadas: 3.2. D-08: 3.2.1 → 3.1.1, FC. D-08: 3.2.2 → 3.1.1, FC. D-08: 3.2.4 → 3.1.1, FC. D-08: 3.2.5 → 3.1.1, FC. Responsable del paquete: SRE. Antecesores con restricción mínima (>) para conservar los huecos del escenario nominal; no se agregaron desfases ni reservas calculadas.",
73,"    3.1.2 Ambientes de Preproducción y Producción en la nube (H3)",1/6/27,21/6/27,15,0,0,1,,78-FS>P0D;79-FS>P0D;81-FS>P0D;82-FS>P0D,3.1.2,,,#D17A32,"Escenario nominal histórico anterior a la reestimación. Mes 1: febrero de 2027. Calendario gráfico: lunes a viernes, sin descontar feriados. Duración de la barra: días hábiles de la ventana, no HH de esfuerzo. Fuente de fechas: T-15, tabla Programación de los paquetes con entregable, paquete 3.1.2. Fechas publicadas: 01-06-2027 a 21-06-2027. Predecesoras agregadas publicadas: 3.2. D-08: 3.2.1 → 3.1.2, FC. D-08: 3.2.2 → 3.1.2, FC. D-08: 3.2.4 → 3.1.2, FC. D-08: 3.2.5 → 3.1.2, FC. Responsable del paquete: SRE. Antecesores con restricción mínima (>) para conservar los huecos del escenario nominal; no se agregaron desfases ni reservas calculadas.",
74,"    3.1.3 Ambiente de recuperación ante desastres en la región secundaria (H3)",1/6/27,21/6/27,15,0,0,1,,78-FS>P0D;79-FS>P0D;81-FS>P0D;82-FS>P0D,3.1.3,,,#D17A32,"Escenario nominal histórico anterior a la reestimación. Mes 1: febrero de 2027. Calendario gráfico: lunes a viernes, sin descontar feriados. Duración de la barra: días hábiles de la ventana, no HH de esfuerzo. Fuente de fechas: T-15, tabla Programación de los paquetes con entregable, paquete 3.1.3. Fechas publicadas: 01-06-2027 a 21-06-2027. Predecesoras agregadas publicadas: 3.2. D-08: 3.2.1 → 3.1.3, FC. D-08: 3.2.2 → 3.1.3, FC. D-08: 3.2.4 → 3.1.3, FC. D-08: 3.2.5 → 3.1.3, FC. Responsable del paquete: SRE. Antecesores con restricción mínima (>) para conservar los huecos del escenario nominal; no se agregaron desfases ni reservas calculadas.",
75,"    3.1.4 Cadena de integración y entrega continua, e infraestructura como código",3/5/27,31/5/27,21,0,0,1,,,3.1.4,,,#D17A32,"Escenario nominal histórico anterior a la reestimación. Mes 1: febrero de 2027. Calendario gráfico: lunes a viernes, sin descontar feriados. Duración de la barra: días hábiles de la ventana, no HH de esfuerzo. Fuente de fechas: T-15, tabla Programación de los paquetes con entregable, paquete 3.1.4. Fechas publicadas: 03-05-2027 a 31-05-2027. Predecesoras agregadas publicadas: —. Responsable del paquete: SRE.",
76,"    3.1.5 Observabilidad de los doce módulos y de los sitios, con tableros para el CLIENTE (H3)",1/6/27,21/6/27,15,0,0,1,,,3.1.5,,,#D17A32,"Escenario nominal histórico anterior a la reestimación. Mes 1: febrero de 2027. Calendario gráfico: lunes a viernes, sin descontar feriados. Duración de la barra: días hábiles de la ventana, no HH de esfuerzo. Fuente de fechas: T-15, tabla Programación de los paquetes con entregable, paquete 3.1.5. Fechas publicadas: 01-06-2027 a 21-06-2027. Predecesoras agregadas publicadas: —. Responsable del paquete: SRE.",
77,"  3.2 Servicios de nube de la plataforma",3/5/27,29/6/27,42,0,0,1,,,3.2,,,#D17A32,"Escenario nominal histórico anterior a la reestimación. Mes 1: febrero de 2027. Calendario gráfico: lunes a viernes, sin descontar feriados. Duración de la barra: días hábiles de la ventana, no HH de esfuerzo. Tarea resumen; fechas derivadas del primer y último paquete o hito descendiente.",
78,"    3.2.1 Servicio de nube para la aplicación y los portales",3/5/27,31/5/27,21,0,0,1,,185-FS>P0D,3.2.1,,,#D17A32,"Escenario nominal histórico anterior a la reestimación. Mes 1: febrero de 2027. Calendario gráfico: lunes a viernes, sin descontar feriados. Duración de la barra: días hábiles de la ventana, no HH de esfuerzo. Fuente de fechas: T-15, tabla Programación de los paquetes con entregable, paquete 3.2.1. Fechas publicadas: 03-05-2027 a 31-05-2027. Predecesoras agregadas publicadas: 5.2. D-07: 5.2.1 → 3.2.1, FC. Responsable del paquete: SRE. Antecesores con restricción mínima (>) para conservar los huecos del escenario nominal; no se agregaron desfases ni reservas calculadas.",
79,"    3.2.2 Servicio de nube de base de datos, caché y mensajería",3/5/27,31/5/27,21,0,0,1,,185-FS>P0D,3.2.2,,,#D17A32,"Escenario nominal histórico anterior a la reestimación. Mes 1: febrero de 2027. Calendario gráfico: lunes a viernes, sin descontar feriados. Duración de la barra: días hábiles de la ventana, no HH de esfuerzo. Fuente de fechas: T-15, tabla Programación de los paquetes con entregable, paquete 3.2.2. Fechas publicadas: 03-05-2027 a 31-05-2027. Predecesoras agregadas publicadas: 5.2. D-07: 5.2.1 → 3.2.2, FC. Responsable del paquete: SRE. Antecesores con restricción mínima (>) para conservar los huecos del escenario nominal; no se agregaron desfases ni reservas calculadas.",
80,"    3.2.3 Servicio de nube de ingesta de IoT, telemetría cruda y plataforma analítica",3/5/27,31/5/27,21,0,0,1,,185-FS>P0D,3.2.3,,,#D17A32,"Escenario nominal histórico anterior a la reestimación. Mes 1: febrero de 2027. Calendario gráfico: lunes a viernes, sin descontar feriados. Duración de la barra: días hábiles de la ventana, no HH de esfuerzo. Fuente de fechas: T-15, tabla Programación de los paquetes con entregable, paquete 3.2.3. Fechas publicadas: 03-05-2027 a 31-05-2027. Predecesoras agregadas publicadas: 5.2. D-07: 5.2.1 → 3.2.3, FC. Responsable del paquete: SRE. Antecesores con restricción mínima (>) para conservar los huecos del escenario nominal; no se agregaron desfases ni reservas calculadas.",
81,"    3.2.4 Servicio de nube de respaldo inmutable y réplica entre regiones",3/5/27,31/5/27,21,0,0,1,,185-FS>P0D,3.2.4,,,#D17A32,"Escenario nominal histórico anterior a la reestimación. Mes 1: febrero de 2027. Calendario gráfico: lunes a viernes, sin descontar feriados. Duración de la barra: días hábiles de la ventana, no HH de esfuerzo. Fuente de fechas: T-15, tabla Programación de los paquetes con entregable, paquete 3.2.4. Fechas publicadas: 03-05-2027 a 31-05-2027. Predecesoras agregadas publicadas: 5.2. D-07: 5.2.1 → 3.2.4, FC. Responsable del paquete: SRE. Antecesores con restricción mínima (>) para conservar los huecos del escenario nominal; no se agregaron desfases ni reservas calculadas.",
82,"    3.2.5 Servicio de nube de seguridad y gobierno, y detección en endpoints",3/5/27,31/5/27,21,0,0,1,,185-FS>P0D,3.2.5,,,#D17A32,"Escenario nominal histórico anterior a la reestimación. Mes 1: febrero de 2027. Calendario gráfico: lunes a viernes, sin descontar feriados. Duración de la barra: días hábiles de la ventana, no HH de esfuerzo. Fuente de fechas: T-15, tabla Programación de los paquetes con entregable, paquete 3.2.5. Fechas publicadas: 03-05-2027 a 31-05-2027. Predecesoras agregadas publicadas: 5.2. D-07: 5.2.1 → 3.2.5, FC. Responsable del paquete: SEG. Antecesores con restricción mínima (>) para conservar los huecos del escenario nominal; no se agregaron desfases ni reservas calculadas.",
83,"    3.2.6 Servicio de gestión de dispositivos móviles",1/6/27,29/6/27,21,0,0,1,,185-FS>P0D,3.2.6,,,#D17A32,"Escenario nominal histórico anterior a la reestimación. Mes 1: febrero de 2027. Calendario gráfico: lunes a viernes, sin descontar feriados. Duración de la barra: días hábiles de la ventana, no HH de esfuerzo. Fuente de fechas: T-15, tabla Programación de los paquetes con entregable, paquete 3.2.6. Fechas publicadas: 01-06-2027 a 29-06-2027. Predecesoras agregadas publicadas: 5.2. D-07: 5.2.1 → 3.2.6, FC. Responsable del paquete: SRE. Antecesores con restricción mínima (>) para conservar los huecos del escenario nominal; no se agregaron desfases ni reservas calculadas.",
84,"  3.3 Base compartida",1/6/27,5/8/27,48,0,0,1,,,3.3,,,#D17A32,"Escenario nominal histórico anterior a la reestimación. Mes 1: febrero de 2027. Calendario gráfico: lunes a viernes, sin descontar feriados. Duración de la barra: días hábiles de la ventana, no HH de esfuerzo. Tarea resumen; fechas derivadas del primer y último paquete o hito descendiente.",
85,"    3.3.1 Identidad y control de acceso, incluidos los conductores externos que rotan sin aviso",1/6/27,5/8/27,48,0,0,1,,52-FS>P0D,3.3.1,,,#D17A32,"Escenario nominal histórico anterior a la reestimación. Mes 1: febrero de 2027. Calendario gráfico: lunes a viernes, sin descontar feriados. Duración de la barra: días hábiles de la ventana, no HH de esfuerzo. Fuente de fechas: T-15, tabla Programación de los paquetes con entregable, paquete 3.3.1. Fechas publicadas: 01-06-2027 a 05-08-2027. Predecesoras agregadas publicadas: 2.2. D-06: 2.2.1 → 3.3.1, FC. Responsable del paquete: SEG. Antecesores con restricción mínima (>) para conservar los huecos del escenario nominal; no se agregaron desfases ni reservas calculadas.",
86,"    3.3.2 Integración con el ERP como único emisor de la guía de despacho (INT-06 e INT-07)",1/6/27,1/7/27,23,0,0,1,,8-FS>P0D,3.3.2,,,#D17A32,"Escenario nominal histórico anterior a la reestimación. Mes 1: febrero de 2027. Calendario gráfico: lunes a viernes, sin descontar feriados. Duración de la barra: días hábiles de la ventana, no HH de esfuerzo. Fuente de fechas: T-15, tabla Programación de los paquetes con entregable, paquete 3.3.2. Fechas publicadas: 01-06-2027 a 01-07-2027. Predecesoras agregadas publicadas: 1.2. D-02: 1.2.3 → 3.3.2, FC. Responsable del paquete: ARQ. Antecesores con restricción mínima (>) para conservar los huecos del escenario nominal; no se agregaron desfases ni reservas calculadas.",
87,"    3.3.3 Convivencia con el WMS de 2013 durante el reemplazo",1/6/27,7/7/27,27,0,0,1,,,3.3.3,,,#D17A32,"Escenario nominal histórico anterior a la reestimación. Mes 1: febrero de 2027. Calendario gráfico: lunes a viernes, sin descontar feriados. Duración de la barra: días hábiles de la ventana, no HH de esfuerzo. Fuente de fechas: T-15, tabla Programación de los paquetes con entregable, paquete 3.3.3. Fechas publicadas: 01-06-2027 a 07-07-2027. Predecesoras agregadas publicadas: —. Responsable del paquete: ARQ.",
88,"    3.3.4 Integración con la telemetría de los 42 camiones propios (INT-15)",10/6/27,12/7/27,23,0,0,1,,,3.3.4,,,#D17A32,"Escenario nominal histórico anterior a la reestimación. Mes 1: febrero de 2027. Calendario gráfico: lunes a viernes, sin descontar feriados. Duración de la barra: días hábiles de la ventana, no HH de esfuerzo. Fuente de fechas: T-15, tabla Programación de los paquetes con entregable, paquete 3.3.4. Fechas publicadas: 10-06-2027 a 12-07-2027. Predecesoras agregadas publicadas: —. Responsable del paquete: ARQ.",
89,"    3.3.5 Registro auditable de stock, lotes y cobros",1/6/27,3/8/27,46,0,0,1,,,3.3.5,,,#D17A32,"Escenario nominal histórico anterior a la reestimación. Mes 1: febrero de 2027. Calendario gráfico: lunes a viernes, sin descontar feriados. Duración de la barra: días hábiles de la ventana, no HH de esfuerzo. Fuente de fechas: T-15, tabla Programación de los paquetes con entregable, paquete 3.3.5. Fechas publicadas: 01-06-2027 a 03-08-2027. Predecesoras agregadas publicadas: —. Responsable del paquete: ARQ.",
90,"    3.3.6 Operación sin conexión: 14 horas en terreno y 24 horas en el CD",7/6/27,3/8/27,42,0,0,1,,,3.3.6,,,#D17A32,"Escenario nominal histórico anterior a la reestimación. Mes 1: febrero de 2027. Calendario gráfico: lunes a viernes, sin descontar feriados. Duración de la barra: días hábiles de la ventana, no HH de esfuerzo. Fuente de fechas: T-15, tabla Programación de los paquetes con entregable, paquete 3.3.6. Fechas publicadas: 07-06-2027 a 03-08-2027. Predecesoras agregadas publicadas: —. Responsable del paquete: ARQ.",
91,"  3.4 Módulos de la Etapa 1",10/6/27,30/9/27,81,0,0,1,,,3.4,,,#D17A32,"Escenario nominal histórico anterior a la reestimación. Mes 1: febrero de 2027. Calendario gráfico: lunes a viernes, sin descontar feriados. Duración de la barra: días hábiles de la ventana, no HH de esfuerzo. Tarea resumen; fechas derivadas del primer y último paquete o hito descendiente.",
92,"    3.4.1 Recepción de mercadería con captura de lote y vencimiento (M1 Recepción)",10/6/27,10/8/27,44,0,0,1,,61-FS>P0D;68-FS>P0D;72-FF>P0D;73-FF>P0D;74-FF>P0D;85-SS>P0D;86-SS>P0D;87-SS>P0D;88-SS>P0D;89-SS>P0D;90-SS>P0D,3.4.1,,,#D17A32,"Escenario nominal histórico anterior a la reestimación. Mes 1: febrero de 2027. Calendario gráfico: lunes a viernes, sin descontar feriados. Duración de la barra: días hábiles de la ventana, no HH de esfuerzo. Fuente de fechas: T-15, tabla Programación de los paquetes con entregable, paquete 3.4.1. Fechas publicadas: 10-06-2027 a 10-08-2027. Predecesoras agregadas publicadas: 2.4, 2.6, 3.1, 3.3. D-04: 2.4.1 → 3.4.1, FC. D-05: 2.6.2 → 3.4.1, FC. D-14: 3.1.1 → 3.4.1, FF. La dependencia original condiciona la entrega en QA, no el inicio del desarrollo. Se representa como fin-fin a nivel de paquete. D-14: 3.1.2 → 3.4.1, FF. La dependencia original condiciona la entrega en QA, no el inicio del desarrollo. Se representa como fin-fin a nivel de paquete. D-14: 3.1.3 → 3.4.1, FF. La dependencia original condiciona la entrega en QA, no el inicio del desarrollo. Se representa como fin-fin a nivel de paquete. D-15: 3.3.1 → 3.4.1, CC. D-15: 3.3.2 → 3.4.1, CC. D-15: 3.3.3 → 3.4.1, CC. D-15: 3.3.4 → 3.4.1, CC. D-15: 3.3.5 → 3.4.1, CC. D-15: 3.3.6 → 3.4.1, CC. Responsable del paquete: DES. Antecesores con restricción mínima (>) para conservar los huecos del escenario nominal; no se agregaron desfases ni reservas calculadas.",
93,"    3.4.2 Inventario por ubicación y lote, con FEFO y conteo cíclico (M2 Inventario)",10/6/27,11/8/27,45,0,0,1,,61-FS>P0D;68-FS>P0D;72-FF>P0D;73-FF>P0D;74-FF>P0D;85-SS>P0D;86-SS>P0D;87-SS>P0D;88-SS>P0D;89-SS>P0D;90-SS>P0D,3.4.2,,,#D17A32,"Escenario nominal histórico anterior a la reestimación. Mes 1: febrero de 2027. Calendario gráfico: lunes a viernes, sin descontar feriados. Duración de la barra: días hábiles de la ventana, no HH de esfuerzo. Fuente de fechas: T-15, tabla Programación de los paquetes con entregable, paquete 3.4.2. Fechas publicadas: 10-06-2027 a 11-08-2027. Predecesoras agregadas publicadas: 2.4, 2.6, 3.1, 3.3. D-04: 2.4.1 → 3.4.2, FC. D-05: 2.6.2 → 3.4.2, FC. D-14: 3.1.1 → 3.4.2, FF. La dependencia original condiciona la entrega en QA, no el inicio del desarrollo. Se representa como fin-fin a nivel de paquete. D-14: 3.1.2 → 3.4.2, FF. La dependencia original condiciona la entrega en QA, no el inicio del desarrollo. Se representa como fin-fin a nivel de paquete. D-14: 3.1.3 → 3.4.2, FF. La dependencia original condiciona la entrega en QA, no el inicio del desarrollo. Se representa como fin-fin a nivel de paquete. D-15: 3.3.1 → 3.4.2, CC. D-15: 3.3.2 → 3.4.2, CC. D-15: 3.3.3 → 3.4.2, CC. D-15: 3.3.4 → 3.4.2, CC. D-15: 3.3.5 → 3.4.2, CC. D-15: 3.3.6 → 3.4.2, CC. Responsable del paquete: DES. Antecesores con restricción mínima (>) para conservar los huecos del escenario nominal; no se agregaron desfases ni reservas calculadas.",
94,"    3.4.3 Preparación de pedidos en el turno de noche y en la cámara de congelado (M5 Preparación)",14/6/27,18/8/27,48,0,0,1,,61-FS>P0D;68-FS>P0D;72-FF>P0D;73-FF>P0D;74-FF>P0D;85-SS>P0D;86-SS>P0D;87-SS>P0D;88-SS>P0D;89-SS>P0D;90-SS>P0D;92-SS>P0D;93-SS>P0D,3.4.3,,,#D17A32,"Escenario nominal histórico anterior a la reestimación. Mes 1: febrero de 2027. Calendario gráfico: lunes a viernes, sin descontar feriados. Duración de la barra: días hábiles de la ventana, no HH de esfuerzo. Fuente de fechas: T-15, tabla Programación de los paquetes con entregable, paquete 3.4.3. Fechas publicadas: 14-06-2027 a 18-08-2027. Predecesoras agregadas publicadas: 2.4, 2.6, 3.1, 3.3, 3.4.1, 3.4.2. D-04: 2.4.1 → 3.4.3, FC. D-05: 2.6.2 → 3.4.3, FC. D-14: 3.1.1 → 3.4.3, FF. La dependencia original condiciona la entrega en QA, no el inicio del desarrollo. Se representa como fin-fin a nivel de paquete. D-14: 3.1.2 → 3.4.3, FF. La dependencia original condiciona la entrega en QA, no el inicio del desarrollo. Se representa como fin-fin a nivel de paquete. D-14: 3.1.3 → 3.4.3, FF. La dependencia original condiciona la entrega en QA, no el inicio del desarrollo. Se representa como fin-fin a nivel de paquete. D-15: 3.3.1 → 3.4.3, CC. D-15: 3.3.2 → 3.4.3, CC. D-15: 3.3.3 → 3.4.3, CC. D-15: 3.3.4 → 3.4.3, CC. D-15: 3.3.5 → 3.4.3, CC. D-15: 3.3.6 → 3.4.3, CC. D-16: 3.4.1 → 3.4.3, CC. Relación POR INTERFAZ resumida con CC para conservar el solapamiento. Construcción después del contrato A02 e integración después de la entrega A12: esas puertas internas se conservan como condición documental y no se descomponen en este CSV de paquetes. D-16: 3.4.2 → 3.4.3, CC. Relación POR INTERFAZ resumida con CC para conservar el solapamiento. Construcción después del contrato A02 e integración después de la entrega A12: esas puertas internas se conservan como condición documental y no se descomponen en este CSV de paquetes. Responsable del paquete: DES. Antecesores con restricción mínima (>) para conservar los huecos del escenario nominal; no se agregaron desfases ni reservas calculadas.",
95,"    3.4.4 Cadena de frío, retención de lotes y retiro sanitario (M9 Calidad y trazabilidad)",14/6/27,29/9/27,78,0,0,1,,61-FS>P0D;68-FS>P0D;72-FF>P0D;73-FF>P0D;74-FF>P0D;85-SS>P0D;86-SS>P0D;87-SS>P0D;88-SS>P0D;89-SS>P0D;90-SS>P0D;92-SS>P0D;93-SS>P0D,3.4.4,,,#D17A32,"Escenario nominal histórico anterior a la reestimación. Mes 1: febrero de 2027. Calendario gráfico: lunes a viernes, sin descontar feriados. Duración de la barra: días hábiles de la ventana, no HH de esfuerzo. Fuente de fechas: T-15, tabla Programación de los paquetes con entregable, paquete 3.4.4. Fechas publicadas: 14-06-2027 a 29-09-2027. Predecesoras agregadas publicadas: 2.4, 2.6, 3.1, 3.3, 3.4.1, 3.4.2. D-04: 2.4.1 → 3.4.4, FC. D-05: 2.6.2 → 3.4.4, FC. D-14: 3.1.1 → 3.4.4, FF. La dependencia original condiciona la entrega en QA, no el inicio del desarrollo. Se representa como fin-fin a nivel de paquete. D-14: 3.1.2 → 3.4.4, FF. La dependencia original condiciona la entrega en QA, no el inicio del desarrollo. Se representa como fin-fin a nivel de paquete. D-14: 3.1.3 → 3.4.4, FF. La dependencia original condiciona la entrega en QA, no el inicio del desarrollo. Se representa como fin-fin a nivel de paquete. D-15: 3.3.1 → 3.4.4, CC. D-15: 3.3.2 → 3.4.4, CC. D-15: 3.3.3 → 3.4.4, CC. D-15: 3.3.4 → 3.4.4, CC. D-15: 3.3.5 → 3.4.4, CC. D-15: 3.3.6 → 3.4.4, CC. D-16: 3.4.1 → 3.4.4, CC. Relación POR INTERFAZ resumida con CC para conservar el solapamiento. Construcción después del contrato A02 e integración después de la entrega A12: esas puertas internas se conservan como condición documental y no se descomponen en este CSV de paquetes. D-16: 3.4.2 → 3.4.4, CC. Relación POR INTERFAZ resumida con CC para conservar el solapamiento. Construcción después del contrato A02 e integración después de la entrega A12: esas puertas internas se conservan como condición documental y no se descomponen en este CSV de paquetes. Responsable del paquete: DES. Antecesores con restricción mínima (>) para conservar los huecos del escenario nominal; no se agregaron desfases ni reservas calculadas.",
96,"    3.4.5 Ingesta de temperatura y posición de la flota (M12 Telemetría)",14/6/27,30/8/27,56,0,0,1,,61-FS>P0D;68-FS>P0D;80-FS>P0D;72-FF>P0D;73-FF>P0D;74-FF>P0D;85-SS>P0D;86-SS>P0D;87-SS>P0D;88-SS>P0D;89-SS>P0D;90-SS>P0D,3.4.5,,,#D17A32,"Escenario nominal histórico anterior a la reestimación. Mes 1: febrero de 2027. Calendario gráfico: lunes a viernes, sin descontar feriados. Duración de la barra: días hábiles de la ventana, no HH de esfuerzo. Fuente de fechas: T-15, tabla Programación de los paquetes con entregable, paquete 3.4.5. Fechas publicadas: 14-06-2027 a 30-08-2027. Predecesoras agregadas publicadas: 2.4, 2.6, 3.1, 3.2, 3.3. D-04: 2.4.1 → 3.4.5, FC. D-05: 2.6.2 → 3.4.5, FC. D-08-IoT: 3.2.3 → 3.4.5, FC. D-14: 3.1.1 → 3.4.5, FF. La dependencia original condiciona la entrega en QA, no el inicio del desarrollo. Se representa como fin-fin a nivel de paquete. D-14: 3.1.2 → 3.4.5, FF. La dependencia original condiciona la entrega en QA, no el inicio del desarrollo. Se representa como fin-fin a nivel de paquete. D-14: 3.1.3 → 3.4.5, FF. La dependencia original condiciona la entrega en QA, no el inicio del desarrollo. Se representa como fin-fin a nivel de paquete. D-15: 3.3.1 → 3.4.5, CC. D-15: 3.3.2 → 3.4.5, CC. D-15: 3.3.3 → 3.4.5, CC. D-15: 3.3.4 → 3.4.5, CC. D-15: 3.3.5 → 3.4.5, CC. D-15: 3.3.6 → 3.4.5, CC. Responsable del paquete: DES. Antecesores con restricción mínima (>) para conservar los huecos del escenario nominal; no se agregaron desfases ni reservas calculadas.",
97,"    3.4.6 Aplicación móvil de preventa sin conexión, con stock y crédito (M3 Preventa)",16/6/27,17/8/27,45,0,0,1,,61-FS>P0D;68-FS>P0D;72-FF>P0D;73-FF>P0D;74-FF>P0D;85-SS>P0D;86-SS>P0D;87-SS>P0D;88-SS>P0D;89-SS>P0D;90-SS>P0D;93-SS>P0D,3.4.6,,,#D17A32,"Escenario nominal histórico anterior a la reestimación. Mes 1: febrero de 2027. Calendario gráfico: lunes a viernes, sin descontar feriados. Duración de la barra: días hábiles de la ventana, no HH de esfuerzo. Fuente de fechas: T-15, tabla Programación de los paquetes con entregable, paquete 3.4.6. Fechas publicadas: 16-06-2027 a 17-08-2027. Predecesoras agregadas publicadas: 2.4, 2.6, 3.1, 3.3, 3.4.2. D-04: 2.4.1 → 3.4.6, FC. D-05: 2.6.2 → 3.4.6, FC. D-14: 3.1.1 → 3.4.6, FF. La dependencia original condiciona la entrega en QA, no el inicio del desarrollo. Se representa como fin-fin a nivel de paquete. D-14: 3.1.2 → 3.4.6, FF. La dependencia original condiciona la entrega en QA, no el inicio del desarrollo. Se representa como fin-fin a nivel de paquete. D-14: 3.1.3 → 3.4.6, FF. La dependencia original condiciona la entrega en QA, no el inicio del desarrollo. Se representa como fin-fin a nivel de paquete. D-15: 3.3.1 → 3.4.6, CC. D-15: 3.3.2 → 3.4.6, CC. D-15: 3.3.3 → 3.4.6, CC. D-15: 3.3.4 → 3.4.6, CC. D-15: 3.3.5 → 3.4.6, CC. D-15: 3.3.6 → 3.4.6, CC. D-17: 3.4.2 → 3.4.6, CC. Responsable del paquete: DES. Antecesores con restricción mínima (>) para conservar los huecos del escenario nominal; no se agregaron desfases ni reservas calculadas.",
98,"    3.4.7 Planificación de rutas corregible por el planificador (M4 Rutas)",16/6/27,8/9/27,61,0,0,1,,7-FS>P0D;61-FS>P0D;68-FS>P0D;72-FF>P0D;73-FF>P0D;74-FF>P0D;85-SS>P0D;86-SS>P0D;87-SS>P0D;88-SS>P0D;89-SS>P0D;90-SS>P0D;94-SS>P0D;97-SS>P0D,3.4.7,,,#D17A32,"Escenario nominal histórico anterior a la reestimación. Mes 1: febrero de 2027. Calendario gráfico: lunes a viernes, sin descontar feriados. Duración de la barra: días hábiles de la ventana, no HH de esfuerzo. Fuente de fechas: T-15, tabla Programación de los paquetes con entregable, paquete 3.4.7. Fechas publicadas: 16-06-2027 a 08-09-2027. Predecesoras agregadas publicadas: 1.2, 2.4, 2.6, 3.1, 3.3, 3.4.3, 3.4.6. D-03: 1.2.2 → 3.4.7, FC. D-04: 2.4.1 → 3.4.7, FC. D-05: 2.6.2 → 3.4.7, FC. D-14: 3.1.1 → 3.4.7, FF. La dependencia original condiciona la entrega en QA, no el inicio del desarrollo. Se representa como fin-fin a nivel de paquete. D-14: 3.1.2 → 3.4.7, FF. La dependencia original condiciona la entrega en QA, no el inicio del desarrollo. Se representa como fin-fin a nivel de paquete. D-14: 3.1.3 → 3.4.7, FF. La dependencia original condiciona la entrega en QA, no el inicio del desarrollo. Se representa como fin-fin a nivel de paquete. D-15: 3.3.1 → 3.4.7, CC. D-15: 3.3.2 → 3.4.7, CC. D-15: 3.3.3 → 3.4.7, CC. D-15: 3.3.4 → 3.4.7, CC. D-15: 3.3.5 → 3.4.7, CC. D-15: 3.3.6 → 3.4.7, CC. D-18: 3.4.3 → 3.4.7, CC. Relación POR INTERFAZ resumida con CC para conservar el solapamiento. Construcción después del contrato A02 e integración después de la entrega A12: esas puertas internas se conservan como condición documental y no se descomponen en este CSV de paquetes. D-18: 3.4.6 → 3.4.7, CC. Relación POR INTERFAZ resumida con CC para conservar el solapamiento. Construcción después del contrato A02 e integración después de la entrega A12: esas puertas internas se conservan como condición documental y no se descomponen en este CSV de paquetes. Responsable del paquete: DES. Antecesores con restricción mínima (>) para conservar los huecos del escenario nominal; no se agregaron desfases ni reservas calculadas.",
99,"    3.4.8 Aplicación móvil de reparto con prueba de entrega digital (M6 Reparto)",16/6/27,9/9/27,62,0,0,1,,61-FS>P0D;68-FS>P0D;72-FF>P0D;73-FF>P0D;74-FF>P0D;85-SS>P0D;86-SS>P0D;87-SS>P0D;88-SS>P0D;89-SS>P0D;90-SS>P0D;94-SS>P0D;97-SS>P0D,3.4.8,,,#D17A32,"Escenario nominal histórico anterior a la reestimación. Mes 1: febrero de 2027. Calendario gráfico: lunes a viernes, sin descontar feriados. Duración de la barra: días hábiles de la ventana, no HH de esfuerzo. Fuente de fechas: T-15, tabla Programación de los paquetes con entregable, paquete 3.4.8. Fechas publicadas: 16-06-2027 a 09-09-2027. Predecesoras agregadas publicadas: 2.4, 2.6, 3.1, 3.3, 3.4.3, 3.4.6. D-04: 2.4.1 → 3.4.8, FC. D-05: 2.6.2 → 3.4.8, FC. D-14: 3.1.1 → 3.4.8, FF. La dependencia original condiciona la entrega en QA, no el inicio del desarrollo. Se representa como fin-fin a nivel de paquete. D-14: 3.1.2 → 3.4.8, FF. La dependencia original condiciona la entrega en QA, no el inicio del desarrollo. Se representa como fin-fin a nivel de paquete. D-14: 3.1.3 → 3.4.8, FF. La dependencia original condiciona la entrega en QA, no el inicio del desarrollo. Se representa como fin-fin a nivel de paquete. D-15: 3.3.1 → 3.4.8, CC. D-15: 3.3.2 → 3.4.8, CC. D-15: 3.3.3 → 3.4.8, CC. D-15: 3.3.4 → 3.4.8, CC. D-15: 3.3.5 → 3.4.8, CC. D-15: 3.3.6 → 3.4.8, CC. D-18: 3.4.3 → 3.4.8, CC. Relación POR INTERFAZ resumida con CC para conservar el solapamiento. Construcción después del contrato A02 e integración después de la entrega A12: esas puertas internas se conservan como condición documental y no se descomponen en este CSV de paquetes. D-18: 3.4.6 → 3.4.8, CC. Relación POR INTERFAZ resumida con CC para conservar el solapamiento. Construcción después del contrato A02 e integración después de la entrega A12: esas puertas internas se conservan como condición documental y no se descomponen en este CSV de paquetes. Responsable del paquete: DES. Antecesores con restricción mínima (>) para conservar los huecos del escenario nominal; no se agregaron desfases ni reservas calculadas.",
100,"    3.4.9 Devoluciones en terreno y control de envases (M8 Devoluciones y envases)",18/6/27,30/9/27,75,0,0,1,,61-FS>P0D;68-FS>P0D;72-FF>P0D;73-FF>P0D;74-FF>P0D;85-SS>P0D;86-SS>P0D;87-SS>P0D;88-SS>P0D;89-SS>P0D;90-SS>P0D,3.4.9,,,#D17A32,"Escenario nominal histórico anterior a la reestimación. Mes 1: febrero de 2027. Calendario gráfico: lunes a viernes, sin descontar feriados. Duración de la barra: días hábiles de la ventana, no HH de esfuerzo. Fuente de fechas: T-15, tabla Programación de los paquetes con entregable, paquete 3.4.9. Fechas publicadas: 18-06-2027 a 30-09-2027. Predecesoras agregadas publicadas: 2.4, 2.6, 3.1, 3.3. D-04: 2.4.1 → 3.4.9, FC. D-05: 2.6.2 → 3.4.9, FC. D-14: 3.1.1 → 3.4.9, FF. La dependencia original condiciona la entrega en QA, no el inicio del desarrollo. Se representa como fin-fin a nivel de paquete. D-14: 3.1.2 → 3.4.9, FF. La dependencia original condiciona la entrega en QA, no el inicio del desarrollo. Se representa como fin-fin a nivel de paquete. D-14: 3.1.3 → 3.4.9, FF. La dependencia original condiciona la entrega en QA, no el inicio del desarrollo. Se representa como fin-fin a nivel de paquete. D-15: 3.3.1 → 3.4.9, CC. D-15: 3.3.2 → 3.4.9, CC. D-15: 3.3.3 → 3.4.9, CC. D-15: 3.3.4 → 3.4.9, CC. D-15: 3.3.5 → 3.4.9, CC. D-15: 3.3.6 → 3.4.9, CC. Responsable del paquete: DES. Antecesores con restricción mínima (>) para conservar los huecos del escenario nominal; no se agregaron desfases ni reservas calculadas.",
101,"    3.4.10 Cobro en ruta, rendición y conciliación (M7 Cobranza y rendición)",10/6/27,28/9/27,79,0,0,1,,61-FS>P0D;68-FS>P0D;72-FF>P0D;73-FF>P0D;74-FF>P0D;85-SS>P0D;86-SS>P0D;87-SS>P0D;88-SS>P0D;89-SS>P0D;90-SS>P0D,3.4.10,,,#D17A32,"Escenario nominal histórico anterior a la reestimación. Mes 1: febrero de 2027. Calendario gráfico: lunes a viernes, sin descontar feriados. Duración de la barra: días hábiles de la ventana, no HH de esfuerzo. Fuente de fechas: T-15, tabla Programación de los paquetes con entregable, paquete 3.4.10. Fechas publicadas: 10-06-2027 a 28-09-2027. Predecesoras agregadas publicadas: 2.4, 2.6, 3.1, 3.3, 3.4.8. D-04: 2.4.1 → 3.4.10, FC. D-05: 2.6.2 → 3.4.10, FC. D-14: 3.1.1 → 3.4.10, FF. La dependencia original condiciona la entrega en QA, no el inicio del desarrollo. Se representa como fin-fin a nivel de paquete. D-14: 3.1.2 → 3.4.10, FF. La dependencia original condiciona la entrega en QA, no el inicio del desarrollo. Se representa como fin-fin a nivel de paquete. D-14: 3.1.3 → 3.4.10, FF. La dependencia original condiciona la entrega en QA, no el inicio del desarrollo. Se representa como fin-fin a nivel de paquete. D-15: 3.3.1 → 3.4.10, CC. D-15: 3.3.2 → 3.4.10, CC. D-15: 3.3.3 → 3.4.10, CC. D-15: 3.3.4 → 3.4.10, CC. D-15: 3.3.5 → 3.4.10, CC. D-15: 3.3.6 → 3.4.10, CC. D-19: 3.4.8 → 3.4.10, CC. Relación POR INTERFAZ resumida con CC para conservar el solapamiento. Construcción después del contrato A02 e integración después de la entrega A12: esas puertas internas se conservan como condición documental y no se descomponen en este CSV de paquetes. D-19: vínculo documental NO activado en Antecesores porque la ventana nominal publicada lo contradice. Se conservan las fechas del escenario histórico; no es una red recalculada. Responsable del paquete: DES. Antecesores con restricción mínima (>) para conservar los huecos del escenario nominal; no se agregaron desfases ni reservas calculadas.",
102,"    3.4.11 Indicadores operacionales y OTIF diario (M10 Analítica)",2/9/27,27/9/27,18,0,0,1,,61-FS>P0D;68-FS>P0D;72-FF>P0D;73-FF>P0D;74-FF>P0D;85-SS>P0D;86-SS>P0D;87-SS>P0D;88-SS>P0D;89-SS>P0D;90-SS>P0D,3.4.11,,,#D17A32,"Escenario nominal histórico anterior a la reestimación. Mes 1: febrero de 2027. Calendario gráfico: lunes a viernes, sin descontar feriados. Duración de la barra: días hábiles de la ventana, no HH de esfuerzo. Fuente de fechas: T-15, tabla Programación de los paquetes con entregable, paquete 3.4.11. Fechas publicadas: 02-09-2027 a 27-09-2027. Predecesoras agregadas publicadas: 2.4, 2.6, 3.1, 3.3. D-04: 2.4.1 → 3.4.11, FC. D-05: 2.6.2 → 3.4.11, FC. D-14: 3.1.1 → 3.4.11, FF. La dependencia original condiciona la entrega en QA, no el inicio del desarrollo. Se representa como fin-fin a nivel de paquete. D-14: 3.1.2 → 3.4.11, FF. La dependencia original condiciona la entrega en QA, no el inicio del desarrollo. Se representa como fin-fin a nivel de paquete. D-14: 3.1.3 → 3.4.11, FF. La dependencia original condiciona la entrega en QA, no el inicio del desarrollo. Se representa como fin-fin a nivel de paquete. D-15: 3.3.1 → 3.4.11, CC. D-15: 3.3.2 → 3.4.11, CC. D-15: 3.3.3 → 3.4.11, CC. D-15: 3.3.4 → 3.4.11, CC. D-15: 3.3.5 → 3.4.11, CC. D-15: 3.3.6 → 3.4.11, CC. Responsable del paquete: DAT. Antecesores con restricción mínima (>) para conservar los huecos del escenario nominal; no se agregaron desfases ni reservas calculadas.",
103,"  3.5 Módulos de la Etapa 2",3/4/28,26/4/28,18,0,0,1,,,3.5,,,#D17A32,"Escenario nominal histórico anterior a la reestimación. Mes 1: febrero de 2027. Calendario gráfico: lunes a viernes, sin descontar feriados. Duración de la barra: días hábiles de la ventana, no HH de esfuerzo. Tarea resumen; fechas derivadas del primer y último paquete o hito descendiente.",
104,"    3.5.1 Pedido electrónico y aviso de despacho para las cadenas, y portal de proveedores (M11 Canal moderno)",3/4/28,26/4/28,18,0,0,1,,10-FS>P0D;62-FS>P0D,3.5.1,,,#D17A32,"Escenario nominal histórico anterior a la reestimación. Mes 1: febrero de 2027. Calendario gráfico: lunes a viernes, sin descontar feriados. Duración de la barra: días hábiles de la ventana, no HH de esfuerzo. Fuente de fechas: T-15, tabla Programación de los paquetes con entregable, paquete 3.5.1. Fechas publicadas: 03-04-2028 a 26-04-2028. Predecesoras agregadas publicadas: 1.2, 2.4. D-29: 1.2.5 → 3.5.1, FC. D-29: 2.4.2 → 3.5.1, FC. Responsable del paquete: DES. Antecesores con restricción mínima (>) para conservar los huecos del escenario nominal; no se agregaron desfases ni reservas calculadas.",
105,"    3.5.2 Portal web de clientes: cuenta, saldo, entregas y documentos",3/4/28,26/4/28,18,0,0,1,,10-FS>P0D;62-FS>P0D,3.5.2,,,#D17A32,"Escenario nominal histórico anterior a la reestimación. Mes 1: febrero de 2027. Calendario gráfico: lunes a viernes, sin descontar feriados. Duración de la barra: días hábiles de la ventana, no HH de esfuerzo. Fuente de fechas: T-15, tabla Programación de los paquetes con entregable, paquete 3.5.2. Fechas publicadas: 03-04-2028 a 26-04-2028. Predecesoras agregadas publicadas: 1.2, 2.4. D-29: 1.2.5 → 3.5.2, FC. D-29: 2.4.2 → 3.5.2, FC. Responsable del paquete: DES. Antecesores con restricción mínima (>) para conservar los huecos del escenario nominal; no se agregaron desfases ni reservas calculadas.",
106,"    3.5.3 Portal web de transportistas: rutas asignadas del día siguiente",3/4/28,26/4/28,18,0,0,1,,10-FS>P0D;62-FS>P0D,3.5.3,,,#D17A32,"Escenario nominal histórico anterior a la reestimación. Mes 1: febrero de 2027. Calendario gráfico: lunes a viernes, sin descontar feriados. Duración de la barra: días hábiles de la ventana, no HH de esfuerzo. Fuente de fechas: T-15, tabla Programación de los paquetes con entregable, paquete 3.5.3. Fechas publicadas: 03-04-2028 a 26-04-2028. Predecesoras agregadas publicadas: 1.2, 2.4. D-29: 1.2.5 → 3.5.3, FC. D-29: 2.4.2 → 3.5.3, FC. Responsable del paquete: DES. Antecesores con restricción mínima (>) para conservar los huecos del escenario nominal; no se agregaron desfases ni reservas calculadas.",
107,"    3.5.4 Costo de servir por cliente y por entrega (M10 Analítica)",3/4/28,26/4/28,18,0,0,1,,10-FS>P0D;62-FS>P0D,3.5.4,,,#D17A32,"Escenario nominal histórico anterior a la reestimación. Mes 1: febrero de 2027. Calendario gráfico: lunes a viernes, sin descontar feriados. Duración de la barra: días hábiles de la ventana, no HH de esfuerzo. Fuente de fechas: T-15, tabla Programación de los paquetes con entregable, paquete 3.5.4. Fechas publicadas: 03-04-2028 a 26-04-2028. Predecesoras agregadas publicadas: 1.2, 2.4. D-29: 1.2.5 → 3.5.4, FC. D-29: 2.4.2 → 3.5.4, FC. Responsable del paquete: DAT. Antecesores con restricción mínima (>) para conservar los huecos del escenario nominal; no se agregaron desfases ni reservas calculadas.",
108,"  3.6 Integraciones externas",1/7/27,23/8/28,300,0,0,1,,,3.6,,,#D17A32,"Escenario nominal histórico anterior a la reestimación. Mes 1: febrero de 2027. Calendario gráfico: lunes a viernes, sin descontar feriados. Duración de la barra: días hábiles de la ventana, no HH de esfuerzo. Tarea resumen; fechas derivadas del primer y último paquete o hito descendiente.",
109,"    3.6.1 Intercambio de lote y trazabilidad con los proveedores",2/8/27,1/9/27,23,0,0,1,,,3.6.1,,,#D17A32,"Escenario nominal histórico anterior a la reestimación. Mes 1: febrero de 2027. Calendario gráfico: lunes a viernes, sin descontar feriados. Duración de la barra: días hábiles de la ventana, no HH de esfuerzo. Fuente de fechas: T-15, tabla Programación de los paquetes con entregable, paquete 3.6.1. Fechas publicadas: 02-08-2027 a 01-09-2027. Predecesoras agregadas publicadas: —. Responsable del paquete: DAT.",
110,"    3.6.2 Integración con la pasarela de pago para el cobro con tarjeta (INT-09)",1/7/27,2/8/27,23,0,0,1,,,3.6.2,,,#D17A32,"Escenario nominal histórico anterior a la reestimación. Mes 1: febrero de 2027. Calendario gráfico: lunes a viernes, sin descontar feriados. Duración de la barra: días hábiles de la ventana, no HH de esfuerzo. Fuente de fechas: T-15, tabla Programación de los paquetes con entregable, paquete 3.6.2. Fechas publicadas: 01-07-2027 a 02-08-2027. Predecesoras agregadas publicadas: —. Responsable del paquete: DES.",
111,"    3.6.3 Integración con el servicio de mapas y geocodificación (INT-10)",1/7/27,2/8/27,23,0,0,1,,,3.6.3,,,#D17A32,"Escenario nominal histórico anterior a la reestimación. Mes 1: febrero de 2027. Calendario gráfico: lunes a viernes, sin descontar feriados. Duración de la barra: días hábiles de la ventana, no HH de esfuerzo. Fuente de fechas: T-15, tabla Programación de los paquetes con entregable, paquete 3.6.3. Fechas publicadas: 01-07-2027 a 02-08-2027. Predecesoras agregadas publicadas: —. Responsable del paquete: DES.",
112,"    3.6.4 Integración con el servicio de avisos al cliente (INT-11)",1/7/27,2/8/27,23,0,0,1,,,3.6.4,,,#D17A32,"Escenario nominal histórico anterior a la reestimación. Mes 1: febrero de 2027. Calendario gráfico: lunes a viernes, sin descontar feriados. Duración de la barra: días hábiles de la ventana, no HH de esfuerzo. Fuente de fechas: T-15, tabla Programación de los paquetes con entregable, paquete 3.6.4. Fechas publicadas: 01-07-2027 a 02-08-2027. Predecesoras agregadas publicadas: —. Responsable del paquete: DES.",
113,"    3.6.5 Intercambio electrónico con la principal cadena, con sus pruebas aprobadas (INT-08)",1/2/28,4/7/28,111,0,0,1,,,3.6.5,,,#D17A32,"Escenario nominal histórico anterior a la reestimación. Mes 1: febrero de 2027. Calendario gráfico: lunes a viernes, sin descontar feriados. Duración de la barra: días hábiles de la ventana, no HH de esfuerzo. Fuente de fechas: T-15, tabla Programación de los paquetes con entregable, paquete 3.6.5. Fechas publicadas: 01-02-2028 a 04-07-2028. Predecesoras agregadas publicadas: —. Responsable del paquete: DES.",
114,"    3.6.6 Incorporación de las demás cadenas al intercambio electrónico (INT-08)",1/6/28,23/8/28,60,0,0,1,,,3.6.6,,,#D17A32,"Escenario nominal histórico anterior a la reestimación. Mes 1: febrero de 2027. Calendario gráfico: lunes a viernes, sin descontar feriados. Duración de la barra: días hábiles de la ventana, no HH de esfuerzo. Fuente de fechas: T-15, tabla Programación de los paquetes con entregable, paquete 3.6.6. Fechas publicadas: 01-06-2028 a 23-08-2028. Predecesoras agregadas publicadas: —. Responsable del paquete: DES.",
115,"  3.7 Migración de datos",4/8/27,27/1/28,127,0,0,1,,,3.7,,,#D17A32,"Escenario nominal histórico anterior a la reestimación. Mes 1: febrero de 2027. Calendario gráfico: lunes a viernes, sin descontar feriados. Duración de la barra: días hábiles de la ventana, no HH de esfuerzo. Tarea resumen; fechas derivadas del primer y último paquete o hito descendiente.",
116,"    3.7.1 Informe de perfilamiento y datos saneados",4/8/27,1/10/27,43,0,0,1,,,3.7.1,,,#D17A32,"Escenario nominal histórico anterior a la reestimación. Mes 1: febrero de 2027. Calendario gráfico: lunes a viernes, sin descontar feriados. Duración de la barra: días hábiles de la ventana, no HH de esfuerzo. Fuente de fechas: T-15, tabla Programación de los paquetes con entregable, paquete 3.7.1. Fechas publicadas: 04-08-2027 a 01-10-2027. Predecesoras agregadas publicadas: —. Responsable del paquete: DAT.",
117,"    3.7.2 Datos maestros cargados: 8.400 SKU, clientes e instalaciones",4/10/27,3/11/27,23,0,0,1,,,3.7.2,,,#D17A32,"Escenario nominal histórico anterior a la reestimación. Mes 1: febrero de 2027. Calendario gráfico: lunes a viernes, sin descontar feriados. Duración de la barra: días hábiles de la ventana, no HH de esfuerzo. Fuente de fechas: T-15, tabla Programación de los paquetes con entregable, paquete 3.7.2. Fechas publicadas: 04-10-2027 a 03-11-2027. Predecesoras agregadas publicadas: —. Responsable del paquete: DAT.",
118,"    3.7.3 Saldos migrados desde el WMS de Talca",1/12/27,31/12/27,23,0,0,1,,,3.7.3,,,#D17A32,"Escenario nominal histórico anterior a la reestimación. Mes 1: febrero de 2027. Calendario gráfico: lunes a viernes, sin descontar feriados. Duración de la barra: días hábiles de la ventana, no HH de esfuerzo. Fuente de fechas: T-15, tabla Programación de los paquetes con entregable, paquete 3.7.3. Fechas publicadas: 01-12-2027 a 31-12-2027. Predecesoras agregadas publicadas: —. Responsable del paquete: DAT.",
119,"    3.7.4 Saldos cargados en Concepción desde el conteo físico",1/12/27,31/12/27,23,0,0,1,,,3.7.4,,,#D17A32,"Escenario nominal histórico anterior a la reestimación. Mes 1: febrero de 2027. Calendario gráfico: lunes a viernes, sin descontar feriados. Duración de la barra: días hábiles de la ventana, no HH de esfuerzo. Fuente de fechas: T-15, tabla Programación de los paquetes con entregable, paquete 3.7.4. Fechas publicadas: 01-12-2027 a 31-12-2027. Predecesoras agregadas publicadas: —. Responsable del paquete: DAT.",
120,"    3.7.5 Acta de conciliación y corte fuera de las ventanas de congelamiento",3/1/28,27/1/28,19,0,0,1,,116-FS>P0D;117-FS>P0D;118-FS>P0D;119-FS>P0D,3.7.5,,,#D17A32,"Escenario nominal histórico anterior a la reestimación. Mes 1: febrero de 2027. Calendario gráfico: lunes a viernes, sin descontar feriados. Duración de la barra: días hábiles de la ventana, no HH de esfuerzo. Fuente de fechas: T-15, tabla Programación de los paquetes con entregable, paquete 3.7.5. Fechas publicadas: 03-01-2028 a 27-01-2028. Predecesoras agregadas publicadas: 3.7.1, 3.7.2, 3.7.3, 3.7.4. D-24: 3.7.1 → 3.7.5, FC. La puerta del corte A06 depende de los ensayos; el detalle interno no se descompone. D-24: 3.7.2 → 3.7.5, FC. La puerta del corte A06 depende de los ensayos; el detalle interno no se descompone. D-24: 3.7.3 → 3.7.5, FC. La puerta del corte A06 depende de los ensayos; el detalle interno no se descompone. D-24: 3.7.4 → 3.7.5, FC. La puerta del corte A06 depende de los ensayos; el detalle interno no se descompone. Responsable del paquete: DAT. Antecesores con restricción mínima (>) para conservar los huecos del escenario nominal; no se agregaron desfases ni reservas calculadas.",
121,"  3.8 Pruebas de la Etapa 1",1/10/27,29/11/27,42,0,0,1,,,3.8,,,#D17A32,"Escenario nominal histórico anterior a la reestimación. Mes 1: febrero de 2027. Calendario gráfico: lunes a viernes, sin descontar feriados. Duración de la barra: días hábiles de la ventana, no HH de esfuerzo. Tarea resumen; fechas derivadas del primer y último paquete o hito descendiente.",
122,"    3.8.1 Pruebas de integración, regresión e idempotencia en QA (H4)",1/10/27,20/10/27,14,0,0,1,,92-FS>P0D;93-FS>P0D;94-FS>P0D;95-FS>P0D;96-FS>P0D;97-FS>P0D;98-FS>P0D;99-FS>P0D;100-FS>P0D;101-FS>P0D;102-FS>P0D;109-FS>P0D;110-FS>P0D;111-FS>P0D;112-FS>P0D,3.8.1,,,#D17A32,"Escenario nominal histórico anterior a la reestimación. Mes 1: febrero de 2027. Calendario gráfico: lunes a viernes, sin descontar feriados. Duración de la barra: días hábiles de la ventana, no HH de esfuerzo. Fuente de fechas: T-15, tabla Programación de los paquetes con entregable, paquete 3.8.1. Fechas publicadas: 01-10-2027 a 20-10-2027. Predecesoras agregadas publicadas: 3.4, 3.6. D-20: 3.4.1 → 3.8.1, FC. D-20: 3.4.2 → 3.8.1, FC. D-20: 3.4.3 → 3.8.1, FC. D-20: 3.4.4 → 3.8.1, FC. D-20: 3.4.5 → 3.8.1, FC. D-20: 3.4.6 → 3.8.1, FC. D-20: 3.4.7 → 3.8.1, FC. D-20: 3.4.8 → 3.8.1, FC. D-20: 3.4.9 → 3.8.1, FC. D-20: 3.4.10 → 3.8.1, FC. D-20: 3.4.11 → 3.8.1, FC. D-20: 3.6.1 → 3.8.1, FC. D-20: 3.6.2 → 3.8.1, FC. D-20: 3.6.3 → 3.8.1, FC. D-20: 3.6.4 → 3.8.1, FC. Responsable del paquete: CAL. Antecesores con restricción mínima (>) para conservar los huecos del escenario nominal; no se agregaron desfases ni reservas calculadas.",
123,"    3.8.2 Pruebas de aceptación y de accesibilidad con preventistas, conductores y bodega",21/10/27,17/11/27,20,0,0,1,,122-FS>P0D,3.8.2,,,#D17A32,"Escenario nominal histórico anterior a la reestimación. Mes 1: febrero de 2027. Calendario gráfico: lunes a viernes, sin descontar feriados. Duración de la barra: días hábiles de la ventana, no HH de esfuerzo. Fuente de fechas: T-15, tabla Programación de los paquetes con entregable, paquete 3.8.2. Fechas publicadas: 21-10-2027 a 17-11-2027. Predecesoras agregadas publicadas: 3.8.1. D-21: 3.8.1 → 3.8.2, FC. Responsable del paquete: CAL. Antecesores con restricción mínima (>) para conservar los huecos del escenario nominal; no se agregaron desfases ni reservas calculadas.",
124,"    3.8.3 Pruebas del perfil operacional: cinco condiciones físicas y desconexión de 14 horas",21/10/27,17/11/27,20,0,0,1,,122-FS>P0D,3.8.3,,,#D17A32,"Escenario nominal histórico anterior a la reestimación. Mes 1: febrero de 2027. Calendario gráfico: lunes a viernes, sin descontar feriados. Duración de la barra: días hábiles de la ventana, no HH de esfuerzo. Fuente de fechas: T-15, tabla Programación de los paquetes con entregable, paquete 3.8.3. Fechas publicadas: 21-10-2027 a 17-11-2027. Predecesoras agregadas publicadas: 3.8.1. D-21: 3.8.1 → 3.8.3, FC. Responsable del paquete: CAL. Antecesores con restricción mínima (>) para conservar los huecos del escenario nominal; no se agregaron desfases ni reservas calculadas.",
125,"    3.8.4 Pruebas de carga con el peak de septiembre y de resiliencia",21/10/27,9/11/27,14,0,0,1,,122-FS>P0D,3.8.4,,,#D17A32,"Escenario nominal histórico anterior a la reestimación. Mes 1: febrero de 2027. Calendario gráfico: lunes a viernes, sin descontar feriados. Duración de la barra: días hábiles de la ventana, no HH de esfuerzo. Fuente de fechas: T-15, tabla Programación de los paquetes con entregable, paquete 3.8.4. Fechas publicadas: 21-10-2027 a 09-11-2027. Predecesoras agregadas publicadas: 3.8.1. D-21b: 3.8.1 → 3.8.4, FC. Responsable del paquete: CAL. Antecesores con restricción mínima (>) para conservar los huecos del escenario nominal; no se agregaron desfases ni reservas calculadas.",
126,"    3.8.5 Prueba de recuperación ante desastres con conmutación real",21/10/27,9/11/27,14,0,0,1,,122-FS>P0D;74-FS>P0D,3.8.5,,,#D17A32,"Escenario nominal histórico anterior a la reestimación. Mes 1: febrero de 2027. Calendario gráfico: lunes a viernes, sin descontar feriados. Duración de la barra: días hábiles de la ventana, no HH de esfuerzo. Fuente de fechas: T-15, tabla Programación de los paquetes con entregable, paquete 3.8.5. Fechas publicadas: 21-10-2027 a 09-11-2027. Predecesoras agregadas publicadas: 3.8.1. D-21b: 3.8.1 → 3.8.5, FC. D-22: 3.1.3 → 3.8.5, FC. Responsable del paquete: CAL. Antecesores con restricción mínima (>) para conservar los huecos del escenario nominal; no se agregaron desfases ni reservas calculadas.",
127,"    3.8.6 Prueba de seguridad ofensiva de la Etapa 1, por un tercero independiente",21/10/27,9/11/27,14,0,0,1,,122-FS>P0D,3.8.6,,,#D17A32,"Escenario nominal histórico anterior a la reestimación. Mes 1: febrero de 2027. Calendario gráfico: lunes a viernes, sin descontar feriados. Duración de la barra: días hábiles de la ventana, no HH de esfuerzo. Fuente de fechas: T-15, tabla Programación de los paquetes con entregable, paquete 3.8.6. Fechas publicadas: 21-10-2027 a 09-11-2027. Predecesoras agregadas publicadas: 3.8.1. D-21b: 3.8.1 → 3.8.6, FC. Responsable del paquete: SEG/CAL. Antecesores con restricción mínima (>) para conservar los huecos del escenario nominal; no se agregaron desfases ni reservas calculadas.",
128,"    3.8.7 Acta de certificación de la Etapa 1 (H5)",18/11/27,29/11/27,8,0,0,1,,123-FS>P0D;124-FS>P0D;125-FS>P0D;126-FS>P0D;127-FS>P0D;129-FS>P0D,3.8.7,,,#D17A32,"Escenario nominal histórico anterior a la reestimación. Mes 1: febrero de 2027. Calendario gráfico: lunes a viernes, sin descontar feriados. Duración de la barra: días hábiles de la ventana, no HH de esfuerzo. Fuente de fechas: T-15, tabla Programación de los paquetes con entregable, paquete 3.8.7. Fechas publicadas: 18-11-2027 a 29-11-2027. Predecesoras agregadas publicadas: 3.8.2, 3.8.3, 3.8.4, 3.8.5, 3.8.6, 3.8.8. D-23: 3.8.2 → 3.8.7, FC. D-23: 3.8.3 → 3.8.7, FC. D-23: 3.8.4 → 3.8.7, FC. D-23: 3.8.5 → 3.8.7, FC. D-23: 3.8.6 → 3.8.7, FC. D-23: 3.8.8 → 3.8.7, FC. Responsable del paquete: CAL. Antecesores con restricción mínima (>) para conservar los huecos del escenario nominal; no se agregaron desfases ni reservas calculadas.",
129,"    3.8.8 Demostración en Preproducción del despliegue sin interrupción de la Etapa 1",21/10/27,9/11/27,14,0,0,1,,122-FS>P0D,3.8.8,,,#D17A32,"Escenario nominal histórico anterior a la reestimación. Mes 1: febrero de 2027. Calendario gráfico: lunes a viernes, sin descontar feriados. Duración de la barra: días hábiles de la ventana, no HH de esfuerzo. Fuente de fechas: T-15, tabla Programación de los paquetes con entregable, paquete 3.8.8. Fechas publicadas: 21-10-2027 a 09-11-2027. Predecesoras agregadas publicadas: 3.8.1. D-21b: 3.8.1 → 3.8.8, FC. Responsable del paquete: SRE. Antecesores con restricción mínima (>) para conservar los huecos del escenario nominal; no se agregaron desfases ni reservas calculadas.",
130,"  3.9 Pruebas de la Etapa 2",1/5/28,12/6/28,31,0,0,1,,,3.9,,,#D17A32,"Escenario nominal histórico anterior a la reestimación. Mes 1: febrero de 2027. Calendario gráfico: lunes a viernes, sin descontar feriados. Duración de la barra: días hábiles de la ventana, no HH de esfuerzo. Tarea resumen; fechas derivadas del primer y último paquete o hito descendiente.",
131,"    3.9.1 Pruebas de integración y regresión sin afectar la Etapa 1 en producción (H9)",1/5/28,18/5/28,14,0,0,1,,104-FS>P0D;105-FS>P0D;106-FS>P0D;107-FS>P0D,3.9.1,,,#D17A32,"Escenario nominal histórico anterior a la reestimación. Mes 1: febrero de 2027. Calendario gráfico: lunes a viernes, sin descontar feriados. Duración de la barra: días hábiles de la ventana, no HH de esfuerzo. Fuente de fechas: T-15, tabla Programación de los paquetes con entregable, paquete 3.9.1. Fechas publicadas: 01-05-2028 a 18-05-2028. Predecesoras agregadas publicadas: 3.5. D-30: 3.5.1 → 3.9.1, FC. D-30: 3.5.2 → 3.9.1, FC. D-30: 3.5.3 → 3.9.1, FC. D-30: 3.5.4 → 3.9.1, FC. Responsable del paquete: CAL. Antecesores con restricción mínima (>) para conservar los huecos del escenario nominal; no se agregaron desfases ni reservas calculadas.",
132,"    3.9.2 Pruebas de aceptación y de accesibilidad con cadenas, transportistas, Comercial y Finanzas",29/5/28,31/5/28,3,0,0,1,,131-FS>P0D,3.9.2,,,#D17A32,"Escenario nominal histórico anterior a la reestimación. Mes 1: febrero de 2027. Calendario gráfico: lunes a viernes, sin descontar feriados. Duración de la barra: días hábiles de la ventana, no HH de esfuerzo. Fuente de fechas: T-15, tabla Programación de los paquetes con entregable, paquete 3.9.2. Fechas publicadas: 27-05-2028 a 31-05-2028. Predecesoras agregadas publicadas: 3.9.1. El límite publicado cae en fin de semana; la barra utiliza el día hábil interior de la misma ventana. No se alteró el mes contractual. D-31: 3.9.1 → 3.9.2, FC. Responsable del paquete: CAL. Antecesores con restricción mínima (>) para conservar los huecos del escenario nominal; no se agregaron desfases ni reservas calculadas.",
133,"    3.9.3 Pruebas de carga con ambas etapas activas y de resiliencia",19/5/28,26/5/28,6,0,0,1,,131-FS>P0D,3.9.3,,,#D17A32,"Escenario nominal histórico anterior a la reestimación. Mes 1: febrero de 2027. Calendario gráfico: lunes a viernes, sin descontar feriados. Duración de la barra: días hábiles de la ventana, no HH de esfuerzo. Fuente de fechas: T-15, tabla Programación de los paquetes con entregable, paquete 3.9.3. Fechas publicadas: 19-05-2028 a 26-05-2028. Predecesoras agregadas publicadas: 3.9.1. D-31b: 3.9.1 → 3.9.3, FC. Responsable del paquete: CAL. Antecesores con restricción mínima (>) para conservar los huecos del escenario nominal; no se agregaron desfases ni reservas calculadas.",
134,"    3.9.4 Prueba de recuperación ante desastres con ambas etapas",19/5/28,26/5/28,6,0,0,1,,131-FS>P0D,3.9.4,,,#D17A32,"Escenario nominal histórico anterior a la reestimación. Mes 1: febrero de 2027. Calendario gráfico: lunes a viernes, sin descontar feriados. Duración de la barra: días hábiles de la ventana, no HH de esfuerzo. Fuente de fechas: T-15, tabla Programación de los paquetes con entregable, paquete 3.9.4. Fechas publicadas: 19-05-2028 a 26-05-2028. Predecesoras agregadas publicadas: 3.9.1. D-31b: 3.9.1 → 3.9.4, FC. Responsable del paquete: CAL. Antecesores con restricción mínima (>) para conservar los huecos del escenario nominal; no se agregaron desfases ni reservas calculadas.",
135,"    3.9.5 Prueba de seguridad ofensiva de la Etapa 2, por un tercero independiente",19/5/28,26/5/28,6,0,0,1,,131-FS>P0D,3.9.5,,,#D17A32,"Escenario nominal histórico anterior a la reestimación. Mes 1: febrero de 2027. Calendario gráfico: lunes a viernes, sin descontar feriados. Duración de la barra: días hábiles de la ventana, no HH de esfuerzo. Fuente de fechas: T-15, tabla Programación de los paquetes con entregable, paquete 3.9.5. Fechas publicadas: 19-05-2028 a 26-05-2028. Predecesoras agregadas publicadas: 3.9.1. D-31b: 3.9.1 → 3.9.5, FC. Responsable del paquete: SEG/CAL. Antecesores con restricción mínima (>) para conservar los huecos del escenario nominal; no se agregaron desfases ni reservas calculadas.",
136,"    3.9.6 Acta de certificación de la Etapa 2 y cierre del desarrollo (H10)",1/6/28,12/6/28,8,0,0,1,,132-FS>P0D;133-FS>P0D;134-FS>P0D;135-FS>P0D;137-FS>P0D,3.9.6,,,#D17A32,"Escenario nominal histórico anterior a la reestimación. Mes 1: febrero de 2027. Calendario gráfico: lunes a viernes, sin descontar feriados. Duración de la barra: días hábiles de la ventana, no HH de esfuerzo. Fuente de fechas: T-15, tabla Programación de los paquetes con entregable, paquete 3.9.6. Fechas publicadas: 01-06-2028 a 12-06-2028. Predecesoras agregadas publicadas: 3.9.1, 3.9.2, 3.9.3, 3.9.4, 3.9.5, 3.9.7. D-31c: 3.9.2 → 3.9.6, FC. D-31c: 3.9.3 → 3.9.6, FC. D-31c: 3.9.4 → 3.9.6, FC. D-31c: 3.9.5 → 3.9.6, FC. D-31c: 3.9.7 → 3.9.6, FC. Responsable del paquete: CAL. Antecesores con restricción mínima (>) para conservar los huecos del escenario nominal; no se agregaron desfases ni reservas calculadas.",
137,"    3.9.7 Demostración en Preproducción del despliegue sin interrupción de la Etapa 2",19/5/28,26/5/28,6,0,0,1,,131-FS>P0D,3.9.7,,,#D17A32,"Escenario nominal histórico anterior a la reestimación. Mes 1: febrero de 2027. Calendario gráfico: lunes a viernes, sin descontar feriados. Duración de la barra: días hábiles de la ventana, no HH de esfuerzo. Fuente de fechas: T-15, tabla Programación de los paquetes con entregable, paquete 3.9.7. Fechas publicadas: 19-05-2028 a 26-05-2028. Predecesoras agregadas publicadas: 3.9.1. D-31b: 3.9.1 → 3.9.7, FC. Responsable del paquete: SRE. Antecesores con restricción mínima (>) para conservar los huecos del escenario nominal; no se agregaron desfases ni reservas calculadas.",
138,"  3.10 Innovaciones",1/3/27,29/9/28,415,0,0,1,,,3.10,,,#D17A32,"Escenario nominal histórico anterior a la reestimación. Mes 1: febrero de 2027. Calendario gráfico: lunes a viernes, sin descontar feriados. Duración de la barra: días hábiles de la ventana, no HH de esfuerzo. Tarea resumen; fechas derivadas del primer y último paquete o hito descendiente.",
139,"    3.10.1 Innovación 1: seguimiento de vencimiento posentrega en el local",2/8/27,20/3/28,166,0,0,1,,,3.10.1,,,#D17A32,"Escenario nominal histórico anterior a la reestimación. Mes 1: febrero de 2027. Calendario gráfico: lunes a viernes, sin descontar feriados. Duración de la barra: días hábiles de la ventana, no HH de esfuerzo. Tarea resumen; fechas derivadas del primer y último paquete o hito descendiente.",
140,"      3.10.1.1 Documento de catálogo de acciones y protocolo del piloto (INN-01.P1)",2/8/27,8/10/27,50,0,0,1,,,3.10.1.1,,,#D17A32,"Escenario nominal histórico anterior a la reestimación. Mes 1: febrero de 2027. Calendario gráfico: lunes a viernes, sin descontar feriados. Duración de la barra: días hábiles de la ventana, no HH de esfuerzo. Fuente de fechas: T-15, tabla Programación de los paquetes con entregable, paquete 3.10.1.1. Fechas publicadas: 02-08-2027 a 08-10-2027. Predecesoras agregadas publicadas: —. Responsable del paquete: DAT.",
141,"      3.10.1.2 Estimador de saldo y ritmo de reposición (INN-01.P2)",1/10/27,19/11/27,36,0,0,1,,,3.10.1.2,,,#D17A32,"Escenario nominal histórico anterior a la reestimación. Mes 1: febrero de 2027. Calendario gráfico: lunes a viernes, sin descontar feriados. Duración de la barra: días hábiles de la ventana, no HH de esfuerzo. Fuente de fechas: T-15, tabla Programación de los paquetes con entregable, paquete 3.10.1.2. Fechas publicadas: 01-10-2027 a 19-11-2027. Predecesoras agregadas publicadas: —. Responsable del paquete: DAT.",
142,"      3.10.1.3 Función de lista sin conexión en la aplicación de preventa (INN-01.P3)",1/10/27,19/11/27,36,0,0,1,,,3.10.1.3,,,#D17A32,"Escenario nominal histórico anterior a la reestimación. Mes 1: febrero de 2027. Calendario gráfico: lunes a viernes, sin descontar feriados. Duración de la barra: días hábiles de la ventana, no HH de esfuerzo. Fuente de fechas: T-15, tabla Programación de los paquetes con entregable, paquete 3.10.1.3. Fechas publicadas: 01-10-2027 a 19-11-2027. Predecesoras agregadas publicadas: —. Responsable del paquete: DAT.",
143,"      3.10.1.4 Informe del piloto en marcha blanca y habilitación (INN-01.P4)",1/12/27,20/3/28,79,0,0,1,,,3.10.1.4,,,#D17A32,"Escenario nominal histórico anterior a la reestimación. Mes 1: febrero de 2027. Calendario gráfico: lunes a viernes, sin descontar feriados. Duración de la barra: días hábiles de la ventana, no HH de esfuerzo. Fuente de fechas: T-15, tabla Programación de los paquetes con entregable, paquete 3.10.1.4. Fechas publicadas: 01-12-2027 a 20-03-2028. Predecesoras agregadas publicadas: —. Responsable del paquete: DAT.",
144,"    3.10.2 Innovación 2: reproducción de incidentes de terreno",1/3/27,20/3/28,276,0,0,1,,,3.10.2,,,#D17A32,"Escenario nominal histórico anterior a la reestimación. Mes 1: febrero de 2027. Calendario gráfico: lunes a viernes, sin descontar feriados. Duración de la barra: días hábiles de la ventana, no HH de esfuerzo. Tarea resumen; fechas derivadas del primer y último paquete o hito descendiente.",
145,"      3.10.2.1 Informe de medición inicial y contrato de evidencia (INN-02.P1)",1/3/27,20/4/27,37,0,0,1,,,3.10.2.1,,,#D17A32,"Escenario nominal histórico anterior a la reestimación. Mes 1: febrero de 2027. Calendario gráfico: lunes a viernes, sin descontar feriados. Duración de la barra: días hábiles de la ventana, no HH de esfuerzo. Fuente de fechas: T-15, tabla Programación de los paquetes con entregable, paquete 3.10.2.1. Fechas publicadas: 01-03-2027 a 20-04-2027. Predecesoras agregadas publicadas: —. Responsable del paquete: CAL.",
146,"      3.10.2.2 Circuito mínimo de reproducción en la preventa (INN-02.P2)",1/4/27,9/6/27,50,0,0,1,,,3.10.2.2,,,#D17A32,"Escenario nominal histórico anterior a la reestimación. Mes 1: febrero de 2027. Calendario gráfico: lunes a viernes, sin descontar feriados. Duración de la barra: días hábiles de la ventana, no HH de esfuerzo. Fuente de fechas: T-15, tabla Programación de los paquetes con entregable, paquete 3.10.2.2. Fechas publicadas: 01-04-2027 a 09-06-2027. Predecesoras agregadas publicadas: —. Responsable del paquete: CAL.",
147,"      3.10.2.3 Captura de evidencia en las aplicaciones de preventa, preparación y reparto (INN-02.P3)",1/6/27,8/10/27,94,0,0,1,,,3.10.2.3,,,#D17A32,"Escenario nominal histórico anterior a la reestimación. Mes 1: febrero de 2027. Calendario gráfico: lunes a viernes, sin descontar feriados. Duración de la barra: días hábiles de la ventana, no HH de esfuerzo. Fuente de fechas: T-15, tabla Programación de los paquetes con entregable, paquete 3.10.2.3. Fechas publicadas: 01-06-2027 a 08-10-2027. Predecesoras agregadas publicadas: —. Responsable del paquete: CAL.",
148,"      3.10.2.4 Informe de validación comparada durante la implementación (INN-02.P4, primera parte)",1/12/27,20/3/28,79,0,0,1,,,3.10.2.4,,,#D17A32,"Escenario nominal histórico anterior a la reestimación. Mes 1: febrero de 2027. Calendario gráfico: lunes a viernes, sin descontar feriados. Duración de la barra: días hábiles de la ventana, no HH de esfuerzo. Fuente de fechas: T-15, tabla Programación de los paquetes con entregable, paquete 3.10.2.4. Fechas publicadas: 01-12-2027 a 20-03-2028. Predecesoras agregadas publicadas: —. Responsable del paquete: CAL.",
149,"    3.10.3 Innovación 3: vida útil remanente por historia térmica del lote",1/4/27,20/3/28,253,0,0,1,,,3.10.3,,,#D17A32,"Escenario nominal histórico anterior a la reestimación. Mes 1: febrero de 2027. Calendario gráfico: lunes a viernes, sin descontar feriados. Duración de la barra: días hábiles de la ventana, no HH de esfuerzo. Tarea resumen; fechas derivadas del primer y último paquete o hito descendiente.",
150,"      3.10.3.1 Documento de familias priorizadas y parámetros aprobados (INN-03.P1)",1/4/27,9/6/27,50,0,0,1,,,3.10.3.1,,,#D17A32,"Escenario nominal histórico anterior a la reestimación. Mes 1: febrero de 2027. Calendario gráfico: lunes a viernes, sin descontar feriados. Duración de la barra: días hábiles de la ventana, no HH de esfuerzo. Fuente de fechas: T-15, tabla Programación de los paquetes con entregable, paquete 3.10.3.1. Fechas publicadas: 01-04-2027 a 09-06-2027. Predecesoras agregadas publicadas: —. Responsable del paquete: DAT.",
151,"      3.10.3.2 Asociación lote–sensor en el borde y en el camión (INN-03.P2)",7/6/27,20/9/27,76,0,0,1,,,3.10.3.2,,,#D17A32,"Escenario nominal histórico anterior a la reestimación. Mes 1: febrero de 2027. Calendario gráfico: lunes a viernes, sin descontar feriados. Duración de la barra: días hábiles de la ventana, no HH de esfuerzo. Fuente de fechas: T-15, tabla Programación de los paquetes con entregable, paquete 3.10.3.2. Fechas publicadas: 07-06-2027 a 20-09-2027. Predecesoras agregadas publicadas: —. Responsable del paquete: DAT.",
152,"      3.10.3.3 Vista en M9 y orden de salida sugerido (INN-03.P3)",1/10/27,19/11/27,36,0,0,1,,,3.10.3.3,,,#D17A32,"Escenario nominal histórico anterior a la reestimación. Mes 1: febrero de 2027. Calendario gráfico: lunes a viernes, sin descontar feriados. Duración de la barra: días hábiles de la ventana, no HH de esfuerzo. Fuente de fechas: T-15, tabla Programación de los paquetes con entregable, paquete 3.10.3.3. Fechas publicadas: 01-10-2027 a 19-11-2027. Predecesoras agregadas publicadas: —. Responsable del paquete: DAT.",
153,"      3.10.3.4 Informe de validación en marcha blanca con Calidad (INN-03.P4)",1/12/27,20/3/28,79,0,0,1,,,3.10.3.4,,,#D17A32,"Escenario nominal histórico anterior a la reestimación. Mes 1: febrero de 2027. Calendario gráfico: lunes a viernes, sin descontar feriados. Duración de la barra: días hábiles de la ventana, no HH de esfuerzo. Fuente de fechas: T-15, tabla Programación de los paquetes con entregable, paquete 3.10.3.4. Fechas publicadas: 01-12-2027 a 20-03-2028. Predecesoras agregadas publicadas: —. Responsable del paquete: DAT.",
154,"    3.10.4 Innovación 5: hoja de negocio del almacenero",1/2/28,29/9/28,174,0,0,1,,,3.10.4,,,#D17A32,"Escenario nominal histórico anterior a la reestimación. Mes 1: febrero de 2027. Calendario gráfico: lunes a viernes, sin descontar feriados. Duración de la barra: días hábiles de la ventana, no HH de esfuerzo. Tarea resumen; fechas derivadas del primer y último paquete o hito descendiente.",
155,"      3.10.4.1 Prototipo e informe de la prueba de comprensión (INN-05.P1)",1/2/28,21/3/28,36,0,0,1,,,3.10.4.1,,,#D17A32,"Escenario nominal histórico anterior a la reestimación. Mes 1: febrero de 2027. Calendario gráfico: lunes a viernes, sin descontar feriados. Duración de la barra: días hábiles de la ventana, no HH de esfuerzo. Fuente de fechas: T-15, tabla Programación de los paquetes con entregable, paquete 3.10.4.1. Fechas publicadas: 01-02-2028 a 21-03-2028. Predecesoras agregadas publicadas: —. Responsable del paquete: IMP.",
156,"      3.10.4.2 Evaluación de privacidad y diseño de la impresión en cabina (INN-05.P2)",1/3/28,19/4/28,36,0,0,1,,,3.10.4.2,,,#D17A32,"Escenario nominal histórico anterior a la reestimación. Mes 1: febrero de 2027. Calendario gráfico: lunes a viernes, sin descontar feriados. Duración de la barra: días hábiles de la ventana, no HH de esfuerzo. Fuente de fechas: T-15, tabla Programación de los paquetes con entregable, paquete 3.10.4.2. Fechas publicadas: 01-03-2028 a 19-04-2028. Predecesoras agregadas publicadas: —. Responsable del paquete: IMP.",
157,"      3.10.4.3 Cálculo y bloques 1 a 3 de la hoja de negocio (INN-05.P3)",3/4/28,9/6/28,50,0,0,1,,,3.10.4.3,,,#D17A32,"Escenario nominal histórico anterior a la reestimación. Mes 1: febrero de 2027. Calendario gráfico: lunes a viernes, sin descontar feriados. Duración de la barra: días hábiles de la ventana, no HH de esfuerzo. Fuente de fechas: T-15, tabla Programación de los paquetes con entregable, paquete 3.10.4.3. Fechas publicadas: 03-04-2028 a 09-06-2028. Predecesoras agregadas publicadas: —. Responsable del paquete: IMP.",
158,"      3.10.4.4 Hoja certificada, en marcha blanca y en producción (INN-05.P4, primera parte)",3/7/28,29/9/28,65,0,0,1,,,3.10.4.4,,,#D17A32,"Escenario nominal histórico anterior a la reestimación. Mes 1: febrero de 2027. Calendario gráfico: lunes a viernes, sin descontar feriados. Duración de la barra: días hábiles de la ventana, no HH de esfuerzo. Fuente de fechas: T-15, tabla Programación de los paquetes con entregable, paquete 3.10.4.4. Fechas publicadas: 03-07-2028 a 29-09-2028. Predecesoras agregadas publicadas: —. Responsable del paquete: IMP.",
159,"  3.11 Documentación técnica",3/5/27,31/10/28,392,0,0,1,,,3.11,,,#D17A32,"Escenario nominal histórico anterior a la reestimación. Mes 1: febrero de 2027. Calendario gráfico: lunes a viernes, sin descontar feriados. Duración de la barra: días hábiles de la ventana, no HH de esfuerzo. Tarea resumen; fechas derivadas del primer y último paquete o hito descendiente.",
160,"    3.11.1 Documentación técnica, funcional, de arquitectura, de operación y de seguridad",3/4/28,31/10/28,152,0,0,1,,,3.11.1,,,#D17A32,"Escenario nominal histórico anterior a la reestimación. Mes 1: febrero de 2027. Calendario gráfico: lunes a viernes, sin descontar feriados. Duración de la barra: días hábiles de la ventana, no HH de esfuerzo. Fuente de ventana: T-15, tabla Actividades de los paquetes de esfuerzo continuo, meses 15–21. Se representa la ventana completa, no dedicación diaria continua. Regla original: Una actividad cada 2 quincenas, por presencia continua o periódica. Responsable del paquete: ARQ.",
161,"    3.11.2 Base de conocimiento de incidentes y decisiones de diseño",1/11/27,29/9/28,240,0,0,1,,,3.11.2,,,#D17A32,"Escenario nominal histórico anterior a la reestimación. Mes 1: febrero de 2027. Calendario gráfico: lunes a viernes, sin descontar feriados. Duración de la barra: días hábiles de la ventana, no HH de esfuerzo. Fuente de ventana: T-15, tabla Actividades de los paquetes de esfuerzo continuo, meses 10–20. Se representa la ventana completa, no dedicación diaria continua. Regla original: Una actividad cada 3 quincenas, por presencia continua o periódica. Responsable del paquete: SRE.",
162,"    3.11.3 Estándares de codificación y documentación de interfaces en OpenAPI y AsyncAPI",3/5/27,29/9/28,370,0,0,1,,,3.11.3,,,#D17A32,"Escenario nominal histórico anterior a la reestimación. Mes 1: febrero de 2027. Calendario gráfico: lunes a viernes, sin descontar feriados. Duración de la barra: días hábiles de la ventana, no HH de esfuerzo. Fuente de ventana: T-15, tabla Actividades de los paquetes de esfuerzo continuo, meses 4–20. Se representa la ventana completa, no dedicación diaria continua. Regla original: Una actividad cada 4 quincenas, por presencia continua o periódica. Responsable del paquete: DES.",
163,"    3.11.4 Inventario de componentes (SBOM) con sus licencias de código abierto",3/5/27,29/9/28,370,0,0,1,,,3.11.4,,,#D17A32,"Escenario nominal histórico anterior a la reestimación. Mes 1: febrero de 2027. Calendario gráfico: lunes a viernes, sin descontar feriados. Duración de la barra: días hábiles de la ventana, no HH de esfuerzo. Fuente de ventana: T-15, tabla Actividades de los paquetes de esfuerzo continuo, meses 4–20. Se representa la ventana completa, no dedicación diaria continua. Regla original: Una actividad cada 4 quincenas, por presencia continua o periódica. Responsable del paquete: DES.",
164,"    3.11.5 Depósito del código fuente en el repositorio del CLIENTE en cada liberación",1/7/27,29/9/28,327,0,0,1,,,3.11.5,,,#D17A32,"Escenario nominal histórico anterior a la reestimación. Mes 1: febrero de 2027. Calendario gráfico: lunes a viernes, sin descontar feriados. Duración de la barra: días hábiles de la ventana, no HH de esfuerzo. Fuente de ventana: T-15, tabla Actividades de los paquetes de esfuerzo continuo, meses 6–20. Se representa la ventana completa, no dedicación diaria continua. Regla original: Una actividad cada 3 quincenas, por presencia continua o periódica. Responsable del paquete: DES.",
165,4 Transición,1/11/27,30/11/28,284,0,0,1,,,4,,,#8B4C8F,"Escenario nominal histórico anterior a la reestimación. Mes 1: febrero de 2027. Calendario gráfico: lunes a viernes, sin descontar feriados. Duración de la barra: días hábiles de la ventana, no HH de esfuerzo. Tarea resumen; fechas derivadas del primer y último paquete o hito descendiente.",
166,"  4.1 Plan de implantación",1/11/27,9/6/28,160,0,0,1,,,4.1,,,#8B4C8F,"Escenario nominal histórico anterior a la reestimación. Mes 1: febrero de 2027. Calendario gráfico: lunes a viernes, sin descontar feriados. Duración de la barra: días hábiles de la ventana, no HH de esfuerzo. Tarea resumen; fechas derivadas del primer y último paquete o hito descendiente.",
167,"    4.1.1 Plan de olas de la Etapa 1 por sitio y zona: Talca, Concepción y plataformas de cross-docking",1/11/27,9/11/27,7,0,0,1,,,4.1.1,,,#8B4C8F,"Escenario nominal histórico anterior a la reestimación. Mes 1: febrero de 2027. Calendario gráfico: lunes a viernes, sin descontar feriados. Duración de la barra: días hábiles de la ventana, no HH de esfuerzo. Fuente de fechas: T-15, tabla Programación de los paquetes con entregable, paquete 4.1.1. Fechas publicadas: 01-11-2027 a 09-11-2027. Predecesoras agregadas publicadas: —. Responsable del paquete: IMP.",
168,"    4.1.2 Procedimiento de reversión de la Etapa 1 antes de las 05:30, con versión operativa local y DTE emitidos por el ERP",1/12/27,9/12/27,7,0,0,1,,,4.1.2,,,#8B4C8F,"Escenario nominal histórico anterior a la reestimación. Mes 1: febrero de 2027. Calendario gráfico: lunes a viernes, sin descontar feriados. Duración de la barra: días hábiles de la ventana, no HH de esfuerzo. Fuente de fechas: T-15, tabla Programación de los paquetes con entregable, paquete 4.1.2. Fechas publicadas: 01-12-2027 a 09-12-2027. Predecesoras agregadas publicadas: —. Responsable del paquete: IMP.",
169,"    4.1.3 Plan de implantación y reversión de la Etapa 2 fuera de la ventana de 05:30 a 07:00",1/6/28,9/6/28,7,0,0,1,,,4.1.3,,,#8B4C8F,"Escenario nominal histórico anterior a la reestimación. Mes 1: febrero de 2027. Calendario gráfico: lunes a viernes, sin descontar feriados. Duración de la barra: días hábiles de la ventana, no HH de esfuerzo. Fuente de fechas: T-15, tabla Programación de los paquetes con entregable, paquete 4.1.3. Fechas publicadas: 01-06-2028 a 09-06-2028. Predecesoras agregadas publicadas: —. Responsable del paquete: IMP.",
170,"  4.2 Marcha blanca y producción de la Etapa 1",1/2/28,29/9/28,174,0,0,1,,,4.2,,,#8B4C8F,"Escenario nominal histórico anterior a la reestimación. Mes 1: febrero de 2027. Calendario gráfico: lunes a viernes, sin descontar feriados. Duración de la barra: días hábiles de la ventana, no HH de esfuerzo. Tarea resumen; fechas derivadas del primer y último paquete o hito descendiente.",
171,"    4.2.1 Marcha blanca de la Etapa 1 con conciliación diaria (H6)",1/2/28,28/4/28,64,0,0,1,,128-FS>P0D;120-FS>P0D;167-FS>P0D;168-FS>P0D;218-FS>P0D;219-FS>P0D;220-FS>P0D;221-FS>P0D;222-FS>P0D;223-FS>P0D;193-FS>P0D;194-FS>P0D,4.2.1,,,#8B4C8F,"Escenario nominal histórico anterior a la reestimación. Mes 1: febrero de 2027. Calendario gráfico: lunes a viernes, sin descontar feriados. Duración de la barra: días hábiles de la ventana, no HH de esfuerzo. Fuente de ventana: T-15, tabla Actividades de los paquetes de esfuerzo continuo, meses 13–15. Se representa la ventana completa, no dedicación diaria continua. Regla original: Una actividad de nivel de esfuerzo por quincena, dividida en 20 relevos o puestos. D-25: 3.8.7 → 4.2.1, FC. D-25: 3.7.5 → 4.2.1, FC. D-25: 4.1.1 → 4.2.1, FC. D-25: 4.1.2 → 4.2.1, FC. D-26: 6.5.1 → 4.2.1, FC. La fuente exige equipamiento antes de su ola. Esta vista agregada muestra la disponibilidad del equipamiento antes de la ventana de marcha blanca. D-26: 6.5.2 → 4.2.1, FC. La fuente exige equipamiento antes de su ola. Esta vista agregada muestra la disponibilidad del equipamiento antes de la ventana de marcha blanca. D-26: 6.5.3 → 4.2.1, FC. La fuente exige equipamiento antes de su ola. Esta vista agregada muestra la disponibilidad del equipamiento antes de la ventana de marcha blanca. D-26: 6.5.4 → 4.2.1, FC. La fuente exige equipamiento antes de su ola. Esta vista agregada muestra la disponibilidad del equipamiento antes de la ventana de marcha blanca. D-26: 6.5.5 → 4.2.1, FC. La fuente exige equipamiento antes de su ola. Esta vista agregada muestra la disponibilidad del equipamiento antes de la ventana de marcha blanca. D-26: 6.5.6 → 4.2.1, FC. La fuente exige equipamiento antes de su ola. Esta vista agregada muestra la disponibilidad del equipamiento antes de la ventana de marcha blanca. D-27: 5.4.1 → 4.2.1, FC. D-27: 5.4.2 → 4.2.1, FC. Responsable del paquete: IMP. Antecesores con restricción mínima (>) para conservar los huecos del escenario nominal; no se agregaron desfases ni reservas calculadas.",
172,"    4.2.2 Estabilización de la Etapa 1 en el turno de noche y acompañamiento en ruta",1/5/28,29/9/28,110,0,0,1,,,4.2.2,,,#8B4C8F,"Escenario nominal histórico anterior a la reestimación. Mes 1: febrero de 2027. Calendario gráfico: lunes a viernes, sin descontar feriados. Duración de la barra: días hábiles de la ventana, no HH de esfuerzo. Fuente de ventana: T-15, tabla Actividades de los paquetes de esfuerzo continuo, meses 16–20. Se representa la ventana completa, no dedicación diaria continua. Regla original: Una actividad de nivel de esfuerzo por quincena, dividida en relevos o puestos según la HH de cada mes. D-28-posterior: 4.2.3 → 4.2.2, FC. La estabilización es posterior al acta; la ventana mensual no fija el día de inicio. D-28-posterior: vínculo documental NO activado en Antecesores porque la ventana nominal publicada lo contradice. Se conservan las fechas del escenario histórico; no es una red recalculada. Responsable del paquete: IMP.",
173,"    4.2.3 Acta de paso a producción y cierre de la Etapa 1 (H7)",5/5/28,15/5/28,7,0,0,1,,171-FS>P0D;243-FS>P0D,4.2.3,,,#8B4C8F,"Escenario nominal histórico anterior a la reestimación. Mes 1: febrero de 2027. Calendario gráfico: lunes a viernes, sin descontar feriados. Duración de la barra: días hábiles de la ventana, no HH de esfuerzo. Fuente de fechas: T-15, tabla Programación de los paquetes con entregable, paquete 4.2.3. Fechas publicadas: 05-05-2028 a 15-05-2028. Predecesoras agregadas publicadas: 7.3. D-28: 4.2.1 → 4.2.3, FC. D-28: 7.3.1 → 4.2.3, FC. Responsable del paquete: JP. Antecesores con restricción mínima (>) para conservar los huecos del escenario nominal; no se agregaron desfases ni reservas calculadas.",
174,"  4.3 Marcha blanca y producción de la Etapa 2",1/8/28,30/11/28,88,0,0,1,,,4.3,,,#8B4C8F,"Escenario nominal histórico anterior a la reestimación. Mes 1: febrero de 2027. Calendario gráfico: lunes a viernes, sin descontar feriados. Duración de la barra: días hábiles de la ventana, no HH de esfuerzo. Tarea resumen; fechas derivadas del primer y último paquete o hito descendiente.",
175,"    4.3.1 Marcha blanca de la Etapa 2 en convivencia con la Etapa 1 y fuente única de datos (H11)",1/8/28,29/9/28,44,0,0,1,,136-FS>P0D;113-FS>P0D;169-FS>P0D,4.3.1,,,#8B4C8F,"Escenario nominal histórico anterior a la reestimación. Mes 1: febrero de 2027. Calendario gráfico: lunes a viernes, sin descontar feriados. Duración de la barra: días hábiles de la ventana, no HH de esfuerzo. Fuente de ventana: T-15, tabla Actividades de los paquetes de esfuerzo continuo, meses 19–20. Se representa la ventana completa, no dedicación diaria continua. Regla original: Una actividad de nivel de esfuerzo por quincena, dividida en 20 relevos o puestos. D-32: 3.9.6 → 4.3.1, FC. D-32: 3.6.5 → 4.3.1, FC. D-32: 4.1.3 → 4.3.1, FC. Responsable del paquete: IMP. Antecesores con restricción mínima (>) para conservar los huecos del escenario nominal; no se agregaron desfases ni reservas calculadas.",
176,"    4.3.2 Estabilización de la Etapa 2 con Comercial, Finanzas, cadenas y transportistas",2/10/28,30/11/28,44,0,0,1,,,4.3.2,,,#8B4C8F,"Escenario nominal histórico anterior a la reestimación. Mes 1: febrero de 2027. Calendario gráfico: lunes a viernes, sin descontar feriados. Duración de la barra: días hábiles de la ventana, no HH de esfuerzo. Fuente de ventana: T-15, tabla Actividades de los paquetes de esfuerzo continuo, meses 21–22. Se representa la ventana completa, no dedicación diaria continua. Regla original: Una actividad de nivel de esfuerzo por quincena, dividida en relevos o puestos según la HH de cada mes. Responsable del paquete: IMP.",
177,"    4.3.3 Acta de paso a producción y aceptación final de la implementación (H12)",11/10/28,19/10/28,7,0,0,1,,175-FS>P0D;244-FS>P0D;233-FS>P0D;178-FS>P0D,4.3.3,,,#8B4C8F,"Escenario nominal histórico anterior a la reestimación. Mes 1: febrero de 2027. Calendario gráfico: lunes a viernes, sin descontar feriados. Duración de la barra: días hábiles de la ventana, no HH de esfuerzo. Fuente de fechas: T-15, tabla Programación de los paquetes con entregable, paquete 4.3.3. Fechas publicadas: 11-10-2028 a 19-10-2028. Predecesoras agregadas publicadas: 4.3.4, 7.1, 7.3. D-33: 4.3.1 → 4.3.3, FC. D-33: 7.3.2 → 4.3.3, FC. D-33: 7.1.4 → 4.3.3, FC. D-33: 4.3.4 → 4.3.3, FC. Responsable del paquete: JP. Antecesores con restricción mínima (>) para conservar los huecos del escenario nominal; no se agregaron desfases ni reservas calculadas.",
178,"    4.3.4 Garantía de correcto funcionamiento constituida, condición de la aceptación final (H12)",2/10/28,10/10/28,7,0,0,1,,,4.3.4,,,#8B4C8F,"Escenario nominal histórico anterior a la reestimación. Mes 1: febrero de 2027. Calendario gráfico: lunes a viernes, sin descontar feriados. Duración de la barra: días hábiles de la ventana, no HH de esfuerzo. Fuente de fechas: T-15, tabla Programación de los paquetes con entregable, paquete 4.3.4. Fechas publicadas: 02-10-2028 a 10-10-2028. Predecesoras agregadas publicadas: —. Responsable del paquete: JP.",
179,5 Adquisiciones y contrataciones,1/3/27,9/6/28,335,0,0,1,,,5,,,#83822F,"Escenario nominal histórico anterior a la reestimación. Mes 1: febrero de 2027. Calendario gráfico: lunes a viernes, sin descontar feriados. Duración de la barra: días hábiles de la ventana, no HH de esfuerzo. Tarea resumen; fechas derivadas del primer y último paquete o hito descendiente.",
180,"  5.1 Hardware e infraestructura",1/3/27,9/6/27,73,0,0,1,,,5.1,,,#83822F,"Escenario nominal histórico anterior a la reestimación. Mes 1: febrero de 2027. Calendario gráfico: lunes a viernes, sin descontar feriados. Duración de la barra: días hábiles de la ventana, no HH de esfuerzo. Tarea resumen; fechas derivadas del primer y último paquete o hito descendiente.",
181,"    5.1.1 Especificación de compra del equipamiento de terreno para el CLIENTE",1/3/27,9/3/27,7,0,0,1,,,5.1.1,,,#83822F,"Escenario nominal histórico anterior a la reestimación. Mes 1: febrero de 2027. Calendario gráfico: lunes a viernes, sin descontar feriados. Duración de la barra: días hábiles de la ventana, no HH de esfuerzo. Fuente de fechas: T-15, tabla Programación de los paquetes con entregable, paquete 5.1.1. Fechas publicadas: 01-03-2027 a 09-03-2027. Predecesoras agregadas publicadas: —. Responsable del paquete: ARQ.",
182,"    5.1.2 Especificación y compra de la sala técnica, los racks, los servidores y los gabinetes de borde",2/3/27,10/3/27,7,0,0,1,,57-FS>P0D;58-FS>P0D,5.1.2,,,#83822F,"Escenario nominal histórico anterior a la reestimación. Mes 1: febrero de 2027. Calendario gráfico: lunes a viernes, sin descontar feriados. Duración de la barra: días hábiles de la ventana, no HH de esfuerzo. Fuente de fechas: T-15, tabla Programación de los paquetes con entregable, paquete 5.1.2. Fechas publicadas: 02-03-2027 a 10-03-2027. Predecesoras agregadas publicadas: 2.3. D-09: 2.3.1 → 5.1.2, FC. D-09: 2.3.2 → 5.1.2, FC. Responsable del paquete: ARQ. Antecesores con restricción mínima (>) para conservar los huecos del escenario nominal; no se agregaron desfases ni reservas calculadas.",
183,"    5.1.3 Actas de recepción técnica del equipamiento de terreno comprado por el CLIENTE y de la infraestructura provista por LafroX",1/6/27,9/6/27,7,0,0,1,,,5.1.3,,,#83822F,"Escenario nominal histórico anterior a la reestimación. Mes 1: febrero de 2027. Calendario gráfico: lunes a viernes, sin descontar feriados. Duración de la barra: días hábiles de la ventana, no HH de esfuerzo. Fuente de fechas: T-15, tabla Programación de los paquetes con entregable, paquete 5.1.3. Fechas publicadas: 01-06-2027 a 09-06-2027. Predecesoras agregadas publicadas: —. Responsable del paquete: SRE.",
184,"  5.2 Servicios de nube y licencias",1/3/27,11/5/27,52,0,0,1,,,5.2,,,#83822F,"Escenario nominal histórico anterior a la reestimación. Mes 1: febrero de 2027. Calendario gráfico: lunes a viernes, sin descontar feriados. Duración de la barra: días hábiles de la ventana, no HH de esfuerzo. Tarea resumen; fechas derivadas del primer y último paquete o hito descendiente.",
185,"    5.2.1 Contrato de los servicios de AWS",1/3/27,9/3/27,7,0,0,1,,,5.2.1,,,#83822F,"Escenario nominal histórico anterior a la reestimación. Mes 1: febrero de 2027. Calendario gráfico: lunes a viernes, sin descontar feriados. Duración de la barra: días hábiles de la ventana, no HH de esfuerzo. Fuente de fechas: T-15, tabla Programación de los paquetes con entregable, paquete 5.2.1. Fechas publicadas: 01-03-2027 a 09-03-2027. Predecesoras agregadas publicadas: —. Responsable del paquete: SRE.",
186,"    5.2.2 Suscripción del servicio de gestión de dispositivos y de detección en endpoints",3/5/27,11/5/27,7,0,0,1,,,5.2.2,,,#83822F,"Escenario nominal histórico anterior a la reestimación. Mes 1: febrero de 2027. Calendario gráfico: lunes a viernes, sin descontar feriados. Duración de la barra: días hábiles de la ventana, no HH de esfuerzo. Fuente de fechas: T-15, tabla Programación de los paquetes con entregable, paquete 5.2.2. Fechas publicadas: 03-05-2027 a 11-05-2027. Predecesoras agregadas publicadas: —. Responsable del paquete: SRE.",
187,"    5.2.3 Licencias de software de terceros constituidas a nombre del CLIENTE",3/5/27,11/5/27,7,0,0,1,,,5.2.3,,,#83822F,"Escenario nominal histórico anterior a la reestimación. Mes 1: febrero de 2027. Calendario gráfico: lunes a viernes, sin descontar feriados. Duración de la barra: días hábiles de la ventana, no HH de esfuerzo. Fuente de fechas: T-15, tabla Programación de los paquetes con entregable, paquete 5.2.3. Fechas publicadas: 03-05-2027 a 11-05-2027. Predecesoras agregadas publicadas: —. Responsable del paquete: ARQ.",
188,"  5.3 Enlaces de comunicaciones",3/5/27,11/5/27,7,0,0,1,,,5.3,,,#83822F,"Escenario nominal histórico anterior a la reestimación. Mes 1: febrero de 2027. Calendario gráfico: lunes a viernes, sin descontar feriados. Duración de la barra: días hábiles de la ventana, no HH de esfuerzo. Tarea resumen; fechas derivadas del primer y último paquete o hito descendiente.",
189,"    5.3.1 Contrato de fibra óptica de los CD de Talca y Concepción",3/5/27,11/5/27,7,0,0,1,,,5.3.1,,,#83822F,"Escenario nominal histórico anterior a la reestimación. Mes 1: febrero de 2027. Calendario gráfico: lunes a viernes, sin descontar feriados. Duración de la barra: días hábiles de la ventana, no HH de esfuerzo. Fuente de fechas: T-15, tabla Programación de los paquetes con entregable, paquete 5.3.1. Fechas publicadas: 03-05-2027 a 11-05-2027. Predecesoras agregadas publicadas: —. Responsable del paquete: SRE.",
190,"    5.3.2 Contrato de planes LTE con dos proveedores (ocho planes)",3/5/27,11/5/27,7,0,0,1,,,5.3.2,,,#83822F,"Escenario nominal histórico anterior a la reestimación. Mes 1: febrero de 2027. Calendario gráfico: lunes a viernes, sin descontar feriados. Duración de la barra: días hábiles de la ventana, no HH de esfuerzo. Fuente de fechas: T-15, tabla Programación de los paquetes con entregable, paquete 5.3.2. Fechas publicadas: 03-05-2027 a 11-05-2027. Predecesoras agregadas publicadas: —. Responsable del paquete: SRE.",
191,"    5.3.3 Contrato de Starlink para los cinco sitios: Talca, Concepción y las tres plataformas de cross-docking",3/5/27,11/5/27,7,0,0,1,,,5.3.3,,,#83822F,"Escenario nominal histórico anterior a la reestimación. Mes 1: febrero de 2027. Calendario gráfico: lunes a viernes, sin descontar feriados. Duración de la barra: días hábiles de la ventana, no HH de esfuerzo. Fuente de fechas: T-15, tabla Programación de los paquetes con entregable, paquete 5.3.3. Fechas publicadas: 03-05-2027 a 11-05-2027. Predecesoras agregadas publicadas: —. Responsable del paquete: SRE.",
192,"  5.4 Acuerdos con terceros",2/8/27,9/6/28,225,0,0,1,,,5.4,,,#83822F,"Escenario nominal histórico anterior a la reestimación. Mes 1: febrero de 2027. Calendario gráfico: lunes a viernes, sin descontar feriados. Duración de la barra: días hábiles de la ventana, no HH de esfuerzo. Tarea resumen; fechas derivadas del primer y último paquete o hito descendiente.",
193,"    5.4.1 Acuerdos operacionales firmados con los diez transportistas",1/10/27,11/10/27,7,0,0,1,,,5.4.1,,,#83822F,"Escenario nominal histórico anterior a la reestimación. Mes 1: febrero de 2027. Calendario gráfico: lunes a viernes, sin descontar feriados. Duración de la barra: días hábiles de la ventana, no HH de esfuerzo. Fuente de fechas: T-15, tabla Programación de los paquetes con entregable, paquete 5.4.1. Fechas publicadas: 01-10-2027 a 11-10-2027. Predecesoras agregadas publicadas: —. Responsable del paquete: IMP.",
194,"    5.4.2 Acta de acuerdo con el sindicato sobre terminales, GPS y cámaras",1/10/27,11/10/27,7,0,0,1,,,5.4.2,,,#83822F,"Escenario nominal histórico anterior a la reestimación. Mes 1: febrero de 2027. Calendario gráfico: lunes a viernes, sin descontar feriados. Duración de la barra: días hábiles de la ventana, no HH de esfuerzo. Fuente de fechas: T-15, tabla Programación de los paquetes con entregable, paquete 5.4.2. Fechas publicadas: 01-10-2027 a 11-10-2027. Predecesoras agregadas publicadas: —. Responsable del paquete: IMP.",
195,"    5.4.3 Fórmula aprobada del tramo variable: reglas de atribución, canasta e índices (INN-04.P1)",1/6/28,9/6/28,7,0,0,1,,,5.4.3,,,#83822F,"Escenario nominal histórico anterior a la reestimación. Mes 1: febrero de 2027. Calendario gráfico: lunes a viernes, sin descontar feriados. Duración de la barra: días hábiles de la ventana, no HH de esfuerzo. Fuente de fechas: T-15, tabla Programación de los paquetes con entregable, paquete 5.4.3. Fechas publicadas: 01-06-2028 a 09-06-2028. Predecesoras agregadas publicadas: —. Responsable del paquete: JP.",
196,"    5.4.4 Contrato de custodia de fuentes con un tercero independiente",2/8/27,10/8/27,7,0,0,1,,,5.4.4,,,#83822F,"Escenario nominal histórico anterior a la reestimación. Mes 1: febrero de 2027. Calendario gráfico: lunes a viernes, sin descontar feriados. Duración de la barra: días hábiles de la ventana, no HH de esfuerzo. Fuente de fechas: T-15, tabla Programación de los paquetes con entregable, paquete 5.4.4. Fechas publicadas: 02-08-2027 a 10-08-2027. Predecesoras agregadas publicadas: —. Responsable del paquete: JP.",
197,6 Infraestructura física y sitios,1/4/27,14/1/28,207,0,0,1,,,6,,,#587B39,"Escenario nominal histórico anterior a la reestimación. Mes 1: febrero de 2027. Calendario gráfico: lunes a viernes, sin descontar feriados. Duración de la barra: días hábiles de la ventana, no HH de esfuerzo. Tarea resumen; fechas derivadas del primer y último paquete o hito descendiente.",
198,"  6.1 Adecuación de la sala técnica de Talca",1/4/27,20/5/27,36,0,0,1,,,6.1,,,#587B39,"Escenario nominal histórico anterior a la reestimación. Mes 1: febrero de 2027. Calendario gráfico: lunes a viernes, sin descontar feriados. Duración de la barra: días hábiles de la ventana, no HH de esfuerzo. Tarea resumen; fechas derivadas del primer y último paquete o hito descendiente.",
199,"    6.1.1 Coordinación de la obra civil de separación, a cargo del CLIENTE (RT-06.06), y piso técnico de la sala",1/4/27,20/4/27,14,0,0,1,,182-FS>P0D,6.1.1,,,#587B39,"Escenario nominal histórico anterior a la reestimación. Mes 1: febrero de 2027. Calendario gráfico: lunes a viernes, sin descontar feriados. Duración de la barra: días hábiles de la ventana, no HH de esfuerzo. Fuente de fechas: T-15, tabla Programación de los paquetes con entregable, paquete 6.1.1. Fechas publicadas: 01-04-2027 a 20-04-2027. Predecesoras agregadas publicadas: 5.1. D-10: 5.1.2 → 6.1.1, FC. Responsable del paquete: SRE. Antecesores con restricción mínima (>) para conservar los huecos del escenario nominal; no se agregaron desfases ni reservas calculadas.",
200,"    6.1.2 Hardware de energía instalado: UPS modular N+1, generador con 24 horas de autonomía, transferencia automática y PDU A/B",1/4/27,20/4/27,14,0,0,1,,182-FS>P0D,6.1.2,,,#587B39,"Escenario nominal histórico anterior a la reestimación. Mes 1: febrero de 2027. Calendario gráfico: lunes a viernes, sin descontar feriados. Duración de la barra: días hábiles de la ventana, no HH de esfuerzo. Fuente de fechas: T-15, tabla Programación de los paquetes con entregable, paquete 6.1.2. Fechas publicadas: 01-04-2027 a 20-04-2027. Predecesoras agregadas publicadas: 5.1. D-10: 5.1.2 → 6.1.2, FC. Responsable del paquete: SRE. Antecesores con restricción mínima (>) para conservar los huecos del escenario nominal; no se agregaron desfases ni reservas calculadas.",
201,"    6.1.3 Hardware de climatización de precisión N+1 instalado",1/4/27,20/4/27,14,0,0,1,,182-FS>P0D,6.1.3,,,#587B39,"Escenario nominal histórico anterior a la reestimación. Mes 1: febrero de 2027. Calendario gráfico: lunes a viernes, sin descontar feriados. Duración de la barra: días hábiles de la ventana, no HH de esfuerzo. Fuente de fechas: T-15, tabla Programación de los paquetes con entregable, paquete 6.1.3. Fechas publicadas: 01-04-2027 a 20-04-2027. Predecesoras agregadas publicadas: 5.1. D-10: 5.1.2 → 6.1.3, FC. Responsable del paquete: SRE. Antecesores con restricción mínima (>) para conservar los huecos del escenario nominal; no se agregaron desfases ni reservas calculadas.",
202,"    6.1.4 Hardware de detección temprana de incendio y extinción por agente limpio instalado",1/4/27,20/4/27,14,0,0,1,,182-FS>P0D,6.1.4,,,#587B39,"Escenario nominal histórico anterior a la reestimación. Mes 1: febrero de 2027. Calendario gráfico: lunes a viernes, sin descontar feriados. Duración de la barra: días hábiles de la ventana, no HH de esfuerzo. Fuente de fechas: T-15, tabla Programación de los paquetes con entregable, paquete 6.1.4. Fechas publicadas: 01-04-2027 a 20-04-2027. Predecesoras agregadas publicadas: 5.1. D-10: 5.1.2 → 6.1.4, FC. Responsable del paquete: SRE. Antecesores con restricción mínima (>) para conservar los huecos del escenario nominal; no se agregaron desfases ni reservas calculadas.",
203,"    6.1.5 Acta de recepción técnica de la sala",3/5/27,20/5/27,14,0,0,1,,182-FS>P0D,6.1.5,,,#587B39,"Escenario nominal histórico anterior a la reestimación. Mes 1: febrero de 2027. Calendario gráfico: lunes a viernes, sin descontar feriados. Duración de la barra: días hábiles de la ventana, no HH de esfuerzo. Fuente de fechas: T-15, tabla Programación de los paquetes con entregable, paquete 6.1.5. Fechas publicadas: 03-05-2027 a 20-05-2027. Predecesoras agregadas publicadas: 5.1. D-10: 5.1.2 → 6.1.5, FC. Responsable del paquete: SRE. Antecesores con restricción mínima (>) para conservar los huecos del escenario nominal; no se agregaron desfases ni reservas calculadas.",
204,"  6.2 Cableado estructurado",3/5/27,19/8/27,79,0,0,1,,,6.2,,,#587B39,"Escenario nominal histórico anterior a la reestimación. Mes 1: febrero de 2027. Calendario gráfico: lunes a viernes, sin descontar feriados. Duración de la barra: días hábiles de la ventana, no HH de esfuerzo. Tarea resumen; fechas derivadas del primer y último paquete o hito descendiente.",
205,"    6.2.1 Cableado de cobre Cat6A y fibra OM4 tendido, con dos ductos de ingreso independientes",3/5/27,20/5/27,14,0,0,1,,,6.2.1,,,#587B39,"Escenario nominal histórico anterior a la reestimación. Mes 1: febrero de 2027. Calendario gráfico: lunes a viernes, sin descontar feriados. Duración de la barra: días hábiles de la ventana, no HH de esfuerzo. Fuente de fechas: T-15, tabla Programación de los paquetes con entregable, paquete 6.2.1. Fechas publicadas: 03-05-2027 a 20-05-2027. Predecesoras agregadas publicadas: —. Responsable del paquete: SRE.",
206,"    6.2.2 Certificación de enlaces, etiquetado y planos as-built",1/7/27,20/7/27,14,0,0,1,,,6.2.2,,,#587B39,"Escenario nominal histórico anterior a la reestimación. Mes 1: febrero de 2027. Calendario gráfico: lunes a viernes, sin descontar feriados. Duración de la barra: días hábiles de la ventana, no HH de esfuerzo. Fuente de fechas: T-15, tabla Programación de los paquetes con entregable, paquete 6.2.2. Fechas publicadas: 01-07-2027 a 20-07-2027. Predecesoras agregadas publicadas: —. Responsable del paquete: SRE.",
207,"    6.2.3 Gabinetes de piso y switches de acceso instalados en las bodegas de Talca y Concepción",2/8/27,19/8/27,14,0,0,1,,,6.2.3,,,#587B39,"Escenario nominal histórico anterior a la reestimación. Mes 1: febrero de 2027. Calendario gráfico: lunes a viernes, sin descontar feriados. Duración de la barra: días hábiles de la ventana, no HH de esfuerzo. Fuente de fechas: T-15, tabla Programación de los paquetes con entregable, paquete 6.2.3. Fechas publicadas: 02-08-2027 a 19-08-2027. Predecesoras agregadas publicadas: —. Responsable del paquete: SRE.",
208,"  6.3 Montaje de racks y gabinetes",3/5/27,20/10/27,123,0,0,1,,,6.3,,,#587B39,"Escenario nominal histórico anterior a la reestimación. Mes 1: febrero de 2027. Calendario gráfico: lunes a viernes, sin descontar feriados. Duración de la barra: días hábiles de la ventana, no HH de esfuerzo. Tarea resumen; fechas derivadas del primer y último paquete o hito descendiente.",
209,"    6.3.1 Rack R01 de servidores montado: clúster de tres nodos, respaldo local, consola KVM y traslado del servidor del ERP del CLIENTE a U25–U26, con respaldo completo verificado, en ventana dominical después del H3 y antes de la marcha blanca de Talca, sin cambios de software",21/5/27,9/6/27,14,0,0,1,,203-FS>P0D,6.3.1,,,#587B39,"Escenario nominal histórico anterior a la reestimación. Mes 1: febrero de 2027. Calendario gráfico: lunes a viernes, sin descontar feriados. Duración de la barra: días hábiles de la ventana, no HH de esfuerzo. Fuente de fechas: T-15, tabla Programación de los paquetes con entregable, paquete 6.3.1. Fechas publicadas: 21-05-2027 a 09-06-2027. Predecesoras agregadas publicadas: 6.1. D-11: 6.1.5 → 6.3.1, FC. Responsable del paquete: SRE. Antecesores con restricción mínima (>) para conservar los huecos del escenario nominal; no se agregaron desfases ni reservas calculadas.",
210,"    6.3.2 Rack R02 de comunicaciones montado: firewalls, switches de núcleo y de gestión, y distribución de fibra",21/5/27,9/6/27,14,0,0,1,,203-FS>P0D,6.3.2,,,#587B39,"Escenario nominal histórico anterior a la reestimación. Mes 1: febrero de 2027. Calendario gráfico: lunes a viernes, sin descontar feriados. Duración de la barra: días hábiles de la ventana, no HH de esfuerzo. Fuente de fechas: T-15, tabla Programación de los paquetes con entregable, paquete 6.3.2. Fechas publicadas: 21-05-2027 a 09-06-2027. Predecesoras agregadas publicadas: 6.1. D-11: 6.1.5 → 6.3.2, FC. Responsable del paquete: SRE. Antecesores con restricción mínima (>) para conservar los huecos del escenario nominal; no se agregaron desfases ni reservas calculadas.",
211,"    6.3.3 Gabinete de borde de Concepción montado: servidores activo y en espera, firewalls, switches, UPS, climatización y monitoreo, con toma del servicio por el de espera si falla el activo",3/5/27,20/5/27,14,0,0,1,,,6.3.3,,,#587B39,"Escenario nominal histórico anterior a la reestimación. Mes 1: febrero de 2027. Calendario gráfico: lunes a viernes, sin descontar feriados. Duración de la barra: días hábiles de la ventana, no HH de esfuerzo. Fuente de fechas: T-15, tabla Programación de los paquetes con entregable, paquete 6.3.3. Fechas publicadas: 03-05-2027 a 20-05-2027. Predecesoras agregadas publicadas: —. Responsable del paquete: SRE.",
212,"    6.3.4 Gabinetes de borde montados en Curicó, Chillán y Los Ángeles, con dos mini-PC (activo y en espera) por plataforma",1/10/27,20/10/27,14,0,0,1,,,6.3.4,,,#587B39,"Escenario nominal histórico anterior a la reestimación. Mes 1: febrero de 2027. Calendario gráfico: lunes a viernes, sin descontar feriados. Duración de la barra: días hábiles de la ventana, no HH de esfuerzo. Fuente de fechas: T-15, tabla Programación de los paquetes con entregable, paquete 6.3.4. Fechas publicadas: 01-10-2027 a 20-10-2027. Predecesoras agregadas publicadas: —. Responsable del paquete: SRE.",
213,"  6.4 Sistemas de seguridad física",1/6/27,8/7/27,28,0,0,1,,,6.4,,,#587B39,"Escenario nominal histórico anterior a la reestimación. Mes 1: febrero de 2027. Calendario gráfico: lunes a viernes, sin descontar feriados. Duración de la barra: días hábiles de la ventana, no HH de esfuerzo. Tarea resumen; fechas derivadas del primer y último paquete o hito descendiente.",
214,"    6.4.1 Hardware de control de acceso biométrico y esclusa instalado",1/6/27,18/6/27,14,0,0,1,,,6.4.1,,,#587B39,"Escenario nominal histórico anterior a la reestimación. Mes 1: febrero de 2027. Calendario gráfico: lunes a viernes, sin descontar feriados. Duración de la barra: días hábiles de la ventana, no HH de esfuerzo. Fuente de fechas: T-15, tabla Programación de los paquetes con entregable, paquete 6.4.1. Fechas publicadas: 01-06-2027 a 18-06-2027. Predecesoras agregadas publicadas: —. Responsable del paquete: SEG.",
215,"    6.4.2 Hardware de videovigilancia instalado",7/6/27,24/6/27,14,0,0,1,,,6.4.2,,,#587B39,"Escenario nominal histórico anterior a la reestimación. Mes 1: febrero de 2027. Calendario gráfico: lunes a viernes, sin descontar feriados. Duración de la barra: días hábiles de la ventana, no HH de esfuerzo. Fuente de fechas: T-15, tabla Programación de los paquetes con entregable, paquete 6.4.2. Fechas publicadas: 07-06-2027 a 24-06-2027. Predecesoras agregadas publicadas: —. Responsable del paquete: SEG.",
216,"    6.4.3 Recinto de custodia de respaldos habilitado",21/6/27,8/7/27,14,0,0,1,,,6.4.3,,,#587B39,"Escenario nominal histórico anterior a la reestimación. Mes 1: febrero de 2027. Calendario gráfico: lunes a viernes, sin descontar feriados. Duración de la barra: días hábiles de la ventana, no HH de esfuerzo. Fuente de fechas: T-15, tabla Programación de los paquetes con entregable, paquete 6.4.3. Fechas publicadas: 21-06-2027 a 08-07-2027. Predecesoras agregadas publicadas: —. Responsable del paquete: SEG.",
217,"  6.5 Equipamiento de campo",6/10/27,14/1/28,73,0,0,1,,,6.5,,,#587B39,"Escenario nominal histórico anterior a la reestimación. Mes 1: febrero de 2027. Calendario gráfico: lunes a viernes, sin descontar feriados. Duración de la barra: días hábiles de la ventana, no HH de esfuerzo. Tarea resumen; fechas derivadas del primer y último paquete o hito descendiente.",
218,"    6.5.1 Terminales de preventa, reparto y bodega configurados y enrolados",6/10/27,14/1/28,73,0,0,1,,83-FS>P0D;212-SS>P0D,6.5.1,,,#587B39,"Escenario nominal histórico anterior a la reestimación. Mes 1: febrero de 2027. Calendario gráfico: lunes a viernes, sin descontar feriados. Duración de la barra: días hábiles de la ventana, no HH de esfuerzo. Fuente de fechas: T-15, tabla Programación de los paquetes con entregable, paquete 6.5.1. Fechas publicadas: 06-10-2027 a 14-01-2028. Predecesoras agregadas publicadas: 3.2. D-08-MDM: 3.2.6 → 6.5.1, FC. D-12-campo: 6.3.4 → 6.5.1, CC. Responsable del paquete: SRE. Antecesores con restricción mínima (>) para conservar los huecos del escenario nominal; no se agregaron desfases ni reservas calculadas.",
219,"    6.5.2 Terminales de pago configurados, uno por camión",4/11/27,14/1/28,52,0,0,1,,,6.5.2,,,#587B39,"Escenario nominal histórico anterior a la reestimación. Mes 1: febrero de 2027. Calendario gráfico: lunes a viernes, sin descontar feriados. Duración de la barra: días hábiles de la ventana, no HH de esfuerzo. Fuente de fechas: T-15, tabla Programación de los paquetes con entregable, paquete 6.5.2. Fechas publicadas: 04-11-2027 a 14-01-2028. Predecesoras agregadas publicadas: —. Responsable del paquete: SRE.",
220,"    6.5.3 Sensores de cámara y gateways IoT instalados en Talca y Concepción",6/10/27,25/11/27,37,0,0,1,,,6.5.3,,,#587B39,"Escenario nominal histórico anterior a la reestimación. Mes 1: febrero de 2027. Calendario gráfico: lunes a viernes, sin descontar feriados. Duración de la barra: días hábiles de la ventana, no HH de esfuerzo. Fuente de fechas: T-15, tabla Programación de los paquetes con entregable, paquete 6.5.3. Fechas publicadas: 06-10-2027 a 25-11-2027. Predecesoras agregadas publicadas: —. Responsable del paquete: SRE.",
221,"    6.5.4 Termógrafos instalados en los 28 camiones con frío (propios y de transportistas)",4/11/27,14/1/28,52,0,0,1,,,6.5.4,,,#587B39,"Escenario nominal histórico anterior a la reestimación. Mes 1: febrero de 2027. Calendario gráfico: lunes a viernes, sin descontar feriados. Duración de la barra: días hábiles de la ventana, no HH de esfuerzo. Fuente de fechas: T-15, tabla Programación de los paquetes con entregable, paquete 6.5.4. Fechas publicadas: 04-11-2027 a 14-01-2028. Predecesoras agregadas publicadas: —. Responsable del paquete: SRE.",
222,"    6.5.5 Impresoras de cabina instaladas",4/11/27,14/1/28,52,0,0,1,,,6.5.5,,,#587B39,"Escenario nominal histórico anterior a la reestimación. Mes 1: febrero de 2027. Calendario gráfico: lunes a viernes, sin descontar feriados. Duración de la barra: días hábiles de la ventana, no HH de esfuerzo. Fuente de fechas: T-15, tabla Programación de los paquetes con entregable, paquete 6.5.5. Fechas publicadas: 04-11-2027 a 14-01-2028. Predecesoras agregadas publicadas: —. Responsable del paquete: SRE.",
223,"    6.5.6 Impresoras de andén y balanzas de recepción instaladas",6/10/27,14/1/28,73,0,0,1,,,6.5.6,,,#587B39,"Escenario nominal histórico anterior a la reestimación. Mes 1: febrero de 2027. Calendario gráfico: lunes a viernes, sin descontar feriados. Duración de la barra: días hábiles de la ventana, no HH de esfuerzo. Fuente de fechas: T-15, tabla Programación de los paquetes con entregable, paquete 6.5.6. Fechas publicadas: 06-10-2027 a 14-01-2028. Predecesoras agregadas publicadas: —. Responsable del paquete: SRE.",
224,"  6.6 Configuración de la infraestructura de los sitios",10/6/27,29/6/27,14,0,0,1,,,6.6,,,#587B39,"Escenario nominal histórico anterior a la reestimación. Mes 1: febrero de 2027. Calendario gráfico: lunes a viernes, sin descontar feriados. Duración de la barra: días hábiles de la ventana, no HH de esfuerzo. Tarea resumen; fechas derivadas del primer y último paquete o hito descendiente.",
225,"    6.6.1 Software de base instalado en los sitios: virtualización, contenedores, PostgreSQL, RabbitMQ y Keycloak",10/6/27,29/6/27,14,0,0,1,,209-FS>P0D;210-FS>P0D;211-FS>P0D,6.6.1,,,#587B39,"Escenario nominal histórico anterior a la reestimación. Mes 1: febrero de 2027. Calendario gráfico: lunes a viernes, sin descontar feriados. Duración de la barra: días hábiles de la ventana, no HH de esfuerzo. Fuente de fechas: T-15, tabla Programación de los paquetes con entregable, paquete 6.6.1. Fechas publicadas: 10-06-2027 a 29-06-2027. Predecesoras agregadas publicadas: 6.3. D-12: 6.3.1 → 6.6.1, FC. D-12: 6.3.2 → 6.6.1, FC. D-12: 6.3.3 → 6.6.1, FC. Responsable del paquete: SRE. Antecesores con restricción mínima (>) para conservar los huecos del escenario nominal; no se agregaron desfases ni reservas calculadas.",
226,"    6.6.2 Enlaces de fibra, LTE y Starlink habilitados, con conmutación al respaldo",10/6/27,29/6/27,14,0,0,1,,209-FS>P0D;210-FS>P0D;211-FS>P0D,6.6.2,,,#587B39,"Escenario nominal histórico anterior a la reestimación. Mes 1: febrero de 2027. Calendario gráfico: lunes a viernes, sin descontar feriados. Duración de la barra: días hábiles de la ventana, no HH de esfuerzo. Fuente de fechas: T-15, tabla Programación de los paquetes con entregable, paquete 6.6.2. Fechas publicadas: 10-06-2027 a 29-06-2027. Predecesoras agregadas publicadas: 6.3. D-12: 6.3.1 → 6.6.2, FC. D-12: 6.3.2 → 6.6.2, FC. D-12: 6.3.3 → 6.6.2, FC. Responsable del paquete: SRE. Antecesores con restricción mínima (>) para conservar los huecos del escenario nominal; no se agregaron desfases ni reservas calculadas.",
227,"    6.6.3 Borde de los CD en servicio, con la prueba de autonomía de 24 horas aprobada",10/6/27,21/6/27,8,0,0,1,,209-FS>P0D;210-FS>P0D;211-FS>P0D,6.6.3,,,#587B39,"Escenario nominal histórico anterior a la reestimación. Mes 1: febrero de 2027. Calendario gráfico: lunes a viernes, sin descontar feriados. Duración de la barra: días hábiles de la ventana, no HH de esfuerzo. Fuente de fechas: T-15, tabla Programación de los paquetes con entregable, paquete 6.6.3. Fechas publicadas: 10-06-2027 a 21-06-2027. Predecesoras agregadas publicadas: 6.3. D-12: 6.3.1 → 6.6.3, FC. D-12: 6.3.2 → 6.6.3, FC. D-12: 6.3.3 → 6.6.3, FC. Responsable del paquete: SRE. Antecesores con restricción mínima (>) para conservar los huecos del escenario nominal; no se agregaron desfases ni reservas calculadas.",
228,7 Capacitación y gestión del cambio,1/3/27,30/9/31,1197,0,0,1,,,7,,,#B85B74,"Escenario nominal histórico anterior a la reestimación. Mes 1: febrero de 2027. Calendario gráfico: lunes a viernes, sin descontar feriados. Duración de la barra: días hábiles de la ventana, no HH de esfuerzo. Tarea resumen; fechas derivadas del primer y último paquete o hito descendiente.",
229,"  7.1 Capacitación por roles",1/11/27,30/9/31,1022,0,0,1,,,7.1,,,#B85B74,"Escenario nominal histórico anterior a la reestimación. Mes 1: febrero de 2027. Calendario gráfico: lunes a viernes, sin descontar feriados. Duración de la barra: días hábiles de la ventana, no HH de esfuerzo. Tarea resumen; fechas derivadas del primer y último paquete o hito descendiente.",
230,"    7.1.1 Plan de capacitación por perfil: usuarios finales, avanzados, administradores, equipo técnico y soporte",1/11/27,24/12/27,40,0,0,1,,,7.1.1,,,#B85B74,"Escenario nominal histórico anterior a la reestimación. Mes 1: febrero de 2027. Calendario gráfico: lunes a viernes, sin descontar feriados. Duración de la barra: días hábiles de la ventana, no HH de esfuerzo. Fuente de fechas: T-15, tabla Programación de los paquetes con entregable, paquete 7.1.1. Fechas publicadas: 01-11-2027 a 24-12-2027. Predecesoras agregadas publicadas: —. Responsable del paquete: IMP.",
231,"    7.1.2 Programa de capacitación continua del turno de noche por la rotación del 38 %",1/2/28,30/9/31,956,0,0,1,,,7.1.2,,,#B85B74,"Escenario nominal histórico anterior a la reestimación. Mes 1: febrero de 2027. Calendario gráfico: lunes a viernes, sin descontar feriados. Duración de la barra: días hábiles de la ventana, no HH de esfuerzo. Fuente de ventana: T-15, tabla Actividades de los paquetes de esfuerzo continuo, meses 13–56. Se representa la ventana completa, no dedicación diaria continua. Regla original: Una actividad de nivel de esfuerzo por quincena. Responsable del paquete: IMP.",
232,"    7.1.3 Procedimiento de incorporación de los conductores de los transportistas en el andén",1/2/28,29/9/28,174,0,0,1,,,7.1.3,,,#B85B74,"Escenario nominal histórico anterior a la reestimación. Mes 1: febrero de 2027. Calendario gráfico: lunes a viernes, sin descontar feriados. Duración de la barra: días hábiles de la ventana, no HH de esfuerzo. Fuente de ventana: T-15, tabla Actividades de los paquetes de esfuerzo continuo, meses 13–20. Se representa la ventana completa, no dedicación diaria continua. Regla original: Una actividad por quincena, por presencia continua o periódica. Responsable del paquete: IMP.",
233,"    7.1.4 Traspaso al equipo de TI de cuatro personas del CLIENTE",3/4/28,29/9/28,130,0,0,1,,,7.1.4,,,#B85B74,"Escenario nominal histórico anterior a la reestimación. Mes 1: febrero de 2027. Calendario gráfico: lunes a viernes, sin descontar feriados. Duración de la barra: días hábiles de la ventana, no HH de esfuerzo. Fuente de ventana: T-15, tabla Actividades de los paquetes de esfuerzo continuo, meses 15–20. Se representa la ventana completa, no dedicación diaria continua. Regla original: 2 ocurrencias en la ventana, por presencia continua o periódica. Responsable del paquete: IMP.",
234,"    7.1.5 Materiales de capacitación: manuales por perfil, guías rápidas, preguntas frecuentes y videos tutoriales",1/11/27,31/7/28,196,0,0,1,,,7.1.5,,,#B85B74,"Escenario nominal histórico anterior a la reestimación. Mes 1: febrero de 2027. Calendario gráfico: lunes a viernes, sin descontar feriados. Duración de la barra: días hábiles de la ventana, no HH de esfuerzo. Fuente de ventana: T-15, tabla Actividades de los paquetes de esfuerzo continuo, meses 10–18. Se representa la ventana completa, no dedicación diaria continua. Regla original: 2 ocurrencias en la ventana, por presencia continua o periódica. Responsable del paquete: IMP.",
235,"    7.1.6 Plataforma de autoformación en línea con registro de avance",1/11/27,24/12/27,40,0,0,1,,,7.1.6,,,#B85B74,"Escenario nominal histórico anterior a la reestimación. Mes 1: febrero de 2027. Calendario gráfico: lunes a viernes, sin descontar feriados. Duración de la barra: días hábiles de la ventana, no HH de esfuerzo. Fuente de fechas: T-15, tabla Programación de los paquetes con entregable, paquete 7.1.6. Fechas publicadas: 01-11-2027 a 24-12-2027. Predecesoras agregadas publicadas: —. Responsable del paquete: IMP.",
236,"  7.2 Gestión del cambio",1/3/27,31/10/28,437,0,0,1,,,7.2,,,#B85B74,"Escenario nominal histórico anterior a la reestimación. Mes 1: febrero de 2027. Calendario gráfico: lunes a viernes, sin descontar feriados. Duración de la barra: días hábiles de la ventana, no HH de esfuerzo. Tarea resumen; fechas derivadas del primer y último paquete o hito descendiente.",
237,"    7.2.1 Acompañamiento del personal con 20 o 30 años en la compañía",1/11/27,31/5/28,153,0,0,1,,,7.2.1,,,#B85B74,"Escenario nominal histórico anterior a la reestimación. Mes 1: febrero de 2027. Calendario gráfico: lunes a viernes, sin descontar feriados. Duración de la barra: días hábiles de la ventana, no HH de esfuerzo. Fuente de ventana: T-15, tabla Actividades de los paquetes de esfuerzo continuo, meses 10–16. Se representa la ventana completa, no dedicación diaria continua. Regla original: Una actividad por quincena, por presencia continua o periódica. Responsable del paquete: IMP.",
238,"    7.2.2 Gestión del cambio con las cadenas y los transportistas",1/5/28,23/6/28,40,0,0,1,,,7.2.2,,,#B85B74,"Escenario nominal histórico anterior a la reestimación. Mes 1: febrero de 2027. Calendario gráfico: lunes a viernes, sin descontar feriados. Duración de la barra: días hábiles de la ventana, no HH de esfuerzo. Fuente de fechas: T-15, tabla Programación de los paquetes con entregable, paquete 7.2.2. Fechas publicadas: 01-05-2028 a 23-06-2028. Predecesoras agregadas publicadas: —. Responsable del paquete: IMP.",
239,"    7.2.3 Diagnóstico del impacto organizacional por área y perfil, con agentes de cambio",1/3/27,25/5/27,62,0,0,1,,,7.2.3,,,#B85B74,"Escenario nominal histórico anterior a la reestimación. Mes 1: febrero de 2027. Calendario gráfico: lunes a viernes, sin descontar feriados. Duración de la barra: días hábiles de la ventana, no HH de esfuerzo. Fuente de fechas: T-15, tabla Programación de los paquetes con entregable, paquete 7.2.3. Fechas publicadas: 01-03-2027 a 25-05-2027. Predecesoras agregadas publicadas: —. Responsable del paquete: IMP.",
240,"    7.2.4 Procedimientos operativos afectados, rediseñados y documentados",1/12/27,29/9/28,218,0,0,1,,,7.2.4,,,#B85B74,"Escenario nominal histórico anterior a la reestimación. Mes 1: febrero de 2027. Calendario gráfico: lunes a viernes, sin descontar feriados. Duración de la barra: días hábiles de la ventana, no HH de esfuerzo. Fuente de ventana: T-15, tabla Actividades de los paquetes de esfuerzo continuo, meses 11–20. Se representa la ventana completa, no dedicación diaria continua. Regla original: Una actividad por quincena, por presencia continua o periódica. Responsable del paquete: IMP.",
241,"    7.2.5 Medición de la adopción y plan de acción correctiva",1/2/28,31/10/28,196,0,0,1,,,7.2.5,,,#B85B74,"Escenario nominal histórico anterior a la reestimación. Mes 1: febrero de 2027. Calendario gráfico: lunes a viernes, sin descontar feriados. Duración de la barra: días hábiles de la ventana, no HH de esfuerzo. Fuente de ventana: T-15, tabla Actividades de los paquetes de esfuerzo continuo, meses 13–21. Se representa la ventana completa, no dedicación diaria continua. Regla original: Una actividad por quincena, por presencia continua o periódica. Responsable del paquete: IMP.",
242,"  7.3 Evaluaciones y certificaciones",1/2/28,25/7/28,126,0,0,1,,,7.3,,,#B85B74,"Escenario nominal histórico anterior a la reestimación. Mes 1: febrero de 2027. Calendario gráfico: lunes a viernes, sin descontar feriados. Duración de la barra: días hábiles de la ventana, no HH de esfuerzo. Tarea resumen; fechas derivadas del primer y último paquete o hito descendiente.",
243,"    7.3.1 Certificación de preventistas, conductores y preparadores (Etapa 1)",1/2/28,24/3/28,39,0,0,1,,,7.3.1,,,#B85B74,"Escenario nominal histórico anterior a la reestimación. Mes 1: febrero de 2027. Calendario gráfico: lunes a viernes, sin descontar feriados. Duración de la barra: días hábiles de la ventana, no HH de esfuerzo. Fuente de fechas: T-15, tabla Programación de los paquetes con entregable, paquete 7.3.1. Fechas publicadas: 01-02-2028 a 24-03-2028. Predecesoras agregadas publicadas: —. Responsable del paquete: IMP.",
244,"    7.3.2 Certificación de Comercial y Finanzas en costo de servir (Etapa 2)",3/7/28,25/7/28,17,0,0,1,,,7.3.2,,,#B85B74,"Escenario nominal histórico anterior a la reestimación. Mes 1: febrero de 2027. Calendario gráfico: lunes a viernes, sin descontar feriados. Duración de la barra: días hábiles de la ventana, no HH de esfuerzo. Fuente de fechas: T-15, tabla Programación de los paquetes con entregable, paquete 7.3.2. Fechas publicadas: 03-07-2028 a 25-07-2028. Predecesoras agregadas publicadas: —. Responsable del paquete: IMP.",
245,8 Operación y soporte (36 meses),1/2/28,30/9/31,956,0,0,1,,,8,,,#387C9C,"Escenario nominal histórico anterior a la reestimación. Mes 1: febrero de 2027. Calendario gráfico: lunes a viernes, sin descontar feriados. Duración de la barra: días hábiles de la ventana, no HH de esfuerzo. Tarea resumen; fechas derivadas del primer y último paquete o hito descendiente.",
246,"  8.1 Servicios de operación",1/2/28,30/9/31,956,0,0,1,,,8.1,,,#387C9C,"Escenario nominal histórico anterior a la reestimación. Mes 1: febrero de 2027. Calendario gráfico: lunes a viernes, sin descontar feriados. Duración de la barra: días hábiles de la ventana, no HH de esfuerzo. Tarea resumen; fechas derivadas del primer y último paquete o hito descendiente.",
247,"    8.1.1 Servicio de centro de operaciones 24×7 y mesa de servicio durante los 36 meses de operación (04:00 a 22:00; 24×7 en septiembre y diciembre)",2/10/28,30/9/31,782,0,0,1,,,8.1.1,,,#387C9C,"Escenario nominal histórico anterior a la reestimación. Mes 1: febrero de 2027. Calendario gráfico: lunes a viernes, sin descontar feriados. Duración de la barra: días hábiles de la ventana, no HH de esfuerzo. Fuente de ventana: T-15, tabla Actividades de los paquetes de esfuerzo continuo, meses 21–56. Se representa la ventana completa, no dedicación diaria continua. Regla original: Una actividad de nivel de esfuerzo por quincena, dividida en relevos o puestos según la HH de cada mes. D-34: 4.3.3 → 8.1.1, FC. Inicio contractual por mes 21; la tabla diaria y la ventana mensual se conservan aunque no fijan un corte diario compatible. El SOC 8.1.5 empieza en mes 13 como excepción explícita. D-34: vínculo documental NO activado en Antecesores porque la ventana nominal publicada lo contradice. Se conservan las fechas del escenario histórico; no es una red recalculada. Responsable del paquete: SRE.",
248,"    8.1.2 Servicio de gestión de incidentes, problemas y niveles de servicio del artículo 78 de las Bases Administrativas (p. 40) durante los 36 meses de operación",2/10/28,30/9/31,782,0,0,1,,,8.1.2,,,#387C9C,"Escenario nominal histórico anterior a la reestimación. Mes 1: febrero de 2027. Calendario gráfico: lunes a viernes, sin descontar feriados. Duración de la barra: días hábiles de la ventana, no HH de esfuerzo. Fuente de ventana: T-15, tabla Actividades de los paquetes de esfuerzo continuo, meses 21–56. Se representa la ventana completa, no dedicación diaria continua. Regla original: Una actividad de nivel de esfuerzo por quincena, dividida en relevos o puestos según la HH de cada mes. D-34: 4.3.3 → 8.1.2, FC. Inicio contractual por mes 21; la tabla diaria y la ventana mensual se conservan aunque no fijan un corte diario compatible. El SOC 8.1.5 empieza en mes 13 como excepción explícita. D-34: vínculo documental NO activado en Antecesores porque la ventana nominal publicada lo contradice. Se conservan las fechas del escenario histórico; no es una red recalculada. Responsable del paquete: SRE.",
249,"    8.1.3 Servicio de continuidad y pruebas semestrales de recuperación ante desastres durante los 36 meses de operación",2/10/28,30/9/31,782,0,0,1,,,8.1.3,,,#387C9C,"Escenario nominal histórico anterior a la reestimación. Mes 1: febrero de 2027. Calendario gráfico: lunes a viernes, sin descontar feriados. Duración de la barra: días hábiles de la ventana, no HH de esfuerzo. Fuente de ventana: T-15, tabla Actividades de los paquetes de esfuerzo continuo, meses 21–56. Se representa la ventana completa, no dedicación diaria continua. Regla original: Siete campañas de conmutación real de 80 HH, con cinco actividades por campaña. D-34: 4.3.3 → 8.1.3, FC. Inicio contractual por mes 21; la tabla diaria y la ventana mensual se conservan aunque no fijan un corte diario compatible. El SOC 8.1.5 empieza en mes 13 como excepción explícita. D-34: vínculo documental NO activado en Antecesores porque la ventana nominal publicada lo contradice. Se conservan las fechas del escenario histórico; no es una red recalculada. Responsable del paquete: SRE.",
250,"    8.1.4 Actualizaciones anuales del Plan de Reversibilidad durante los 36 meses de operación",2/10/28,30/9/31,782,0,0,1,,,8.1.4,,,#387C9C,"Escenario nominal histórico anterior a la reestimación. Mes 1: febrero de 2027. Calendario gráfico: lunes a viernes, sin descontar feriados. Duración de la barra: días hábiles de la ventana, no HH de esfuerzo. Fuente de ventana: T-15, tabla Actividades de los paquetes de esfuerzo continuo, meses 21–56. Se representa la ventana completa, no dedicación diaria continua. Regla original: Una actividad por ocurrencia (anual), ejecutada dentro de una quincena; 2 actividad(es) por ocurrencia. D-34: 4.3.3 → 8.1.4, FC. Inicio contractual por mes 21; la tabla diaria y la ventana mensual se conservan aunque no fijan un corte diario compatible. El SOC 8.1.5 empieza en mes 13 como excepción explícita. D-34: vínculo documental NO activado en Antecesores porque la ventana nominal publicada lo contradice. Se conservan las fechas del escenario histórico; no es una red recalculada. Responsable del paquete: JP.",
251,"    8.1.5 Servicio de centro de operaciones de seguridad 24×7 con SIEM desde la primera marcha blanca (mes 13) hasta el mes 56",1/2/28,30/9/31,956,0,0,1,,,8.1.5,,,#387C9C,"Escenario nominal histórico anterior a la reestimación. Mes 1: febrero de 2027. Calendario gráfico: lunes a viernes, sin descontar feriados. Duración de la barra: días hábiles de la ventana, no HH de esfuerzo. Fuente de ventana: T-15, tabla Actividades de los paquetes de esfuerzo continuo, meses 13–56. Se representa la ventana completa, no dedicación diaria continua. Regla original: Una actividad de nivel de esfuerzo por quincena, dividida en relevos o puestos según la HH de cada mes. D-34: 4.3.3 → 8.1.5, FC. Inicio contractual por mes 21; la tabla diaria y la ventana mensual se conservan aunque no fijan un corte diario compatible. El SOC 8.1.5 empieza en mes 13 como excepción explícita. D-34: vínculo documental NO activado en Antecesores porque la ventana nominal publicada lo contradice. Se conservan las fechas del escenario histórico; no es una red recalculada. Responsable del paquete: SEG.",
252,"    8.1.6 Pruebas mensuales de restauración de respaldos durante los 36 meses de operación",2/10/28,30/9/31,782,0,0,1,,,8.1.6,,,#387C9C,"Escenario nominal histórico anterior a la reestimación. Mes 1: febrero de 2027. Calendario gráfico: lunes a viernes, sin descontar feriados. Duración de la barra: días hábiles de la ventana, no HH de esfuerzo. Fuente de ventana: T-15, tabla Actividades de los paquetes de esfuerzo continuo, meses 21–56. Se representa la ventana completa, no dedicación diaria continua. Regla original: Una actividad por ocurrencia (mensual), ejecutada dentro de una quincena; 1 actividad(es) por ocurrencia. D-34: 4.3.3 → 8.1.6, FC. Inicio contractual por mes 21; la tabla diaria y la ventana mensual se conservan aunque no fijan un corte diario compatible. El SOC 8.1.5 empieza en mes 13 como excepción explícita. D-34: vínculo documental NO activado en Antecesores porque la ventana nominal publicada lo contradice. Se conservan las fechas del escenario histórico; no es una red recalculada. Responsable del paquete: SRE.",
253,"  8.2 Mantenimiento",2/10/28,30/9/31,782,0,0,1,,,8.2,,,#387C9C,"Escenario nominal histórico anterior a la reestimación. Mes 1: febrero de 2027. Calendario gráfico: lunes a viernes, sin descontar feriados. Duración de la barra: días hábiles de la ventana, no HH de esfuerzo. Tarea resumen; fechas derivadas del primer y último paquete o hito descendiente.",
254,"    8.2.1 Mantenimiento correctivo y evolutivo del software durante los 36 meses de operación, con bolsa anual de horas y fuera de las ventanas de congelamiento",2/10/28,30/9/31,782,0,0,1,,,8.2.1,,,#387C9C,"Escenario nominal histórico anterior a la reestimación. Mes 1: febrero de 2027. Calendario gráfico: lunes a viernes, sin descontar feriados. Duración de la barra: días hábiles de la ventana, no HH de esfuerzo. Fuente de ventana: T-15, tabla Actividades de los paquetes de esfuerzo continuo, meses 21–56. Se representa la ventana completa, no dedicación diaria continua. Regla original: Una actividad de nivel de esfuerzo por quincena. D-34: 4.3.3 → 8.2.1, FC. Inicio contractual por mes 21; la tabla diaria y la ventana mensual se conservan aunque no fijan un corte diario compatible. El SOC 8.1.5 empieza en mes 13 como excepción explícita. D-34: vínculo documental NO activado en Antecesores porque la ventana nominal publicada lo contradice. Se conservan las fechas del escenario histórico; no es una red recalculada. Responsable del paquete: DES.",
255,"    8.2.2 Mantenimiento de ciberseguridad durante los 36 meses de operación: vulnerabilidades, intrusión anual e inyección de fallas",2/10/28,30/9/31,782,0,0,1,,,8.2.2,,,#387C9C,"Escenario nominal histórico anterior a la reestimación. Mes 1: febrero de 2027. Calendario gráfico: lunes a viernes, sin descontar feriados. Duración de la barra: días hábiles de la ventana, no HH de esfuerzo. Fuente de ventana: T-15, tabla Actividades de los paquetes de esfuerzo continuo, meses 21–56. Se representa la ventana completa, no dedicación diaria continua. Regla original: Una actividad de nivel de esfuerzo por quincena. D-34: 4.3.3 → 8.2.2, FC. Inicio contractual por mes 21; la tabla diaria y la ventana mensual se conservan aunque no fijan un corte diario compatible. El SOC 8.1.5 empieza en mes 13 como excepción explícita. D-34: vínculo documental NO activado en Antecesores porque la ventana nominal publicada lo contradice. Se conservan las fechas del escenario histórico; no es una red recalculada. Responsable del paquete: SEG.",
256,"    8.2.3 Mantenimiento del hardware durante los 36 meses de operación: sala técnica, racks, gabinetes de borde y equipamiento de terreno",2/10/28,30/9/31,782,0,0,1,,,8.2.3,,,#387C9C,"Escenario nominal histórico anterior a la reestimación. Mes 1: febrero de 2027. Calendario gráfico: lunes a viernes, sin descontar feriados. Duración de la barra: días hábiles de la ventana, no HH de esfuerzo. Fuente de ventana: T-15, tabla Actividades de los paquetes de esfuerzo continuo, meses 21–56. Se representa la ventana completa, no dedicación diaria continua. Regla original: Una actividad de nivel de esfuerzo por quincena. D-34: 4.3.3 → 8.2.3, FC. Inicio contractual por mes 21; la tabla diaria y la ventana mensual se conservan aunque no fijan un corte diario compatible. El SOC 8.1.5 empieza en mes 13 como excepción explícita. D-34: vínculo documental NO activado en Antecesores porque la ventana nominal publicada lo contradice. Se conservan las fechas del escenario histórico; no es una red recalculada. Responsable del paquete: SRE.",
257,"    8.2.4 Registro y reducción de la deuda técnica durante los 36 meses de operación",2/10/28,30/9/31,782,0,0,1,,,8.2.4,,,#387C9C,"Escenario nominal histórico anterior a la reestimación. Mes 1: febrero de 2027. Calendario gráfico: lunes a viernes, sin descontar feriados. Duración de la barra: días hábiles de la ventana, no HH de esfuerzo. Fuente de ventana: T-15, tabla Actividades de los paquetes de esfuerzo continuo, meses 21–56. Se representa la ventana completa, no dedicación diaria continua. Regla original: Una actividad de nivel de esfuerzo por quincena. D-34: 4.3.3 → 8.2.4, FC. Inicio contractual por mes 21; la tabla diaria y la ventana mensual se conservan aunque no fijan un corte diario compatible. El SOC 8.1.5 empieza en mes 13 como excepción explícita. D-34: vínculo documental NO activado en Antecesores porque la ventana nominal publicada lo contradice. Se conservan las fechas del escenario histórico; no es una red recalculada. Responsable del paquete: DES.",
258,"    8.2.5 Actualizaciones anuales de los componentes de base durante los 36 meses de operación",2/10/28,30/9/31,782,0,0,1,,,8.2.5,,,#387C9C,"Escenario nominal histórico anterior a la reestimación. Mes 1: febrero de 2027. Calendario gráfico: lunes a viernes, sin descontar feriados. Duración de la barra: días hábiles de la ventana, no HH de esfuerzo. Fuente de ventana: T-15, tabla Actividades de los paquetes de esfuerzo continuo, meses 21–56. Se representa la ventana completa, no dedicación diaria continua. Regla original: Una actividad por ocurrencia (anual), ejecutada dentro de una quincena; 2 actividad(es) por ocurrencia. D-34: 4.3.3 → 8.2.5, FC. Inicio contractual por mes 21; la tabla diaria y la ventana mensual se conservan aunque no fijan un corte diario compatible. El SOC 8.1.5 empieza en mes 13 como excepción explícita. D-34: vínculo documental NO activado en Antecesores porque la ventana nominal publicada lo contradice. Se conservan las fechas del escenario histórico; no es una red recalculada. Responsable del paquete: SRE.",
259,"    8.2.6 Revisiones semestrales de las instalaciones eléctricas de la sala durante los 36 meses de operación",2/10/28,30/9/31,782,0,0,1,,,8.2.6,,,#387C9C,"Escenario nominal histórico anterior a la reestimación. Mes 1: febrero de 2027. Calendario gráfico: lunes a viernes, sin descontar feriados. Duración de la barra: días hábiles de la ventana, no HH de esfuerzo. Fuente de ventana: T-15, tabla Actividades de los paquetes de esfuerzo continuo, meses 21–56. Se representa la ventana completa, no dedicación diaria continua. Regla original: Una actividad por ocurrencia (semestral), ejecutada dentro de una quincena; 1 actividad(es) por ocurrencia. D-34: 4.3.3 → 8.2.6, FC. Inicio contractual por mes 21; la tabla diaria y la ventana mensual se conservan aunque no fijan un corte diario compatible. El SOC 8.1.5 empieza en mes 13 como excepción explícita. D-34: vínculo documental NO activado en Antecesores porque la ventana nominal publicada lo contradice. Se conservan las fechas del escenario histórico; no es una red recalculada. Responsable del paquete: SRE.",
260,"    8.2.7 Ciclo de vida del equipamiento durante los 36 meses de operación: reposición y disposición final",2/10/28,30/9/31,782,0,0,1,,,8.2.7,,,#387C9C,"Escenario nominal histórico anterior a la reestimación. Mes 1: febrero de 2027. Calendario gráfico: lunes a viernes, sin descontar feriados. Duración de la barra: días hábiles de la ventana, no HH de esfuerzo. Fuente de ventana: T-15, tabla Actividades de los paquetes de esfuerzo continuo, meses 21–56. Se representa la ventana completa, no dedicación diaria continua. Regla original: Una actividad de nivel de esfuerzo por quincena. D-34: 4.3.3 → 8.2.7, FC. Inicio contractual por mes 21; la tabla diaria y la ventana mensual se conservan aunque no fijan un corte diario compatible. El SOC 8.1.5 empieza en mes 13 como excepción explícita. D-34: vínculo documental NO activado en Antecesores porque la ventana nominal publicada lo contradice. Se conservan las fechas del escenario histórico; no es una red recalculada. Responsable del paquete: SRE.",
261,"  8.3 Innovaciones en operación",2/10/28,30/9/31,782,0,0,1,,,8.3,,,#387C9C,"Escenario nominal histórico anterior a la reestimación. Mes 1: febrero de 2027. Calendario gráfico: lunes a viernes, sin descontar feriados. Duración de la barra: días hábiles de la ventana, no HH de esfuerzo. Tarea resumen; fechas derivadas del primer y último paquete o hito descendiente.",
262,"    8.3.1 Innovación 2: mantenimiento de escenarios de regresión (INN-02.P4, segunda parte)",2/10/28,30/9/31,782,0,0,1,,,8.3.1,,,#387C9C,"Escenario nominal histórico anterior a la reestimación. Mes 1: febrero de 2027. Calendario gráfico: lunes a viernes, sin descontar feriados. Duración de la barra: días hábiles de la ventana, no HH de esfuerzo. Fuente de ventana: T-15, tabla Actividades de los paquetes de esfuerzo continuo, meses 21–56. Se representa la ventana completa, no dedicación diaria continua. Regla original: Una actividad de nivel de esfuerzo por quincena. D-34: 4.3.3 → 8.3.1, FC. Inicio contractual por mes 21; la tabla diaria y la ventana mensual se conservan aunque no fijan un corte diario compatible. El SOC 8.1.5 empieza en mes 13 como excepción explícita. D-34: vínculo documental NO activado en Antecesores porque la ventana nominal publicada lo contradice. Se conservan las fechas del escenario histórico; no es una red recalculada. Responsable del paquete: CAL.",
263,"    8.3.2 Innovación 3: revisión semestral de parámetros durante los 36 meses de operación (INN-03.P5)",2/10/28,30/9/31,782,0,0,1,,,8.3.2,,,#387C9C,"Escenario nominal histórico anterior a la reestimación. Mes 1: febrero de 2027. Calendario gráfico: lunes a viernes, sin descontar feriados. Duración de la barra: días hábiles de la ventana, no HH de esfuerzo. Fuente de ventana: T-15, tabla Actividades de los paquetes de esfuerzo continuo, meses 21–56. Se representa la ventana completa, no dedicación diaria continua. Regla original: Una actividad por ocurrencia (semestral), ejecutada dentro de una quincena; 1 actividad(es) por ocurrencia. D-34: 4.3.3 → 8.3.2, FC. Inicio contractual por mes 21; la tabla diaria y la ventana mensual se conservan aunque no fijan un corte diario compatible. El SOC 8.1.5 empieza en mes 13 como excepción explícita. D-34: vínculo documental NO activado en Antecesores porque la ventana nominal publicada lo contradice. Se conservan las fechas del escenario histórico; no es una red recalculada. Responsable del paquete: DAT.",
264,"    8.3.3 Innovación 4: línea base y liquidaciones en sombra (INN-04.P2)",2/10/28,29/12/28,65,0,0,1,,,8.3.3,,,#387C9C,"Escenario nominal histórico anterior a la reestimación. Mes 1: febrero de 2027. Calendario gráfico: lunes a viernes, sin descontar feriados. Duración de la barra: días hábiles de la ventana, no HH de esfuerzo. Fuente de ventana: T-15, tabla Actividades de los paquetes de esfuerzo continuo, meses 21–23. Se representa la ventana completa, no dedicación diaria continua. Regla original: 3 ocurrencias en la ventana, por presencia continua o periódica. D-34: 4.3.3 → 8.3.3, FC. Inicio contractual por mes 21; la tabla diaria y la ventana mensual se conservan aunque no fijan un corte diario compatible. El SOC 8.1.5 empieza en mes 13 como excepción explícita. D-34: vínculo documental NO activado en Antecesores porque la ventana nominal publicada lo contradice. Se conservan las fechas del escenario histórico; no es una red recalculada. Responsable del paquete: JP.",
265,"    8.3.4 Innovación 4: liquidación mensual del tramo variable, meses 24 a 56 (INN-04.P3)",1/1/29,30/9/31,717,0,0,1,,177-FS>P0D,8.3.4,,,#387C9C,"Escenario nominal histórico anterior a la reestimación. Mes 1: febrero de 2027. Calendario gráfico: lunes a viernes, sin descontar feriados. Duración de la barra: días hábiles de la ventana, no HH de esfuerzo. Fuente de ventana: T-15, tabla Actividades de los paquetes de esfuerzo continuo, meses 24–56. Se representa la ventana completa, no dedicación diaria continua. Regla original: Una actividad por ocurrencia (mensual), ejecutada dentro de una quincena; 1 actividad(es) por ocurrencia. D-34: 4.3.3 → 8.3.4, FC. Inicio contractual por mes 21; la tabla diaria y la ventana mensual se conservan aunque no fijan un corte diario compatible. El SOC 8.1.5 empieza en mes 13 como excepción explícita. Responsable del paquete: JP. Antecesores con restricción mínima (>) para conservar los huecos del escenario nominal; no se agregaron desfases ni reservas calculadas.",
266,"    8.3.5 Innovación 5: despliegue gradual por rutas (INN-05.P4, segunda parte)",1/11/28,30/3/29,108,0,0,1,,177-FS>P0D,8.3.5,,,#387C9C,"Escenario nominal histórico anterior a la reestimación. Mes 1: febrero de 2027. Calendario gráfico: lunes a viernes, sin descontar feriados. Duración de la barra: días hábiles de la ventana, no HH de esfuerzo. Fuente de ventana: T-15, tabla Actividades de los paquetes de esfuerzo continuo, meses 22–26. Se representa la ventana completa, no dedicación diaria continua. Regla original: Una actividad por quincena, por presencia continua o periódica. D-34: 4.3.3 → 8.3.5, FC. Inicio contractual por mes 21; la tabla diaria y la ventana mensual se conservan aunque no fijan un corte diario compatible. El SOC 8.1.5 empieza en mes 13 como excepción explícita. Responsable del paquete: IMP. Antecesores con restricción mínima (>) para conservar los huecos del escenario nominal; no se agregaron desfases ni reservas calculadas.",
267,"    8.3.6 Innovación 5: bloque 4 condicionado (INN-05.P5)",1/1/29,30/4/29,86,0,0,1,,177-FS>P0D,8.3.6,,,#387C9C,"Escenario nominal histórico anterior a la reestimación. Mes 1: febrero de 2027. Calendario gráfico: lunes a viernes, sin descontar feriados. Duración de la barra: días hábiles de la ventana, no HH de esfuerzo. Fuente de ventana: T-15, tabla Actividades de los paquetes de esfuerzo continuo, meses 24–27. Se representa la ventana completa, no dedicación diaria continua. Regla original: Una actividad por quincena, por presencia continua o periódica. D-34: 4.3.3 → 8.3.6, FC. Inicio contractual por mes 21; la tabla diaria y la ventana mensual se conservan aunque no fijan un corte diario compatible. El SOC 8.1.5 empieza en mes 13 como excepción explícita. Responsable del paquete: IMP. Antecesores con restricción mínima (>) para conservar los huecos del escenario nominal; no se agregaron desfases ni reservas calculadas.",
268,"  8.4 Informes y obligaciones periódicas",2/10/28,30/9/31,782,0,0,1,,,8.4,,,#387C9C,"Escenario nominal histórico anterior a la reestimación. Mes 1: febrero de 2027. Calendario gráfico: lunes a viernes, sin descontar feriados. Duración de la barra: días hábiles de la ventana, no HH de esfuerzo. Tarea resumen; fechas derivadas del primer y último paquete o hito descendiente.",
269,"    8.4.1 Gestión de la capacidad con proyección trimestral durante los 36 meses de operación",2/10/28,30/9/31,782,0,0,1,,,8.4.1,,,#387C9C,"Escenario nominal histórico anterior a la reestimación. Mes 1: febrero de 2027. Calendario gráfico: lunes a viernes, sin descontar feriados. Duración de la barra: días hábiles de la ventana, no HH de esfuerzo. Fuente de ventana: T-15, tabla Actividades de los paquetes de esfuerzo continuo, meses 21–56. Se representa la ventana completa, no dedicación diaria continua. Regla original: Una actividad por ocurrencia (trimestral), ejecutada dentro de una quincena; 1 actividad(es) por ocurrencia. D-34: 4.3.3 → 8.4.1, FC. Inicio contractual por mes 21; la tabla diaria y la ventana mensual se conservan aunque no fijan un corte diario compatible. El SOC 8.1.5 empieza en mes 13 como excepción explícita. D-34: vínculo documental NO activado en Antecesores porque la ventana nominal publicada lo contradice. Se conservan las fechas del escenario histórico; no es una red recalculada. Responsable del paquete: SRE.",
270,"    8.4.2 Informes mensuales de consumo de nube (FinOps) durante los 36 meses de operación",2/10/28,30/9/31,782,0,0,1,,,8.4.2,,,#387C9C,"Escenario nominal histórico anterior a la reestimación. Mes 1: febrero de 2027. Calendario gráfico: lunes a viernes, sin descontar feriados. Duración de la barra: días hábiles de la ventana, no HH de esfuerzo. Fuente de ventana: T-15, tabla Actividades de los paquetes de esfuerzo continuo, meses 21–56. Se representa la ventana completa, no dedicación diaria continua. Regla original: Una actividad por ocurrencia (mensual), ejecutada dentro de una quincena; 1 actividad(es) por ocurrencia. D-34: 4.3.3 → 8.4.2, FC. Inicio contractual por mes 21; la tabla diaria y la ventana mensual se conservan aunque no fijan un corte diario compatible. El SOC 8.1.5 empieza en mes 13 como excepción explícita. D-34: vínculo documental NO activado en Antecesores porque la ventana nominal publicada lo contradice. Se conservan las fechas del escenario histórico; no es una red recalculada. Responsable del paquete: SRE.",
271,"    8.4.3 Estimaciones anuales de la huella de carbono de la operación",2/10/28,30/9/31,782,0,0,1,,,8.4.3,,,#387C9C,"Escenario nominal histórico anterior a la reestimación. Mes 1: febrero de 2027. Calendario gráfico: lunes a viernes, sin descontar feriados. Duración de la barra: días hábiles de la ventana, no HH de esfuerzo. Fuente de ventana: T-15, tabla Actividades de los paquetes de esfuerzo continuo, meses 21–56. Se representa la ventana completa, no dedicación diaria continua. Regla original: Una actividad por ocurrencia (anual), ejecutada dentro de una quincena; 2 actividad(es) por ocurrencia. D-34: 4.3.3 → 8.4.3, FC. Inicio contractual por mes 21; la tabla diaria y la ventana mensual se conservan aunque no fijan un corte diario compatible. El SOC 8.1.5 empieza en mes 13 como excepción explícita. D-34: vínculo documental NO activado en Antecesores porque la ventana nominal publicada lo contradice. Se conservan las fechas del escenario histórico; no es una red recalculada. Responsable del paquete: SRE.",
272,"    8.4.4 Actualizaciones semestrales del depósito de custodia de fuentes durante los 36 meses de operación",2/10/28,30/9/31,782,0,0,1,,,8.4.4,,,#387C9C,"Escenario nominal histórico anterior a la reestimación. Mes 1: febrero de 2027. Calendario gráfico: lunes a viernes, sin descontar feriados. Duración de la barra: días hábiles de la ventana, no HH de esfuerzo. Fuente de ventana: T-15, tabla Actividades de los paquetes de esfuerzo continuo, meses 21–56. Se representa la ventana completa, no dedicación diaria continua. Regla original: Una actividad por ocurrencia (semestral), ejecutada dentro de una quincena; 1 actividad(es) por ocurrencia. D-34: 4.3.3 → 8.4.4, FC. Inicio contractual por mes 21; la tabla diaria y la ventana mensual se conservan aunque no fijan un corte diario compatible. El SOC 8.1.5 empieza en mes 13 como excepción explícita. D-34: vínculo documental NO activado en Antecesores porque la ventana nominal publicada lo contradice. Se conservan las fechas del escenario histórico; no es una red recalculada. Responsable del paquete: JP.",
273,"  8.5 Capacitación y transferencia en operación",2/10/28,30/9/31,782,0,0,1,,,8.5,,,#387C9C,"Escenario nominal histórico anterior a la reestimación. Mes 1: febrero de 2027. Calendario gráfico: lunes a viernes, sin descontar feriados. Duración de la barra: días hábiles de la ventana, no HH de esfuerzo. Tarea resumen; fechas derivadas del primer y último paquete o hito descendiente.",
274,"    8.5.1 Dos jornadas anuales de actualización y capacitación del personal nuevo durante los 36 meses de operación",2/10/28,30/9/31,782,0,0,1,,,8.5.1,,,#387C9C,"Escenario nominal histórico anterior a la reestimación. Mes 1: febrero de 2027. Calendario gráfico: lunes a viernes, sin descontar feriados. Duración de la barra: días hábiles de la ventana, no HH de esfuerzo. Fuente de ventana: T-15, tabla Actividades de los paquetes de esfuerzo continuo, meses 21–56. Se representa la ventana completa, no dedicación diaria continua. Regla original: Una actividad por ocurrencia (dos jornadas por año), ejecutada dentro de una quincena; 3 actividad(es) por ocurrencia. D-34: 4.3.3 → 8.5.1, FC. Inicio contractual por mes 21; la tabla diaria y la ventana mensual se conservan aunque no fijan un corte diario compatible. El SOC 8.1.5 empieza en mes 13 como excepción explícita. D-34: vínculo documental NO activado en Antecesores porque la ventana nominal publicada lo contradice. Se conservan las fechas del escenario histórico; no es una red recalculada. Responsable del paquete: IMP.",
275,"    8.5.2 Mentoría al equipo técnico del CLIENTE durante los seis meses posteriores al mes 21",2/10/28,30/4/29,151,0,0,1,,,8.5.2,,,#387C9C,"Escenario nominal histórico anterior a la reestimación. Mes 1: febrero de 2027. Calendario gráfico: lunes a viernes, sin descontar feriados. Duración de la barra: días hábiles de la ventana, no HH de esfuerzo. Fuente de ventana: T-15, tabla Actividades de los paquetes de esfuerzo continuo, meses 21–27. Se representa la ventana completa, no dedicación diaria continua. Regla original: Una actividad cada 2 quincenas, por presencia continua o periódica. D-34: 4.3.3 → 8.5.2, FC. Inicio contractual por mes 21; la tabla diaria y la ventana mensual se conservan aunque no fijan un corte diario compatible. El SOC 8.1.5 empieza en mes 13 como excepción explícita. D-34: vínculo documental NO activado en Antecesores porque la ventana nominal publicada lo contradice. Se conservan las fechas del escenario histórico; no es una red recalculada. Responsable del paquete: IMP.",
276,"    8.5.3 Mantenimiento de la base de conocimiento durante los 36 meses de operación, con métricas de uso",2/10/28,30/9/31,782,0,0,1,,,8.5.3,,,#387C9C,"Escenario nominal histórico anterior a la reestimación. Mes 1: febrero de 2027. Calendario gráfico: lunes a viernes, sin descontar feriados. Duración de la barra: días hábiles de la ventana, no HH de esfuerzo. Fuente de ventana: T-15, tabla Actividades de los paquetes de esfuerzo continuo, meses 21–56. Se representa la ventana completa, no dedicación diaria continua. Regla original: Una actividad de nivel de esfuerzo por quincena. D-34: 4.3.3 → 8.5.3, FC. Inicio contractual por mes 21; la tabla diaria y la ventana mensual se conservan aunque no fijan un corte diario compatible. El SOC 8.1.5 empieza en mes 13 como excepción explícita. D-34: vínculo documental NO activado en Antecesores porque la ventana nominal publicada lo contradice. Se conservan las fechas del escenario histórico; no es una red recalculada. Responsable del paquete: SRE.",
277,9 Cierre,2/10/28,30/9/31,782,0,0,1,,,9,,,#666666,"Escenario nominal histórico anterior a la reestimación. Mes 1: febrero de 2027. Calendario gráfico: lunes a viernes, sin descontar feriados. Duración de la barra: días hábiles de la ventana, no HH de esfuerzo. Tarea resumen; fechas derivadas del primer y último paquete o hito descendiente.",
278,"  9.1 Cierre de la implementación",2/10/28,10/10/28,7,0,0,1,,,9.1,,,#666666,"Escenario nominal histórico anterior a la reestimación. Mes 1: febrero de 2027. Calendario gráfico: lunes a viernes, sin descontar feriados. Duración de la barra: días hábiles de la ventana, no HH de esfuerzo. Tarea resumen; fechas derivadas del primer y último paquete o hito descendiente.",
279,"    9.1.1 Entrega del código fuente, la infraestructura como código y los procedimientos de despliegue",2/10/28,10/10/28,7,0,0,1,,,9.1.1,,,#666666,"Escenario nominal histórico anterior a la reestimación. Mes 1: febrero de 2027. Calendario gráfico: lunes a viernes, sin descontar feriados. Duración de la barra: días hábiles de la ventana, no HH de esfuerzo. Fuente de fechas: T-15, tabla Programación de los paquetes con entregable, paquete 9.1.1. Fechas publicadas: 02-10-2028 a 10-10-2028. Predecesoras agregadas publicadas: —. D-34: 4.3.3 → 9.1.1, FC. Inicio contractual por mes 21; la tabla diaria y la ventana mensual se conservan aunque no fijan un corte diario compatible. El SOC 8.1.5 empieza en mes 13 como excepción explícita. D-34: vínculo documental NO activado en Antecesores porque la ventana nominal publicada lo contradice. Se conservan las fechas del escenario histórico; no es una red recalculada. Responsable del paquete: DES.",
280,"    9.1.2 Informe de lecciones aprendidas y archivo de la implementación",2/10/28,10/10/28,7,0,0,1,,,9.1.2,,,#666666,"Escenario nominal histórico anterior a la reestimación. Mes 1: febrero de 2027. Calendario gráfico: lunes a viernes, sin descontar feriados. Duración de la barra: días hábiles de la ventana, no HH de esfuerzo. Fuente de fechas: T-15, tabla Programación de los paquetes con entregable, paquete 9.1.2. Fechas publicadas: 02-10-2028 a 10-10-2028. Predecesoras agregadas publicadas: —. D-34: 4.3.3 → 9.1.2, FC. Inicio contractual por mes 21; la tabla diaria y la ventana mensual se conservan aunque no fijan un corte diario compatible. El SOC 8.1.5 empieza en mes 13 como excepción explícita. D-34: vínculo documental NO activado en Antecesores porque la ventana nominal publicada lo contradice. Se conservan las fechas del escenario histórico; no es una red recalculada. Responsable del paquete: JP.",
281,"  9.2 Salida al término del contrato",1/7/31,30/9/31,66,0,0,1,,,9.2,,,#666666,"Escenario nominal histórico anterior a la reestimación. Mes 1: febrero de 2027. Calendario gráfico: lunes a viernes, sin descontar feriados. Duración de la barra: días hábiles de la ventana, no HH de esfuerzo. Tarea resumen; fechas derivadas del primer y último paquete o hito descendiente.",
282,"    9.2.1 Ejecución del Plan de Reversibilidad y acompañamiento de 90 días",1/7/31,30/9/31,66,0,0,1,,,9.2.1,,,#666666,"Escenario nominal histórico anterior a la reestimación. Mes 1: febrero de 2027. Calendario gráfico: lunes a viernes, sin descontar feriados. Duración de la barra: días hábiles de la ventana, no HH de esfuerzo. Fuente de ventana: T-15, tabla Actividades de los paquetes de esfuerzo continuo, meses 54–56. Se representa la ventana completa, no dedicación diaria continua. Regla original: Una actividad por quincena, por presencia continua o periódica. Responsable del paquete: JP.",
283,"    9.2.2 Certificado de devolución o eliminación de datos personales",1/9/31,9/9/31,7,0,0,1,,,9.2.2,,,#666666,"Escenario nominal histórico anterior a la reestimación. Mes 1: febrero de 2027. Calendario gráfico: lunes a viernes, sin descontar feriados. Duración de la barra: días hábiles de la ventana, no HH de esfuerzo. Fuente de fechas: T-15, tabla Programación de los paquetes con entregable, paquete 9.2.2. Fechas publicadas: 01-09-2031 a 09-09-2031. Predecesoras agregadas publicadas: —. Responsable del paquete: SEG.",
284,Hitos contractuales H1–H12,31/3/27,31/10/28,415,0,0,1,,,10,,,#D0A020,"Escenario nominal histórico anterior a la reestimación. Mes 1: febrero de 2027. Calendario gráfico: lunes a viernes, sin descontar feriados. Duración de la barra: días hábiles de la ventana, no HH de esfuerzo. Tarea resumen; fechas derivadas del primer y último paquete o hito descendiente.",
285,"  H1 — Línea base de alcance y matriz de trazabilidad",31/3/27,31/3/27,0,0,0,1,,6-FS>P0D;9-FS>P0D,10.1,,,#D0A020,"Escenario nominal histórico anterior a la reestimación. Mes 1: febrero de 2027. Calendario gráfico: lunes a viernes, sin descontar feriados. Duración de la barra: días hábiles de la ventana, no HH de esfuerzo. Formulario E-25 y SD7, tabla de hitos: H1, mes 2. Ubicación gráfica convencional: último día hábil del mes; no constituye una fecha diaria contractual confirmada. Paquetes: 1.2.1, 1.2.4. Hito-H1: 1.2.1 → 10.1, FC. Hito-H1: 1.2.4 → 10.1, FC. Responsable del paquete: JP. Antecesores con restricción mínima (>) para conservar los huecos del escenario nominal; no se agregaron desfases ni reservas calculadas.",
286,"  H2 — Arquitectura, plan de seguridad y modelo de datos aprobados",31/5/27,31/5/27,0,0,0,1,,61-FS>P0D,10.2,,,#D0A020,"Escenario nominal histórico anterior a la reestimación. Mes 1: febrero de 2027. Calendario gráfico: lunes a viernes, sin descontar feriados. Duración de la barra: días hábiles de la ventana, no HH de esfuerzo. Formulario E-25 y SD7, tabla de hitos: H2, mes 4. Ubicación gráfica convencional: último día hábil del mes; no constituye una fecha diaria contractual confirmada. Paquetes: 2.4.1. Hito-H2: 2.4.1 → 10.2, FC. Responsable del paquete: JP. Antecesores con restricción mínima (>) para conservar los huecos del escenario nominal; no se agregaron desfases ni reservas calculadas.",
287,"  H3 — Infraestructura híbrida y ambientes con observabilidad",30/7/27,30/7/27,0,0,0,1,,72-FS>P0D;73-FS>P0D;74-FS>P0D;76-FS>P0D;227-FS>P0D,10.3,,,#D0A020,"Escenario nominal histórico anterior a la reestimación. Mes 1: febrero de 2027. Calendario gráfico: lunes a viernes, sin descontar feriados. Duración de la barra: días hábiles de la ventana, no HH de esfuerzo. Formulario E-25 y SD7, tabla de hitos: H3, mes 6. Ubicación gráfica convencional: último día hábil del mes; no constituye una fecha diaria contractual confirmada. Paquetes: 3.1.1, 3.1.2, 3.1.3, 3.1.5. Hito-H3: 3.1.1 → 10.3, FC. Hito-H3: 3.1.2 → 10.3, FC. Hito-H3: 3.1.3 → 10.3, FC. Hito-H3: 3.1.5 → 10.3, FC. D-13: 6.6.3 → 10.3, FC. Responsable del paquete: JP. Antecesores con restricción mínima (>) para conservar los huecos del escenario nominal; no se agregaron desfases ni reservas calculadas.",
288,"  H4 — Software de la Etapa 1 con QA superado",30/11/27,30/11/27,0,0,0,1,,122-FS>P0D,10.4,,,#D0A020,"Escenario nominal histórico anterior a la reestimación. Mes 1: febrero de 2027. Calendario gráfico: lunes a viernes, sin descontar feriados. Duración de la barra: días hábiles de la ventana, no HH de esfuerzo. Formulario E-25 y SD7, tabla de hitos: H4, mes 10. Ubicación gráfica convencional: último día hábil del mes; no constituye una fecha diaria contractual confirmada. Paquetes: 3.8.1. Hito-H4: 3.8.1 → 10.4, FC. Responsable del paquete: JP. Antecesores con restricción mínima (>) para conservar los huecos del escenario nominal; no se agregaron desfases ni reservas calculadas.",
289,"  H5 — Certificación de la Etapa 1",31/1/28,31/1/28,0,0,0,1,,128-FS>P0D,10.5,,,#D0A020,"Escenario nominal histórico anterior a la reestimación. Mes 1: febrero de 2027. Calendario gráfico: lunes a viernes, sin descontar feriados. Duración de la barra: días hábiles de la ventana, no HH de esfuerzo. Formulario E-25 y SD7, tabla de hitos: H5, mes 12. Ubicación gráfica convencional: último día hábil del mes; no constituye una fecha diaria contractual confirmada. Paquetes: 3.8.7. Hito-H5: 3.8.7 → 10.5, FC. Responsable del paquete: JP. Antecesores con restricción mínima (>) para conservar los huecos del escenario nominal; no se agregaron desfases ni reservas calculadas.",
290,"  H6 — Inicio de la marcha blanca de la Etapa 1",1/2/28,1/2/28,0,0,0,1,,171-SS>P0D,10.6,,,#D0A020,"Escenario nominal histórico anterior a la reestimación. Mes 1: febrero de 2027. Calendario gráfico: lunes a viernes, sin descontar feriados. Duración de la barra: días hábiles de la ventana, no HH de esfuerzo. Formulario E-25 y SD7, tabla de hitos: H6, mes 13. Ubicación gráfica convencional: primer día hábil del mes; no constituye una fecha diaria contractual confirmada. Paquetes: 4.2.1. Hito-H6: 4.2.1 → 10.6, CC. Responsable del paquete: JP. Antecesores con restricción mínima (>) para conservar los huecos del escenario nominal; no se agregaron desfases ni reservas calculadas.",
291,"  H8 — Línea base y diseño de la Etapa 2",31/3/28,31/3/28,0,0,0,1,,10-FS>P0D;62-FS>P0D,10.7,,,#D0A020,"Escenario nominal histórico anterior a la reestimación. Mes 1: febrero de 2027. Calendario gráfico: lunes a viernes, sin descontar feriados. Duración de la barra: días hábiles de la ventana, no HH de esfuerzo. Formulario E-25 y SD7, tabla de hitos: H8, mes 14. Ubicación gráfica convencional: último día hábil del mes; no constituye una fecha diaria contractual confirmada. Paquetes: 1.2.5, 2.4.2. Hito-H8: 1.2.5 → 10.7, FC. Hito-H8: 2.4.2 → 10.7, FC. Responsable del paquete: JP. Antecesores con restricción mínima (>) para conservar los huecos del escenario nominal; no se agregaron desfases ni reservas calculadas.",
292,"  H7 — Paso a producción de la Etapa 1",31/5/28,31/5/28,0,0,0,1,,173-FS>P0D,10.8,,,#D0A020,"Escenario nominal histórico anterior a la reestimación. Mes 1: febrero de 2027. Calendario gráfico: lunes a viernes, sin descontar feriados. Duración de la barra: días hábiles de la ventana, no HH de esfuerzo. Formulario E-25 y SD7, tabla de hitos: H7, mes 16. Ubicación gráfica convencional: último día hábil del mes; no constituye una fecha diaria contractual confirmada. Paquetes: 4.2.3. Hito-H7: 4.2.3 → 10.8, FC. Responsable del paquete: JP. Antecesores con restricción mínima (>) para conservar los huecos del escenario nominal; no se agregaron desfases ni reservas calculadas.",
293,"  H9 — Software de la Etapa 2 con QA superado",30/6/28,30/6/28,0,0,0,1,,131-FS>P0D,10.9,,,#D0A020,"Escenario nominal histórico anterior a la reestimación. Mes 1: febrero de 2027. Calendario gráfico: lunes a viernes, sin descontar feriados. Duración de la barra: días hábiles de la ventana, no HH de esfuerzo. Formulario E-25 y SD7, tabla de hitos: H9, mes 17. Ubicación gráfica convencional: último día hábil del mes; no constituye una fecha diaria contractual confirmada. Paquetes: 3.9.1. Hito-H9: 3.9.1 → 10.9, FC. Responsable del paquete: JP. Antecesores con restricción mínima (>) para conservar los huecos del escenario nominal; no se agregaron desfases ni reservas calculadas.",
294,"  H10 — Certificación de la Etapa 2",31/7/28,31/7/28,0,0,0,1,,136-FS>P0D,10.10,,,#D0A020,"Escenario nominal histórico anterior a la reestimación. Mes 1: febrero de 2027. Calendario gráfico: lunes a viernes, sin descontar feriados. Duración de la barra: días hábiles de la ventana, no HH de esfuerzo. Formulario E-25 y SD7, tabla de hitos: H10, mes 18. Ubicación gráfica convencional: último día hábil del mes; no constituye una fecha diaria contractual confirmada. Paquetes: 3.9.6. Hito-H10: 3.9.6 → 10.10, FC. Responsable del paquete: JP. Antecesores con restricción mínima (>) para conservar los huecos del escenario nominal; no se agregaron desfases ni reservas calculadas.",
295,"  H11 — Inicio de la marcha blanca de la Etapa 2",1/8/28,1/8/28,0,0,0,1,,175-SS>P0D,10.11,,,#D0A020,"Escenario nominal histórico anterior a la reestimación. Mes 1: febrero de 2027. Calendario gráfico: lunes a viernes, sin descontar feriados. Duración de la barra: días hábiles de la ventana, no HH de esfuerzo. Formulario E-25 y SD7, tabla de hitos: H11, mes 19. Ubicación gráfica convencional: primer día hábil del mes; no constituye una fecha diaria contractual confirmada. Paquetes: 4.3.1. Hito-H11: 4.3.1 → 10.11, CC. Responsable del paquete: JP. Antecesores con restricción mínima (>) para conservar los huecos del escenario nominal; no se agregaron desfases ni reservas calculadas.",
296,"  H12 — Paso a producción de la Etapa 2 y aceptación final",31/10/28,31/10/28,0,0,0,1,,177-FS>P0D;178-FS>P0D,10.12,,,#D0A020,"Escenario nominal histórico anterior a la reestimación. Mes 1: febrero de 2027. Calendario gráfico: lunes a viernes, sin descontar feriados. Duración de la barra: días hábiles de la ventana, no HH de esfuerzo. Formulario E-25 y SD7, tabla de hitos: H12, mes 21. Ubicación gráfica convencional: último día hábil del mes; no constituye una fecha diaria contractual confirmada. Paquetes: 4.3.3, 4.3.4. Hito-H12: 4.3.3 → 10.12, FC. Hito-H12: 4.3.4 → 10.12, FC. Responsable del paquete: JP. Antecesores con restricción mínima (>) para conservar los huecos del escenario nominal; no se agregaron desfases ni reservas calculadas.",
