| id | name | start | end | duration | duration_gantt | order | attributes | milestone |
| --- | --- | --- | --- | --- | --- | --- | --- | --- |
| 1 | 1.1.1 Acta de constitución del proyecto, firmada con la Contraparte Técnica | 2027-02-01 | 2027-02-09 | 7 | 7 | 0 | 1 1.1.1 Acta de constitución del proyecto, firmada con la Contraparte Técnica #4472c4 false 2027-02-01 7 0 true |  |
| 2 | 1.1.2 Documento de validación con el CLIENTE de los problemas y metas del proyecto | 2027-02-01 | 2027-02-09 | 7 | 7 | 1 | 2 1.1.2 Documento de validación con el CLIENTE de los problemas y metas del proyecto #4472c4 false 2027-02-01 7 0 true |  |
| 3 | 1.1.3 Acta de confirmaciones iniciales con el CLIENTE (inicio, lácteos, ventanas y acuse tributario) | 2027-02-01 | 2027-02-09 | 7 | 7 | 2 | 3 1.1.3 Acta de confirmaciones iniciales con el CLIENTE (inicio, lácteos, ventanas y acuse tributario) #4472c4 false 2027-02-01 7 0 true |  |
| 4 | 1.3.1 Registro de interesados con su influencia, interés y estrategia | 2027-02-01 | 2027-02-09 | 7 | 7 | 3 | 4 1.3.1 Registro de interesados con su influencia, interés y estrategia #4472c4 false 2027-02-01 7 0 true |  |
| 5 | 1.3.2 Plan de comunicaciones con calendario y canales por grupo de interés | 2027-02-01 | 2027-02-09 | 7 | 7 | 4 | 5 1.3.2 Plan de comunicaciones con calendario y canales por grupo de interés #4472c4 false 2027-02-01 7 0 true |  |
| 6 | 1.8.1 Matriz de cumplimiento normativo por obligación legal, con su control y su evidencia | 2027-02-01 | 2027-02-09 | 7 | 7 | 5 | 6 1.8.1 Matriz de cumplimiento normativo por obligación legal, con su control y su evidencia #4472c4 false 2027-02-01 7 0 true |  |
| 7 | 1.8.2 Acuerdo de tratamiento de datos personales con el CLIENTE | 2027-02-01 | 2027-02-09 | 7 | 7 | 6 | 7 1.8.2 Acuerdo de tratamiento de datos personales con el CLIENTE #4472c4 false 2027-02-01 7 0 true |  |
| 8 | 2.1.1 Documento de especificación de requerimientos y línea base de alcance de la Etapa 1 (H1) | 2027-02-01 | 2027-02-09 | 7 | 7 | 7 | 8 2.1.1 Documento de especificación de requerimientos y línea base de alcance de la Etapa 1 (H1) #4472c4 false 2027-02-01 7 0 true |  |
| 9 | 2.1.5 Especificación de interfaces heredadas y perfil de intercambio con cadenas | 2027-02-01 | 2027-02-09 | 7 | 7 | 8 | 9 2.1.5 Especificación de interfaces heredadas y perfil de intercambio con cadenas #4472c4 false 2027-02-01 7 0 true |  |
| 10 | 2.4.1 Plano de la sala técnica de Talca, con su cálculo eléctrico y térmico | 2027-02-01 | 2027-02-26 | 20 | 20 | 9 | 10 2.4.1 Plano de la sala técnica de Talca, con su cálculo eléctrico y térmico #4472c4 false 2027-02-01 20 0 true |  |
| 11 | 2.4.2 Plano de distribución de los racks R01 de servidores y R02 de comunicaciones | 2027-02-01 | 2027-02-26 | 20 | 20 | 10 | 11 2.4.2 Plano de distribución de los racks R01 de servidores y R02 de comunicaciones #4472c4 false 2027-02-01 20 0 true |  |
| 12 | 8.1.4 Especificación y compra del sistema de cadena de frío | 2027-02-01 | 2027-03-31 | 42 | 42 | 11 | 12 8.1.4 Especificación y compra del sistema de cadena de frío #946100 false 2027-02-01 42 0 true |  |
| 13 | 2.1.4 Captura de reglas de ruteo | 2027-02-01 | 2027-04-30 | 64 | 64 | 12 | 13 2.1.4 Captura de reglas de ruteo #4472c4 false 2027-02-01 64 0 true |  |
| 14 | Etapa 1 · Desarrollo (meses 1 a 12) | 2027-02-01 | 2028-01-31 | 252 | 253 | 13 | 14 Etapa 1 · Desarrollo (meses 1 a 12) #4472c4 false 2027-02-01 253 0 true |  |
| 15 | Especificación de equipos de frío disponible | 2027-02-01 | 2027-02-01 | 0 | 0 | 14 | 15 Especificación de equipos de frío disponible #404040 true 2027-02-01 0 0 true | True |
| 16 | Inicio contractual (supuesto V-12) | 2027-02-01 | 2027-02-01 | 0 | 0 | 15 | 16 Inicio contractual (supuesto V-12) #404040 true 2027-02-01 0 0 true | True |
| 17 | 1.2.1 Plan para la dirección del proyecto y calendario de congelamientos | 2027-02-10 | 2027-02-18 | 7 | 7 | 16 | 17 1.2.1 Plan para la dirección del proyecto y calendario de congelamientos #4472c4 false 2027-02-10 7 0 true |  |
| 18 | 1.2.2 EDT y diccionario de la EDT (línea base del alcance) | 2027-03-01 | 2027-03-09 | 7 | 7 | 17 | 18 1.2.2 EDT y diccionario de la EDT (línea base del alcance) #4472c4 false 2027-03-01 7 0 true |  |
| 19 | 1.2.3 Carta Gantt de 56 meses con los hitos H1 a H12 y la ruta crítica | 2027-03-01 | 2027-03-09 | 7 | 7 | 18 | 19 1.2.3 Carta Gantt de 56 meses con los hitos H1 a H12 y la ruta crítica #4472c4 false 2027-03-01 7 0 true |  |
| 20 | 1.2.4 Documento de nivelación de recursos y frentes de solapamiento | 2027-03-01 | 2027-03-09 | 7 | 7 | 19 | 20 1.2.4 Documento de nivelación de recursos y frentes de solapamiento #4472c4 false 2027-03-01 7 0 true |  |
| 21 | 1.4.1 Plan de calidad y plan de pruebas | 2027-03-01 | 2027-03-09 | 7 | 7 | 20 | 21 1.4.1 Plan de calidad y plan de pruebas #4472c4 false 2027-03-01 7 0 true |  |
| 22 | 1.5.1 Plan de riesgos y registro inicial de riesgos según ISO 31000 | 2027-03-01 | 2027-03-09 | 7 | 7 | 21 | 22 1.5.1 Plan de riesgos y registro inicial de riesgos según ISO 31000 #4472c4 false 2027-03-01 7 0 true |  |
| 23 | 1.8.3 Registro de actividades de tratamiento y evaluación de impacto en protección de datos | 2027-03-01 | 2027-03-09 | 7 | 7 | 22 | 23 1.8.3 Registro de actividades de tratamiento y evaluación de impacto en protección de datos #4472c4 false 2027-03-01 7 0 true |  |
| 24 | 2.1.3 Matriz de trazabilidad: requerimiento, módulo, paquete y prueba (H1) | 2027-03-01 | 2027-03-09 | 7 | 7 | 23 | 24 2.1.3 Matriz de trazabilidad: requerimiento, módulo, paquete y prueba (H1) #4472c4 false 2027-03-01 7 0 true |  |
| 25 | 2.2.1 Documento de arquitectura lógica: capas, módulos M1 a M12 e interfaces | 2027-03-01 | 2027-03-29 | 20 | 20 | 24 | 25 2.2.1 Documento de arquitectura lógica: capas, módulos M1 a M12 e interfaces #4472c4 false 2027-03-01 20 0 true |  |
| 26 | 2.2.2 Documento de arquitectura física híbrida | 2027-03-01 | 2027-03-29 | 20 | 20 | 25 | 26 2.2.2 Documento de arquitectura física híbrida #4472c4 false 2027-03-01 20 0 true |  |
| 27 | 2.2.3 Modelo de datos y diccionario de datos, con la trazabilidad por lote | 2027-03-01 | 2027-03-29 | 20 | 20 | 26 | 27 2.2.3 Modelo de datos y diccionario de datos, con la trazabilidad por lote #4472c4 false 2027-03-01 20 0 true |  |
| 28 | 2.3.1 Plan de seguridad de la información | 2027-03-01 | 2027-03-29 | 20 | 20 | 27 | 28 2.3.1 Plan de seguridad de la información #4472c4 false 2027-03-01 20 0 true |  |
| 29 | 2.3.4 Matriz de clasificación de la información y matriz de controles | 2027-03-01 | 2027-03-29 | 20 | 20 | 28 | 29 2.3.4 Matriz de clasificación de la información y matriz de controles #4472c4 false 2027-03-01 20 0 true |  |
| 30 | 2.6.1 Informe de investigación con usuarios de terreno | 2027-03-01 | 2027-03-29 | 20 | 20 | 29 | 30 2.6.1 Informe de investigación con usuarios de terreno #4472c4 false 2027-03-01 20 0 true |  |
| 31 | 7.2.1 Innovación 2: informe de medición inicial y contrato de evidencia (INN-02.P1) | 2027-03-01 | 2027-04-20 | 36 | 36 | 30 | 31 7.2.1 Innovación 2: informe de medición inicial y contrato de evidencia (INN-02.P1) #4472c4 false 2027-03-01 36 0 true |  |
| 32 | 8.1.1 Especificación de compra de equipos de uso para el CLIENTE | 2027-03-01 | 2027-03-09 | 7 | 7 | 31 | 32 8.1.1 Especificación de compra de equipos de uso para el CLIENTE #4472c4 false 2027-03-01 7 0 true |  |
| 33 | 8.2.1 Contrato de los servicios de AWS | 2027-03-01 | 2027-03-09 | 7 | 7 | 32 | 33 8.2.1 Contrato de los servicios de AWS #4472c4 false 2027-03-01 7 0 true |  |
| 34 | 8.2.7 Contrato de SIM M2M y servicio satelital de los camiones con frío | 2027-03-01 | 2027-03-12 | 10 | 10 | 33 | 34 8.2.7 Contrato de SIM M2M y servicio satelital de los camiones con frío #4472c4 false 2027-03-01 10 0 true |  |
| 35 | 9.6.3 Diagnóstico del impacto organizacional por área y perfil, con agentes de cambio | 2027-03-01 | 2027-05-25 | 60 | 60 | 34 | 35 9.6.3 Diagnóstico del impacto organizacional por área y perfil, con agentes de cambio #4472c4 false 2027-03-01 60 0 true |  |
| 36 | 2.4.3 Plano de los gabinetes de borde de Concepción y de las plataformas de cross-docking | 2027-03-02 | 2027-03-29 | 19 | 19 | 35 | 36 2.4.3 Plano de los gabinetes de borde de Concepción y de las plataformas de cross-docking #4472c4 false 2027-03-02 19 0 true |  |
| 37 | 8.1.2 Especificación y compra de la sala técnica, los racks, los servidores y los gabinetes de borde | 2027-03-02 | 2027-03-10 | 7 | 7 | 36 | 37 8.1.2 Especificación y compra de la sala técnica, los racks, los servidores y los gabinetes de borde #4472c4 false 2027-03-02 7 0 true |  |
| 38 | H1 · Entrega de expediente | 2027-03-09 | 2027-03-09 | 0 | 0 | 37 | 38 H1 · Entrega de expediente #404040 true 2027-03-09 0 0 true | True |
| 39 | H1 · Revisión de la Contraparte (10 días hábiles) | 2027-03-10 | 2027-03-23 | 10 | 10 | 38 | 39 H1 · Revisión de la Contraparte (10 días hábiles) #4472c4 false 2027-03-10 10 0 true |  |
| 40 | H1 · Firma del acta | 2027-03-23 | 2027-03-23 | 0 | 0 | 39 | 40 H1 · Firma del acta #404040 true 2027-03-23 0 0 true | True |
| 41 | 1.6.1 Plan de Reversibilidad inicial | 2027-04-01 | 2027-04-09 | 7 | 7 | 40 | 41 1.6.1 Plan de Reversibilidad inicial #4472c4 false 2027-04-01 7 0 true |  |
| 42 | 2.3.3 Plan de respuesta a incidentes de seguridad | 2027-04-01 | 2027-04-16 | 12 | 12 | 41 | 42 2.3.3 Plan de respuesta a incidentes de seguridad #4472c4 false 2027-04-01 12 0 true |  |
| 43 | 2.5.1 Plan de continuidad del negocio (ISO 22301) y análisis de impacto | 2027-04-01 | 2027-04-29 | 21 | 21 | 42 | 43 2.5.1 Plan de continuidad del negocio (ISO 22301) y análisis de impacto #4472c4 false 2027-04-01 21 0 true |  |
| 44 | 2.5.2 Plan de continuidad TIC según ISO/IEC 27031 y plan de recuperación ante desastres | 2027-04-01 | 2027-04-29 | 21 | 21 | 43 | 44 2.5.2 Plan de continuidad TIC según ISO/IEC 27031 y plan de recuperación ante desastres #4472c4 false 2027-04-01 21 0 true |  |
| 45 | 2.6.2 Prototipos y pruebas de usabilidad con participantes del CLIENTE | 2027-04-01 | 2027-04-29 | 21 | 21 | 44 | 45 2.6.2 Prototipos y pruebas de usabilidad con participantes del CLIENTE #4472c4 false 2027-04-01 21 0 true |  |
| 46 | 2.7.1 Informe de validación del kit de cadena de frío en banco de pruebas | 2027-04-01 | 2027-04-30 | 22 | 22 | 45 | 46 2.7.1 Informe de validación del kit de cadena de frío en banco de pruebas #946100 false 2027-04-01 22 0 true |  |
| 47 | 7.2.2 Innovación 2: circuito mínimo de reproducción en la preventa (INN-02.P2) | 2027-04-01 | 2027-06-09 | 49 | 49 | 46 | 47 7.2.2 Innovación 2: circuito mínimo de reproducción en la preventa (INN-02.P2) #4472c4 false 2027-04-01 49 0 true |  |
| 48 | 7.3.1 Innovación 3: documento de familias priorizadas y parámetros aprobados (INN-03.P1) | 2027-04-01 | 2027-06-09 | 49 | 49 | 47 | 48 7.3.1 Innovación 3: documento de familias priorizadas y parámetros aprobados (INN-03.P1) #4472c4 false 2027-04-01 49 0 true |  |
| 49 | 8.3.1 Piso técnico de la sala y recepción de obra civil de separación (BTT, cap. 6, RT-06.06, p. 15) | 2027-04-01 | 2027-04-20 | 14 | 14 | 48 | 49 8.3.1 Piso técnico de la sala y recepción de obra civil de separación (BTT, cap. 6, RT-06.06, p. 15) #4472c4 false 2027-04-01 14 0 true |  |
| 50 | 8.3.2 Sistema de energía de la sala instalado (UPS N+1, generador y PDU) | 2027-04-01 | 2027-04-20 | 14 | 14 | 49 | 50 8.3.2 Sistema de energía de la sala instalado (UPS N+1, generador y PDU) #4472c4 false 2027-04-01 14 0 true |  |
| 51 | 8.3.3 Hardware de climatización de precisión N+1 instalado | 2027-04-01 | 2027-04-20 | 14 | 14 | 50 | 51 8.3.3 Hardware de climatización de precisión N+1 instalado #4472c4 false 2027-04-01 14 0 true |  |
| 52 | 8.3.4 Hardware de detección temprana de incendio y extinción por agente limpio instalado | 2027-04-01 | 2027-04-20 | 14 | 14 | 51 | 52 8.3.4 Hardware de detección temprana de incendio y extinción por agente limpio instalado #4472c4 false 2027-04-01 14 0 true |  |
| 53 | 2.8.1 Acta de aprobación de la arquitectura, el plan de seguridad y el modelo de datos (H2) | 2027-04-19 | 2027-04-29 | 9 | 9 | 52 | 53 2.8.1 Acta de aprobación de la arquitectura, el plan de seguridad y el modelo de datos (H2) #4472c4 false 2027-04-19 9 0 true |  |
| 323 | 7.2.1 · Fin de referencia para la precedencia | 2027-04-20 | 2027-04-20 | 0 | 0 | 53 | 323 7.2.1 · Fin de referencia para la precedencia #404040 true 2027-04-20 0 0 true | True |
| 54 | H2 · Entrega de expediente | 2027-04-26 | 2027-04-26 | 0 | 0 | 54 | 54 H2 · Entrega de expediente #404040 true 2027-04-26 0 0 true | True |
| 55 | H2 · Evidencia disponible (2.8.1) | 2027-04-26 | 2027-04-26 | 0 | 0 | 55 | 55 H2 · Evidencia disponible (2.8.1) #404040 true 2027-04-26 0 0 true | True |
| 56 | H2 · Revisión de la Contraparte (10 días hábiles) | 2027-04-27 | 2027-05-10 | 10 | 10 | 56 | 56 H2 · Revisión de la Contraparte (10 días hábiles) #4472c4 false 2027-04-27 10 0 true |  |
| 57 | 2.8.1 · Cierre del paquete | 2027-04-29 | 2027-04-29 | 0 | 0 | 57 | 57 2.8.1 · Cierre del paquete #404040 true 2027-04-29 0 0 true | True |
| 58 | 2.6.3 Indicadores de usabilidad comprometidos por transacción crítica | 2027-05-03 | 2027-05-31 | 20 | 20 | 58 | 58 2.6.3 Indicadores de usabilidad comprometidos por transacción crítica #946100 false 2027-05-03 20 0 true |  |
| 59 | 2.7.2 Mapeo térmico por tipo de carrocería | 2027-05-03 | 2027-05-28 | 19 | 19 | 59 | 59 2.7.2 Mapeo térmico por tipo de carrocería #4472c4 false 2027-05-03 19 0 true |  |
| 60 | 3.1.4 Cadena de integración y entrega continua, e infraestructura como código | 2027-05-03 | 2027-05-31 | 20 | 20 | 60 | 60 3.1.4 Cadena de integración y entrega continua, e infraestructura como código #946100 false 2027-05-03 20 0 true |  |
| 61 | 3.2.1 Servicio de nube para la aplicación y los portales | 2027-05-03 | 2027-05-31 | 20 | 20 | 61 | 61 3.2.1 Servicio de nube para la aplicación y los portales #946100 false 2027-05-03 20 0 true |  |
| 62 | 3.2.2 Servicio de nube de base de datos, caché y mensajería | 2027-05-03 | 2027-05-31 | 20 | 20 | 62 | 62 3.2.2 Servicio de nube de base de datos, caché y mensajería #946100 false 2027-05-03 20 0 true |  |
| 63 | 3.2.3 Servicio de nube de ingesta de IoT, telemetría cruda y plataforma analítica | 2027-05-03 | 2027-05-31 | 20 | 20 | 63 | 63 3.2.3 Servicio de nube de ingesta de IoT, telemetría cruda y plataforma analítica #946100 false 2027-05-03 20 0 true |  |
| 64 | 3.2.4 Servicio de nube de respaldo inmutable y réplica entre regiones | 2027-05-03 | 2027-05-31 | 20 | 20 | 64 | 64 3.2.4 Servicio de nube de respaldo inmutable y réplica entre regiones #946100 false 2027-05-03 20 0 true |  |
| 65 | 3.2.5 Servicio de nube de seguridad y gobierno, y detección en endpoints | 2027-05-03 | 2027-05-31 | 20 | 20 | 65 | 65 3.2.5 Servicio de nube de seguridad y gobierno, y detección en endpoints #946100 false 2027-05-03 20 0 true |  |
| 66 | 8.2.2 Suscripción del servicio de gestión de dispositivos y de detección en endpoints | 2027-05-03 | 2027-05-11 | 7 | 7 | 66 | 66 8.2.2 Suscripción del servicio de gestión de dispositivos y de detección en endpoints #4472c4 false 2027-05-03 7 0 true |  |
| 67 | 8.2.4 Contrato de fibra óptica de los CD de Talca y Concepción | 2027-05-03 | 2027-05-11 | 7 | 7 | 67 | 67 8.2.4 Contrato de fibra óptica de los CD de Talca y Concepción #4472c4 false 2027-05-03 7 0 true |  |
| 68 | 8.2.5 Contrato de planes LTE con dos proveedores (ocho planes) | 2027-05-03 | 2027-05-11 | 7 | 7 | 68 | 68 8.2.5 Contrato de planes LTE con dos proveedores (ocho planes) #4472c4 false 2027-05-03 7 0 true |  |
| 69 | 8.2.6 Contrato de Starlink para los cinco sitios | 2027-05-03 | 2027-05-11 | 7 | 7 | 69 | 69 8.2.6 Contrato de Starlink para los cinco sitios #4472c4 false 2027-05-03 7 0 true |  |

| id | name | start | end | duration | duration_gantt | order | attributes | milestone |
| --- | --- | --- | --- | --- | --- | --- | --- | --- |
| 70 | 8.3.5 Acta de recepción técnica de la sala | 2027-05-03 | 2027-05-20 | 14 | 14 | 70 | 70 8.3.5 Acta de recepción técnica de la sala #946100 false 2027-05-03 14 0 true |  |
| 71 | 8.4.1 Cableado de cobre Cat6A y fibra OM4 tendido, con dos ductos de ingreso independientes | 2027-05-03 | 2027-05-20 | 14 | 14 | 71 | 71 8.4.1 Cableado de cobre Cat6A y fibra OM4 tendido, con dos ductos de ingreso independientes #4472c4 false 2027-05-03 14 0 true |  |
| 72 | 8.4.6 Gabinete de borde de Concepción montado | 2027-05-03 | 2027-05-20 | 14 | 14 | 72 | 72 8.4.6 Gabinete de borde de Concepción montado #4472c4 false 2027-05-03 14 0 true |  |
| 73 | H2 · Firma del acta | 2027-05-10 | 2027-05-10 | 0 | 0 | 73 | 73 H2 · Firma del acta #404040 true 2027-05-10 0 0 true | True |
| 74 | 8.2.3 Licencias de software de terceros constituidas a nombre del CLIENTE | 2027-05-11 | 2027-05-19 | 7 | 7 | 74 | 74 8.2.3 Licencias de software de terceros constituidas a nombre del CLIENTE #4472c4 false 2027-05-11 7 0 true |  |
| 75 | 3.1.4 · Habilitación de la cadena para QA | 2027-05-12 | 2027-05-12 | 0 | 0 | 75 | 75 3.1.4 · Habilitación de la cadena para QA #404040 true 2027-05-12 0 0 true | True |
| 76 | 8.4.4 Rack R01 de servidores montado y traslado del servidor ERP | 2027-05-24 | 2027-07-12 | 34 | 35 | 76 | 76 8.4.4 Rack R01 de servidores montado y traslado del servidor ERP #4472c4 false 2027-05-24 35 0 true |  |
| 77 | 8.4.5 Rack R02 de comunicaciones montado | 2027-05-24 | 2027-06-09 | 13 | 13 | 77 | 77 8.4.5 Rack R02 de comunicaciones montado #946100 false 2027-05-24 13 0 true |  |
| 78 | 3.1.4 · Cierre del paquete | 2027-05-31 | 2027-05-31 | 0 | 0 | 78 | 78 3.1.4 · Cierre del paquete #404040 true 2027-05-31 0 0 true | True |
| 79 | 3.1.1 Ambientes de Desarrollo y QA en la nube (H3) | 2027-06-01 | 2027-06-18 | 14 | 14 | 79 | 79 3.1.1 Ambientes de Desarrollo y QA en la nube (H3) #4472c4 false 2027-06-01 14 0 true |  |
| 80 | 3.1.2 Ambientes de Preproducción y Producción en la nube (H3) | 2027-06-01 | 2027-06-18 | 14 | 14 | 80 | 80 3.1.2 Ambientes de Preproducción y Producción en la nube (H3) #4472c4 false 2027-06-01 14 0 true |  |
| 81 | 3.1.3 Ambiente de recuperación ante desastres en la región secundaria (H3) | 2027-06-01 | 2027-06-18 | 14 | 14 | 81 | 81 3.1.3 Ambiente de recuperación ante desastres en la región secundaria (H3) #4472c4 false 2027-06-01 14 0 true |  |
| 82 | 3.1.5 Observabilidad de los doce módulos y de los sitios, con tableros para el CLIENTE (H3) | 2027-06-01 | 2027-06-18 | 14 | 14 | 82 | 82 3.1.5 Observabilidad de los doce módulos y de los sitios, con tableros para el CLIENTE (H3) #4472c4 false 2027-06-01 14 0 true |  |
| 83 | 3.2.6 Servicio de gestión de dispositivos móviles | 2027-06-01 | 2027-06-29 | 19 | 19 | 83 | 83 3.2.6 Servicio de gestión de dispositivos móviles #4472c4 false 2027-06-01 19 0 true |  |
| 84 | 3.3.1 Identidad y control de acceso (incluidos conductores externos) | 2027-06-01 | 2027-08-05 | 45 | 46 | 84 | 84 3.3.1 Identidad y control de acceso (incluidos conductores externos) #4472c4 false 2027-06-01 46 0 true |  |
| 85 | 3.3.2 Registro auditable de stock, lotes y cobros | 2027-06-01 | 2027-08-03 | 43 | 44 | 85 | 85 3.3.2 Registro auditable de stock, lotes y cobros #4472c4 false 2027-06-01 44 0 true |  |
| 86 | 5.1.1 Integración con el ERP como único emisor de la guía de despacho (INT-06 e INT-07) | 2027-06-01 | 2027-07-01 | 21 | 21 | 86 | 86 5.1.1 Integración con el ERP como único emisor de la guía de despacho (INT-06 e INT-07) #4472c4 false 2027-06-01 21 0 true |  |
| 87 | 5.1.2 Mecanismo de convivencia con el WMS de 2013 | 2027-06-01 | 2027-07-07 | 25 | 25 | 87 | 87 5.1.2 Mecanismo de convivencia con el WMS de 2013 #4472c4 false 2027-06-01 25 0 true |  |
| 88 | 7.2.3 Innovación 2: captura de evidencia en las aplicaciones de preventa, preparación y reparto (INN-02.P3) | 2027-06-01 | 2027-10-08 | 90 | 91 | 88 | 88 7.2.3 Innovación 2: captura de evidencia en las aplicaciones de preventa, preparación y reparto (INN-02.P3) #4472c4 false 2027-06-01 91 0 true |  |
| 89 | 8.1.3 Actas de recepción técnica de equipamiento de terreno e infraestructura | 2027-06-01 | 2027-06-09 | 7 | 7 | 89 | 89 8.1.3 Actas de recepción técnica de equipamiento de terreno e infraestructura #4472c4 false 2027-06-01 7 0 true |  |
| 90 | 8.5.1 Hardware de control de acceso biométrico y esclusa instalado | 2027-06-01 | 2027-06-18 | 14 | 14 | 90 | 90 8.5.1 Hardware de control de acceso biométrico y esclusa instalado #4472c4 false 2027-06-01 14 0 true |  |
| 91 | 3.3.3 Operación sin conexión: 14 horas en terreno y 24 horas en el CD | 2027-06-07 | 2027-08-03 | 39 | 40 | 91 | 91 3.3.3 Operación sin conexión: 14 horas en terreno y 24 horas en el CD #4472c4 false 2027-06-07 40 0 true |  |
| 92 | 7.3.2 Innovación 3: asociación lote–sensor en el borde y en el camión (INN-03.P2) | 2027-06-07 | 2027-09-20 | 72 | 73 | 92 | 92 7.3.2 Innovación 3: asociación lote–sensor en el borde y en el camión (INN-03.P2) #4472c4 false 2027-06-07 73 0 true |  |
| 93 | 8.5.2 Hardware de videovigilancia instalado | 2027-06-07 | 2027-06-24 | 13 | 13 | 93 | 93 8.5.2 Hardware de videovigilancia instalado #4472c4 false 2027-06-07 13 0 true |  |
| 324 | 7.2.2 · Fin de referencia para la precedencia | 2027-06-09 | 2027-06-09 | 0 | 0 | 94 | 324 7.2.2 · Fin de referencia para la precedencia #404040 true 2027-06-09 0 0 true | True |
| 325 | 7.3.1 · Fin de referencia para la precedencia | 2027-06-09 | 2027-06-09 | 0 | 0 | 95 | 325 7.3.1 · Fin de referencia para la precedencia #404040 true 2027-06-09 0 0 true | True |
| 94 | 8.4.4 · Rack R01 montado | 2027-06-09 | 2027-06-09 | 0 | 0 | 96 | 94 8.4.4 · Rack R01 montado #404040 true 2027-06-09 0 0 true | True |
| 95 | 4.1.1 Recepción de mercadería con captura de lote y vencimiento (M1 Recepción) | 2027-06-10 | 2027-08-05 | 38 | 39 | 97 | 95 4.1.1 Recepción de mercadería con captura de lote y vencimiento (M1 Recepción) #4472c4 false 2027-06-10 39 0 true |  |
| 96 | 4.1.2 Inventario por ubicación y lote, con FEFO y conteo cíclico (M2 Inventario) | 2027-06-10 | 2027-07-29 | 33 | 34 | 98 | 96 4.1.2 Inventario por ubicación y lote, con FEFO y conteo cíclico (M2 Inventario) #4472c4 false 2027-06-10 34 0 true |  |
| 97 | 4.3.1 Aplicación móvil de preventa sin conexión, con stock y crédito (M3 Preventa) | 2027-06-10 | 2027-08-04 | 37 | 38 | 99 | 97 4.3.1 Aplicación móvil de preventa sin conexión, con stock y crédito (M3 Preventa) #4472c4 false 2027-06-10 38 0 true |  |
| 98 | 5.1.3 Integración con la telemetría de los 42 camiones propios (INT-15) | 2027-06-10 | 2027-07-12 | 21 | 22 | 100 | 98 5.1.3 Integración con la telemetría de los 42 camiones propios (INT-15) #4472c4 false 2027-06-10 22 0 true |  |
| 99 | 8.7.1 Software de base instalado en los cinco sitios | 2027-06-10 | 2027-06-30 | 13 | 13 | 101 | 99 8.7.1 Software de base instalado en los cinco sitios #c00000 false 2027-06-10 13 0 true |  |
| 100 | 8.7.2 Enlaces de fibra, LTE y Starlink habilitados, con conmutación al respaldo | 2027-06-10 | 2027-06-30 | 13 | 13 | 102 | 100 8.7.2 Enlaces de fibra, LTE y Starlink habilitados, con conmutación al respaldo #c00000 false 2027-06-10 13 0 true |  |
| 101 | 8.7.3 Borde de los CD en servicio, con la prueba de autonomía de 24 horas aprobada | 2027-06-10 | 2027-06-18 | 7 | 7 | 103 | 101 8.7.3 Borde de los CD en servicio, con la prueba de autonomía de 24 horas aprobada #4472c4 false 2027-06-10 7 0 true |  |
| 289 | Seguimiento de construcción E1 · 15/06/2027 | 2027-06-15 | 2027-06-15 | 0 | 0 | 104 | 289 Seguimiento de construcción E1 · 15/06/2027 #404040 true 2027-06-15 0 0 true | True |
| 102 | 4.1.2 → 4.1.3 · Contrato de interfaz disponible | 2027-06-16 | 2027-06-16 | 0 | 0 | 105 | 102 4.1.2 → 4.1.3 · Contrato de interfaz disponible #404040 true 2027-06-16 0 0 true | True |
| 103 | 4.1.2 → 4.2.1 · Contrato de interfaz disponible | 2027-06-16 | 2027-06-16 | 0 | 0 | 106 | 103 4.1.2 → 4.2.1 · Contrato de interfaz disponible #404040 true 2027-06-16 0 0 true | True |
| 104 | 4.3.1 → 4.3.2 · Contrato de interfaz disponible | 2027-06-16 | 2027-06-16 | 0 | 0 | 107 | 104 4.3.1 → 4.3.2 · Contrato de interfaz disponible #404040 true 2027-06-16 0 0 true | True |
| 105 | 4.3.1 → 4.3.3 · Contrato de interfaz disponible | 2027-06-16 | 2027-06-16 | 0 | 0 | 108 | 105 4.3.1 → 4.3.3 · Contrato de interfaz disponible #404040 true 2027-06-16 0 0 true | True |
| 106 | 4.1.3 Preparación de pedidos en el turno de noche y en la cámara de congelado (M5 Preparación) | 2027-06-18 | 2027-08-05 | 32 | 33 | 109 | 106 4.1.3 Preparación de pedidos en el turno de noche y en la cámara de congelado (M5 Preparación) #4472c4 false 2027-06-18 33 0 true |  |
| 107 | 4.2.1 Cadena de frío, retención por SSCC y retiro sanitario (M9 Calidad y trazabilidad) | 2027-06-18 | 2027-08-24 | 45 | 46 | 110 | 107 4.2.1 Cadena de frío, retención por SSCC y retiro sanitario (M9 Calidad y trazabilidad) #4472c4 false 2027-06-18 46 0 true |  |
| 108 | 4.2.2 Ingesta de temperatura (M9) y posición de flota (M12) | 2027-06-18 | 2027-08-16 | 39 | 40 | 111 | 108 4.2.2 Ingesta de temperatura (M9) y posición de flota (M12) #4472c4 false 2027-06-18 40 0 true |  |
| 109 | 4.1.1 → 4.1.3 · Contrato de interfaz disponible | 2027-06-18 | 2027-06-18 | 0 | 0 | 112 | 109 4.1.1 → 4.1.3 · Contrato de interfaz disponible #404040 true 2027-06-18 0 0 true | True |
| 110 | 4.1.1 → 4.2.1 · Contrato de interfaz disponible | 2027-06-18 | 2027-06-18 | 0 | 0 | 113 | 110 4.1.1 → 4.2.1 · Contrato de interfaz disponible #404040 true 2027-06-18 0 0 true | True |
| 111 | 8.5.3 Recinto de custodia de respaldos habilitado | 2027-06-22 | 2027-07-09 | 13 | 13 | 114 | 111 8.5.3 Recinto de custodia de respaldos habilitado #4472c4 false 2027-06-22 13 0 true |  |
| 112 | H3 · Entrega de expediente | 2027-06-22 | 2027-06-22 | 0 | 0 | 115 | 112 H3 · Entrega de expediente #404040 true 2027-06-22 0 0 true | True |
| 113 | H3 · Revisión de la Contraparte (10 días hábiles) | 2027-06-23 | 2027-07-07 | 10 | 10 | 116 | 113 H3 · Revisión de la Contraparte (10 días hábiles) #4472c4 false 2027-06-23 10 0 true |  |
| 114 | 4.1.3 → 4.3.2 · Contrato de interfaz disponible | 2027-06-25 | 2027-06-25 | 0 | 0 | 117 | 114 4.1.3 → 4.3.2 · Contrato de interfaz disponible #404040 true 2027-06-25 0 0 true | True |
| 115 | 4.1.3 → 4.3.3 · Contrato de interfaz disponible | 2027-06-25 | 2027-06-25 | 0 | 0 | 118 | 115 4.1.3 → 4.3.3 · Contrato de interfaz disponible #404040 true 2027-06-25 0 0 true | True |
| 116 | 4.1.3 · Construcción dependiente de 4.1.1 | 2027-06-29 | 2027-06-29 | 0 | 0 | 119 | 116 4.1.3 · Construcción dependiente de 4.1.1 #404040 true 2027-06-29 0 0 true | True |
| 117 | 4.2.1 · Construcción dependiente de 4.1.1 | 2027-06-29 | 2027-06-29 | 0 | 0 | 120 | 117 4.2.1 · Construcción dependiente de 4.1.1 #404040 true 2027-06-29 0 0 true | True |
| 118 | 4.1.3 · Construcción dependiente de 4.1.2 | 2027-06-29 | 2027-06-29 | 0 | 0 | 121 | 118 4.1.3 · Construcción dependiente de 4.1.2 #404040 true 2027-06-29 0 0 true | True |
| 119 | 4.2.1 · Construcción dependiente de 4.1.2 | 2027-06-29 | 2027-06-29 | 0 | 0 | 122 | 119 4.2.1 · Construcción dependiente de 4.1.2 #404040 true 2027-06-29 0 0 true | True |
| 290 | Seguimiento de construcción E1 · 30/06/2027 | 2027-06-30 | 2027-06-30 | 0 | 0 | 123 | 290 Seguimiento de construcción E1 · 30/06/2027 #404040 true 2027-06-30 0 0 true | True |
| 120 | 5.2.2 Integración con la pasarela de pago para el cobro con tarjeta (INT-09) | 2027-07-01 | 2027-08-02 | 22 | 23 | 124 | 120 5.2.2 Integración con la pasarela de pago para el cobro con tarjeta (INT-09) #4472c4 false 2027-07-01 23 0 true |  |
| 121 | 8.4.2 Certificación de enlaces, etiquetado y planos as-built | 2027-07-01 | 2027-07-20 | 13 | 14 | 125 | 121 8.4.2 Certificación de enlaces, etiquetado y planos as-built #4472c4 false 2027-07-01 14 0 true |  |
| 122 | H3 · Firma del acta | 2027-07-07 | 2027-07-07 | 0 | 0 | 126 | 122 H3 · Firma del acta #404040 true 2027-07-07 0 0 true | True |
| 123 | 8.4.4 · Traslado dominical del ERP a R01 | 2027-07-11 | 2027-07-11 | 0 | 0 | 127 | 123 8.4.4 · Traslado dominical del ERP a R01 #404040 true 2027-07-11 0 0 true | True |
| 124 | 8.4.4 · Cierre del paquete | 2027-07-12 | 2027-07-12 | 0 | 0 | 128 | 124 8.4.4 · Cierre del paquete #404040 true 2027-07-12 0 0 true | True |
| 291 | Seguimiento de construcción E1 · 15/07/2027 | 2027-07-15 | 2027-07-15 | 0 | 0 | 129 | 291 Seguimiento de construcción E1 · 15/07/2027 #404040 true 2027-07-15 0 0 true | True |
| 125 | 5.2.4 Integración con el servicio de avisos al cliente (INT-11) | 2027-07-20 | 2027-08-16 | 20 | 20 | 130 | 125 5.2.4 Integración con el servicio de avisos al cliente (INT-11) #4472c4 false 2027-07-20 20 0 true |  |
| 126 | 4.1.2 · Cierre del paquete | 2027-07-29 | 2027-07-29 | 0 | 0 | 131 | 126 4.1.2 · Cierre del paquete #404040 true 2027-07-29 0 0 true | True |
| 127 | 4.1.2 → 4.1.3 · Incremento para integración | 2027-07-29 | 2027-07-29 | 0 | 0 | 132 | 127 4.1.2 → 4.1.3 · Incremento para integración #404040 true 2027-07-29 0 0 true | True |
| 128 | 4.1.2 → 4.2.1 · Incremento para integración | 2027-07-29 | 2027-07-29 | 0 | 0 | 133 | 128 4.1.2 → 4.2.1 · Incremento para integración #404040 true 2027-07-29 0 0 true | True |
| 292 | Entrega a QA · 4.1.2 | 2027-07-29 | 2027-07-29 | 0 | 0 | 134 | 292 Entrega a QA · 4.1.2 #404040 true 2027-07-29 0 0 true | True |
| 129 | 4.3.4 Devoluciones en terreno y control de envases (M8 Devoluciones y envases) | 2027-07-30 | 2027-09-15 | 34 | 34 | 135 | 129 4.3.4 Devoluciones en terreno y control de envases (M8 Devoluciones y envases) #4472c4 false 2027-07-30 34 0 true |  |
| 293 | Demostración de módulos en QA E1 · 30/07/2027 | 2027-07-30 | 2027-07-30 | 0 | 0 | 136 | 293 Demostración de módulos en QA E1 · 30/07/2027 #404040 true 2027-07-30 0 0 true | True |
| 294 | Seguimiento de construcción E1 · 30/07/2027 | 2027-07-30 | 2027-07-30 | 0 | 0 | 137 | 294 Seguimiento de construcción E1 · 30/07/2027 #404040 true 2027-07-30 0 0 true | True |
| 130 | 5.2.1 Intercambio de lote y trazabilidad con los proveedores | 2027-08-02 | 2027-09-01 | 23 | 23 | 138 | 130 5.2.1 Intercambio de lote y trazabilidad con los proveedores #4472c4 false 2027-08-02 23 0 true |  |
| 131 | 6.8.7 Contrato de custodia de fuentes con un tercero independiente | 2027-08-02 | 2027-08-10 | 7 | 7 | 139 | 131 6.8.7 Contrato de custodia de fuentes con un tercero independiente #4472c4 false 2027-08-02 7 0 true |  |

| id | name | start | end | duration | duration_gantt | order | attributes | milestone |
| --- | --- | --- | --- | --- | --- | --- | --- | --- |
| 132 | 7.1.1 Innovación 1: documento de catálogo de acciones y protocolo del piloto (INN-01.P1) | 2027-08-02 | 2027-10-08 | 49 | 49 | 140 | 132 7.1.1 Innovación 1: documento de catálogo de acciones y protocolo del piloto (INN-01.P1) #4472c4 false 2027-08-02 49 0 true |  |
| 133 | 8.4.3 Gabinetes de piso y switches de acceso instalados en las bodegas de Talca y Concepción | 2027-08-02 | 2027-08-19 | 14 | 14 | 141 | 133 8.4.3 Gabinetes de piso y switches de acceso instalados en las bodegas de Talca y Concepción #4472c4 false 2027-08-02 14 0 true |  |
| 134 | 4.1.1 → 4.1.3 · Incremento para integración | 2027-08-02 | 2027-08-02 | 0 | 0 | 142 | 134 4.1.1 → 4.1.3 · Incremento para integración #404040 true 2027-08-02 0 0 true | True |
| 135 | 4.1.3 · Integración con 4.1.1 | 2027-08-03 | 2027-08-03 | 0 | 0 | 143 | 135 4.1.3 · Integración con 4.1.1 #404040 true 2027-08-03 0 0 true | True |
| 136 | 4.1.3 · Integración con 4.1.2 | 2027-08-03 | 2027-08-03 | 0 | 0 | 144 | 136 4.1.3 · Integración con 4.1.2 #404040 true 2027-08-03 0 0 true | True |
| 137 | 5.4.1 Informe de perfilamiento y datos saneados | 2027-08-04 | 2027-10-01 | 42 | 42 | 145 | 137 5.4.1 Informe de perfilamiento y datos saneados #4472c4 false 2027-08-04 42 0 true |  |
| 138 | 4.3.1 · Cierre del paquete | 2027-08-04 | 2027-08-04 | 0 | 0 | 146 | 138 4.3.1 · Cierre del paquete #404040 true 2027-08-04 0 0 true | True |
| 139 | 4.3.1 → 4.3.2 · Incremento para integración | 2027-08-04 | 2027-08-04 | 0 | 0 | 147 | 139 4.3.1 → 4.3.2 · Incremento para integración #404040 true 2027-08-04 0 0 true | True |
| 140 | 4.3.1 → 4.3.3 · Incremento para integración | 2027-08-04 | 2027-08-04 | 0 | 0 | 148 | 140 4.3.1 → 4.3.3 · Incremento para integración #404040 true 2027-08-04 0 0 true | True |
| 295 | Entrega a QA · 4.3.1 | 2027-08-04 | 2027-08-04 | 0 | 0 | 149 | 295 Entrega a QA · 4.3.1 #404040 true 2027-08-04 0 0 true | True |
| 141 | 4.3.3 Aplicación móvil de reparto con prueba de entrega digital (M6 Reparto) | 2027-08-05 | 2027-09-27 | 37 | 37 | 150 | 141 4.3.3 Aplicación móvil de reparto con prueba de entrega digital (M6 Reparto) #4472c4 false 2027-08-05 37 0 true |  |
| 142 | 4.1.1 · Cierre del paquete | 2027-08-05 | 2027-08-05 | 0 | 0 | 151 | 142 4.1.1 · Cierre del paquete #404040 true 2027-08-05 0 0 true | True |
| 143 | 4.1.3 · Cierre del paquete | 2027-08-05 | 2027-08-05 | 0 | 0 | 152 | 143 4.1.3 · Cierre del paquete #404040 true 2027-08-05 0 0 true | True |
| 144 | 4.1.1 → 4.2.1 · Incremento para integración | 2027-08-05 | 2027-08-05 | 0 | 0 | 153 | 144 4.1.1 → 4.2.1 · Incremento para integración #404040 true 2027-08-05 0 0 true | True |
| 145 | 4.1.3 → 4.3.2 · Incremento para integración | 2027-08-05 | 2027-08-05 | 0 | 0 | 154 | 145 4.1.3 → 4.3.2 · Incremento para integración #404040 true 2027-08-05 0 0 true | True |
| 146 | 4.1.3 → 4.3.3 · Incremento para integración | 2027-08-05 | 2027-08-05 | 0 | 0 | 155 | 146 4.1.3 → 4.3.3 · Incremento para integración #404040 true 2027-08-05 0 0 true | True |
| 296 | Entrega a QA · 4.1.1 | 2027-08-05 | 2027-08-05 | 0 | 0 | 156 | 296 Entrega a QA · 4.1.1 #404040 true 2027-08-05 0 0 true | True |
| 297 | Entrega a QA · 4.1.3 | 2027-08-05 | 2027-08-05 | 0 | 0 | 157 | 297 Entrega a QA · 4.1.3 #404040 true 2027-08-05 0 0 true | True |
| 147 | 4.3.2 Planificación de rutas corregible por el planificador (M4 Rutas) | 2027-08-06 | 2027-09-20 | 31 | 31 | 158 | 147 4.3.2 Planificación de rutas corregible por el planificador (M4 Rutas) #4472c4 false 2027-08-06 31 0 true |  |
| 148 | 4.3.3 → 4.3.5 · Contrato de interfaz disponible | 2027-08-10 | 2027-08-10 | 0 | 0 | 159 | 148 4.3.3 → 4.3.5 · Contrato de interfaz disponible #404040 true 2027-08-10 0 0 true | True |
| 149 | 4.3.5 Cobro en ruta, rendición y conciliación (M7 Cobranza y rendición) | 2027-08-11 | 2027-09-30 | 36 | 36 | 160 | 149 4.3.5 Cobro en ruta, rendición y conciliación (M7 Cobranza y rendición) #946100 false 2027-08-11 36 0 true |  |
| 150 | 4.3.3 · Construcción dependiente de 4.1.3 | 2027-08-11 | 2027-08-11 | 0 | 0 | 161 | 150 4.3.3 · Construcción dependiente de 4.1.3 #404040 true 2027-08-11 0 0 true | True |
| 151 | 4.3.3 · Construcción dependiente de 4.3.1 | 2027-08-11 | 2027-08-11 | 0 | 0 | 162 | 151 4.3.3 · Construcción dependiente de 4.3.1 #404040 true 2027-08-11 0 0 true | True |
| 152 | 4.3.2 · Construcción dependiente de 4.1.3 | 2027-08-13 | 2027-08-13 | 0 | 0 | 163 | 152 4.3.2 · Construcción dependiente de 4.1.3 #404040 true 2027-08-13 0 0 true | True |
| 153 | 4.3.2 · Construcción dependiente de 4.3.1 | 2027-08-13 | 2027-08-13 | 0 | 0 | 164 | 153 4.3.2 · Construcción dependiente de 4.3.1 #404040 true 2027-08-13 0 0 true | True |
| 298 | Demostración de módulos en QA E1 · 13/08/2027 | 2027-08-13 | 2027-08-13 | 0 | 0 | 165 | 298 Demostración de módulos en QA E1 · 13/08/2027 #404040 true 2027-08-13 0 0 true | True |
| 299 | Seguimiento de construcción E1 · 13/08/2027 | 2027-08-13 | 2027-08-13 | 0 | 0 | 166 | 299 Seguimiento de construcción E1 · 13/08/2027 #404040 true 2027-08-13 0 0 true | True |
| 154 | 5.2.3 Integración con el servicio de mapas y geocodificación (INT-10) | 2027-08-16 | 2027-09-10 | 20 | 20 | 167 | 154 5.2.3 Integración con el servicio de mapas y geocodificación (INT-10) #4472c4 false 2027-08-16 20 0 true |  |
| 300 | Entrega a QA · 4.2.2 | 2027-08-16 | 2027-08-16 | 0 | 0 | 168 | 300 Entrega a QA · 4.2.2 #404040 true 2027-08-16 0 0 true | True |
| 155 | 4.3.5 · Construcción dependiente de 4.3.3 | 2027-08-18 | 2027-08-18 | 0 | 0 | 169 | 155 4.3.5 · Construcción dependiente de 4.3.3 #404040 true 2027-08-18 0 0 true | True |
| 156 | 4.2.1 · Integración con 4.1.1 | 2027-08-20 | 2027-08-20 | 0 | 0 | 170 | 156 4.2.1 · Integración con 4.1.1 #404040 true 2027-08-20 0 0 true | True |
| 157 | 4.2.1 · Integración con 4.1.2 | 2027-08-20 | 2027-08-20 | 0 | 0 | 171 | 157 4.2.1 · Integración con 4.1.2 #404040 true 2027-08-20 0 0 true | True |
| 158 | 4.2.1 · Cierre del paquete | 2027-08-24 | 2027-08-24 | 0 | 0 | 172 | 158 4.2.1 · Cierre del paquete #404040 true 2027-08-24 0 0 true | True |
| 301 | Entrega a QA · 4.2.1 | 2027-08-24 | 2027-08-24 | 0 | 0 | 173 | 301 Entrega a QA · 4.2.1 #404040 true 2027-08-24 0 0 true | True |
| 159 | 4.5.1 Indicadores operacionales y OTIF diario (M10 Analítica) | 2027-08-25 | 2027-09-29 | 25 | 25 | 174 | 159 4.5.1 Indicadores operacionales y OTIF diario (M10 Analítica) #4472c4 false 2027-08-25 25 0 true |  |
| 302 | Demostración de módulos en QA E1 · 31/08/2027 | 2027-08-31 | 2027-08-31 | 0 | 0 | 175 | 302 Demostración de módulos en QA E1 · 31/08/2027 #404040 true 2027-08-31 0 0 true | True |
| 303 | Seguimiento de construcción E1 · 31/08/2027 | 2027-08-31 | 2027-08-31 | 0 | 0 | 176 | 303 Seguimiento de construcción E1 · 31/08/2027 #404040 true 2027-08-31 0 0 true | True |
| 160 | 3.3.4 Parametrización y motor de reglas versionados | 2027-09-01 | 2027-09-30 | 21 | 21 | 177 | 160 3.3.4 Parametrización y motor de reglas versionados #946100 false 2027-09-01 21 0 true |  |
| 161 | 3.3.5 Gestión documental con versionado, búsqueda y vista previa | 2027-09-01 | 2027-09-30 | 21 | 21 | 178 | 161 3.3.5 Gestión documental con versionado, búsqueda y vista previa #946100 false 2027-09-01 21 0 true |  |
| 162 | 3.3.6 Generación de documentos con plantillas administrables | 2027-09-01 | 2027-09-30 | 21 | 21 | 179 | 162 3.3.6 Generación de documentos con plantillas administrables #946100 false 2027-09-01 21 0 true |  |
| 163 | 8.6.4 Kit de cadena de frío instalado y recibido en los 28 camiones con frío | 2027-09-01 | 2028-01-14 | 94 | 94 | 180 | 163 8.6.4 Kit de cadena de frío instalado y recibido en los 28 camiones con frío #4472c4 false 2027-09-01 94 0 true |  |
| 164 | 4.3.2 · Integración con 4.1.3 | 2027-09-15 | 2027-09-15 | 0 | 0 | 181 | 164 4.3.2 · Integración con 4.1.3 #404040 true 2027-09-15 0 0 true | True |
| 165 | 4.3.2 · Integración con 4.3.1 | 2027-09-15 | 2027-09-15 | 0 | 0 | 182 | 165 4.3.2 · Integración con 4.3.1 #404040 true 2027-09-15 0 0 true | True |
| 304 | Demostración de módulos en QA E1 · 15/09/2027 | 2027-09-15 | 2027-09-15 | 0 | 0 | 183 | 304 Demostración de módulos en QA E1 · 15/09/2027 #404040 true 2027-09-15 0 0 true | True |
| 305 | Entrega a QA · 4.3.4 | 2027-09-15 | 2027-09-15 | 0 | 0 | 184 | 305 Entrega a QA · 4.3.4 #404040 true 2027-09-15 0 0 true | True |
| 306 | Seguimiento de construcción E1 · 15/09/2027 | 2027-09-15 | 2027-09-15 | 0 | 0 | 185 | 306 Seguimiento de construcción E1 · 15/09/2027 #404040 true 2027-09-15 0 0 true | True |
| 166 | 4.3.2 · Cierre del paquete | 2027-09-20 | 2027-09-20 | 0 | 0 | 186 | 166 4.3.2 · Cierre del paquete #404040 true 2027-09-20 0 0 true | True |
| 307 | Entrega a QA · 4.3.2 | 2027-09-20 | 2027-09-20 | 0 | 0 | 187 | 307 Entrega a QA · 4.3.2 #404040 true 2027-09-20 0 0 true | True |
| 167 | 4.3.3 · Integración con 4.1.3 | 2027-09-24 | 2027-09-24 | 0 | 0 | 188 | 167 4.3.3 · Integración con 4.1.3 #404040 true 2027-09-24 0 0 true | True |
| 168 | 4.3.3 · Integración con 4.3.1 | 2027-09-24 | 2027-09-24 | 0 | 0 | 189 | 168 4.3.3 · Integración con 4.3.1 #404040 true 2027-09-24 0 0 true | True |
| 169 | 4.3.3 · Cierre del paquete | 2027-09-27 | 2027-09-27 | 0 | 0 | 190 | 169 4.3.3 · Cierre del paquete #404040 true 2027-09-27 0 0 true | True |
| 170 | 4.3.3 → 4.3.5 · Incremento para integración | 2027-09-27 | 2027-09-27 | 0 | 0 | 191 | 170 4.3.3 → 4.3.5 · Incremento para integración #404040 true 2027-09-27 0 0 true | True |
| 308 | Entrega a QA · 4.3.3 | 2027-09-27 | 2027-09-27 | 0 | 0 | 192 | 308 Entrega a QA · 4.3.3 #404040 true 2027-09-27 0 0 true | True |
| 171 | 4.3.5 · Integración con 4.3.3 | 2027-09-28 | 2027-09-28 | 0 | 0 | 193 | 171 4.3.5 · Integración con 4.3.3 #404040 true 2027-09-28 0 0 true | True |
| 309 | Entrega a QA · 4.5.1 | 2027-09-29 | 2027-09-29 | 0 | 0 | 194 | 309 Entrega a QA · 4.5.1 #404040 true 2027-09-29 0 0 true | True |
| 172 | 4.3.5 · Cierre del paquete | 2027-09-30 | 2027-09-30 | 0 | 0 | 195 | 172 4.3.5 · Cierre del paquete #404040 true 2027-09-30 0 0 true | True |
| 173 | 8.6.4 · Recepción parcial de cuatro kits | 2027-09-30 | 2027-09-30 | 0 | 0 | 196 | 173 8.6.4 · Recepción parcial de cuatro kits #404040 true 2027-09-30 0 0 true | True |
| 310 | Demostración de módulos en QA E1 · 30/09/2027 | 2027-09-30 | 2027-09-30 | 0 | 0 | 197 | 310 Demostración de módulos en QA E1 · 30/09/2027 #404040 true 2027-09-30 0 0 true | True |
| 311 | Entrega a QA · 4.3.5 | 2027-09-30 | 2027-09-30 | 0 | 0 | 198 | 311 Entrega a QA · 4.3.5 #404040 true 2027-09-30 0 0 true | True |
| 312 | Seguimiento de construcción E1 · 30/09/2027 | 2027-09-30 | 2027-09-30 | 0 | 0 | 199 | 312 Seguimiento de construcción E1 · 30/09/2027 #404040 true 2027-09-30 0 0 true | True |
| 174 | 5.3.1 Intercambio electrónico certificado con la cadena principal (INT-08) | 2027-10-01 | 2028-05-31 | 169 | 171 | 200 | 174 5.3.1 Intercambio electrónico certificado con la cadena principal (INT-08) #946100 false 2027-10-01 171 0 true |  |
| 175 | 7.1.2 Innovación 1: estimador de saldo y ritmo de reposición (INN-01.P2) | 2027-10-01 | 2027-11-19 | 34 | 34 | 201 | 175 7.1.2 Innovación 1: estimador de saldo y ritmo de reposición (INN-01.P2) #4472c4 false 2027-10-01 34 0 true |  |
| 176 | 7.1.3 Innovación 1: función de lista sin conexión en la aplicación de preventa (INN-01.P3) | 2027-10-01 | 2027-11-19 | 34 | 34 | 202 | 176 7.1.3 Innovación 1: función de lista sin conexión en la aplicación de preventa (INN-01.P3) #4472c4 false 2027-10-01 34 0 true |  |
| 177 | 7.3.3 Innovación 3: vista en M9 y orden de salida sugerido (INN-03.P3) | 2027-10-01 | 2027-11-19 | 34 | 34 | 203 | 177 7.3.3 Innovación 3: vista en M9 y orden de salida sugerido (INN-03.P3) #4472c4 false 2027-10-01 34 0 true |  |
| 178 | 8.4.7 Gabinetes de borde de plataformas de cross-docking montados | 2027-10-01 | 2027-10-20 | 13 | 13 | 204 | 178 8.4.7 Gabinetes de borde de plataformas de cross-docking montados #4472c4 false 2027-10-01 13 0 true |  |
| 179 | 9.7.1 Acuerdos operacionales firmados con los diez transportistas | 2027-10-01 | 2027-10-12 | 7 | 7 | 205 | 179 9.7.1 Acuerdos operacionales firmados con los diez transportistas #4472c4 false 2027-10-01 7 0 true |  |
| 180 | 9.7.2 Acta de acuerdo con el sindicato sobre terminales, GPS y cámaras | 2027-10-01 | 2027-10-12 | 7 | 7 | 206 | 180 9.7.2 Acta de acuerdo con el sindicato sobre terminales, GPS y cámaras #4472c4 false 2027-10-01 7 0 true |  |
| 181 | 5.4.2 Datos maestros cargados: 8.400 SKU, clientes e instalaciones | 2027-10-04 | 2027-11-03 | 21 | 21 | 207 | 181 5.4.2 Datos maestros cargados: 8.400 SKU, clientes e instalaciones #4472c4 false 2027-10-04 21 0 true |  |
| 182 | 6.1.1 Pruebas de integración, regresión e idempotencia en QA (H4) | 2027-10-05 | 2027-10-22 | 13 | 13 | 208 | 182 6.1.1 Pruebas de integración, regresión e idempotencia en QA (H4) #4472c4 false 2027-10-05 13 0 true |  |
| 183 | 8.6.1 Terminales de preventa, reparto y bodega configurados y enrolados | 2027-10-06 | 2028-01-14 | 70 | 70 | 209 | 183 8.6.1 Terminales de preventa, reparto y bodega configurados y enrolados #4472c4 false 2027-10-06 70 0 true |  |

| id | name | start | end | duration | duration_gantt | order | attributes | milestone |
| --- | --- | --- | --- | --- | --- | --- | --- | --- |
| 184 | 8.6.3 Sensores de cámara y gateways IoT instalados en Talca y Concepción | 2027-10-06 | 2027-11-25 | 35 | 35 | 210 | 184 8.6.3 Sensores de cámara y gateways IoT instalados en Talca y Concepción #4472c4 false 2027-10-06 35 0 true |  |
| 185 | 8.6.6 Impresoras de andén y balanzas de recepción instaladas | 2027-10-06 | 2028-01-14 | 70 | 70 | 211 | 185 8.6.6 Impresoras de andén y balanzas de recepción instaladas #4472c4 false 2027-10-06 70 0 true |  |
| 322 | 7.1.1 · Fin de referencia para la precedencia | 2027-10-08 | 2027-10-08 | 0 | 0 | 212 | 322 7.1.1 · Fin de referencia para la precedencia #404040 true 2027-10-08 0 0 true | True |
| 186 | H4 · Entrega de expediente | 2027-10-20 | 2027-10-20 | 0 | 0 | 213 | 186 H4 · Entrega de expediente #404040 true 2027-10-20 0 0 true | True |
| 187 | H4 · Evidencia disponible (6.1.1) | 2027-10-20 | 2027-10-20 | 0 | 0 | 214 | 187 H4 · Evidencia disponible (6.1.1) #404040 true 2027-10-20 0 0 true | True |
| 188 | H4 · Revisión de la Contraparte (10 días hábiles) | 2027-10-21 | 2027-11-04 | 10 | 10 | 215 | 188 H4 · Revisión de la Contraparte (10 días hábiles) #4472c4 false 2027-10-21 10 0 true |  |
| 189 | 6.1.1 · Cierre del paquete | 2027-10-22 | 2027-10-22 | 0 | 0 | 216 | 189 6.1.1 · Cierre del paquete #404040 true 2027-10-22 0 0 true | True |
| 190 | 6.2.1 Pruebas de aceptación y de accesibilidad con preventistas, conductores y bodega | 2027-10-25 | 2027-11-19 | 19 | 19 | 217 | 190 6.2.1 Pruebas de aceptación y de accesibilidad con preventistas, conductores y bodega #4472c4 false 2027-10-25 19 0 true |  |
| 191 | 6.2.2 Pruebas de operación en condiciones físicas extremas y sin conexión | 2027-10-25 | 2027-11-19 | 19 | 19 | 218 | 191 6.2.2 Pruebas de operación en condiciones físicas extremas y sin conexión #4472c4 false 2027-10-25 19 0 true |  |
| 192 | 6.3.1 Pruebas de carga con el peak de septiembre y de resiliencia | 2027-10-25 | 2027-11-11 | 13 | 13 | 219 | 192 6.3.1 Pruebas de carga con el peak de septiembre y de resiliencia #4472c4 false 2027-10-25 13 0 true |  |
| 193 | 6.4.1 Prueba de recuperación ante desastres con conmutación real | 2027-10-25 | 2027-11-11 | 13 | 13 | 220 | 193 6.4.1 Prueba de recuperación ante desastres con conmutación real #4472c4 false 2027-10-25 13 0 true |  |
| 194 | 6.5.1 Prueba de seguridad ofensiva de la Etapa 1, por un tercero independiente | 2027-10-25 | 2027-11-11 | 13 | 13 | 221 | 194 6.5.1 Prueba de seguridad ofensiva de la Etapa 1, por un tercero independiente #4472c4 false 2027-10-25 13 0 true |  |
| 195 | 6.6.1 Demostración en Preproducción del despliegue sin interrupción de la Etapa 1 | 2027-10-25 | 2027-11-11 | 13 | 13 | 222 | 195 6.6.1 Demostración en Preproducción del despliegue sin interrupción de la Etapa 1 #4472c4 false 2027-10-25 13 0 true |  |
| 196 | 9.1.1 Plan de olas de la Etapa 1 por sitio y zona | 2027-11-02 | 2027-11-10 | 7 | 7 | 223 | 196 9.1.1 Plan de olas de la Etapa 1 por sitio y zona #4472c4 false 2027-11-02 7 0 true |  |
| 197 | 9.5.1 Plan de capacitación por perfil | 2027-11-02 | 2027-12-24 | 38 | 38 | 224 | 197 9.5.1 Plan de capacitación por perfil #4472c4 false 2027-11-02 38 0 true |  |
| 198 | 9.5.6 Plataforma de autoformación en línea con registro de avance | 2027-11-02 | 2027-12-24 | 38 | 38 | 225 | 198 9.5.6 Plataforma de autoformación en línea con registro de avance #4472c4 false 2027-11-02 38 0 true |  |
| 199 | 8.6.2 Terminales de pago configurados, uno por camión | 2027-11-04 | 2028-01-14 | 51 | 51 | 226 | 199 8.6.2 Terminales de pago configurados, uno por camión #4472c4 false 2027-11-04 51 0 true |  |
| 200 | 8.6.5 Impresoras de cabina instaladas | 2027-11-04 | 2028-01-14 | 51 | 51 | 227 | 200 8.6.5 Impresoras de cabina instaladas #4472c4 false 2027-11-04 51 0 true |  |
| 201 | H4 · Firma del acta | 2027-11-04 | 2027-11-04 | 0 | 0 | 228 | 201 H4 · Firma del acta #404040 true 2027-11-04 0 0 true | True |
| 202 | 2.7.3 Informe de piloto de cadena de frío en cuatro camiones | 2027-11-09 | 2027-12-20 | 29 | 29 | 229 | 202 2.7.3 Informe de piloto de cadena de frío en cuatro camiones #4472c4 false 2027-11-09 29 0 true |  |
| 203 | 6.7.1 Acta de certificación de la Etapa 1 (H5) | 2027-11-22 | 2027-12-01 | 8 | 8 | 230 | 203 6.7.1 Acta de certificación de la Etapa 1 (H5) #4472c4 false 2027-11-22 8 0 true |  |
| 204 | 5.4.3 Saldos migrados desde el WMS de Talca | 2027-12-01 | 2027-12-31 | 22 | 22 | 231 | 204 5.4.3 Saldos migrados desde el WMS de Talca #946100 false 2027-12-01 22 0 true |  |
| 205 | 5.4.4 Saldos cargados en Concepción desde el conteo físico | 2027-12-01 | 2027-12-31 | 22 | 22 | 232 | 205 5.4.4 Saldos cargados en Concepción desde el conteo físico #946100 false 2027-12-01 22 0 true |  |
| 206 | 7.1.4 Innovación 1: informe del piloto en marcha blanca y habilitación (INN-01.P4) | 2027-12-01 | 2028-04-28 | 106 | 107 | 233 | 206 7.1.4 Innovación 1: informe del piloto en marcha blanca y habilitación (INN-01.P4) #946100 false 2027-12-01 107 0 true |  |
| 207 | 7.2.4 Innovación 2: informe de validación comparada (INN-02.P4, parte 1) | 2027-12-01 | 2028-04-28 | 106 | 107 | 234 | 207 7.2.4 Innovación 2: informe de validación comparada (INN-02.P4, parte 1) #946100 false 2027-12-01 107 0 true |  |
| 208 | 7.3.4 Innovación 3: informe de validación en marcha blanca con Calidad (INN-03.P4) | 2027-12-01 | 2028-04-28 | 106 | 107 | 235 | 208 7.3.4 Innovación 3: informe de validación en marcha blanca con Calidad (INN-03.P4) #946100 false 2027-12-01 107 0 true |  |
| 209 | 9.1.2 Procedimiento y ensayo de reversión de la Etapa 1 | 2027-12-01 | 2027-12-10 | 7 | 7 | 236 | 209 9.1.2 Procedimiento y ensayo de reversión de la Etapa 1 #4472c4 false 2027-12-01 7 0 true |  |
| 210 | H5 · Entrega de expediente | 2027-12-01 | 2027-12-01 | 0 | 0 | 237 | 210 H5 · Entrega de expediente #404040 true 2027-12-01 0 0 true | True |
| 211 | H5 · Evidencia disponible (6.7.1) | 2027-12-01 | 2027-12-01 | 0 | 0 | 238 | 211 H5 · Evidencia disponible (6.7.1) #404040 true 2027-12-01 0 0 true | True |
| 212 | 6.7.1 · Cierre del paquete | 2027-12-01 | 2027-12-01 | 0 | 0 | 239 | 212 6.7.1 · Cierre del paquete #404040 true 2027-12-01 0 0 true | True |
| 213 | H5 · Revisión de la Contraparte (10 días hábiles) | 2027-12-02 | 2027-12-16 | 10 | 10 | 240 | 213 H5 · Revisión de la Contraparte (10 días hábiles) #4472c4 false 2027-12-02 10 0 true |  |
| 214 | 5.4.5 Acta de conciliación y corte fuera de las ventanas de congelamiento | 2028-01-03 | 2028-01-27 | 19 | 19 | 241 | 214 5.4.5 Acta de conciliación y corte fuera de las ventanas de congelamiento #4472c4 false 2028-01-03 19 0 true |  |
| 215 | H5 · Firma del acta | 2028-01-03 | 2028-01-03 | 0 | 0 | 242 | 215 H5 · Firma del acta #404040 true 2028-01-03 0 0 true | True |
| 216 | 2.1.2 Documento de línea base de alcance de la Etapa 2: canal moderno y costo de servir (H8) | 2028-02-01 | 2028-02-09 | 7 | 7 | 243 | 216 2.1.2 Documento de línea base de alcance de la Etapa 2: canal moderno y costo de servir (H8) #4472c4 false 2028-02-01 7 0 true |  |
| 217 | 2.2.4 Documento de diseño detallado de M11 y del intercambio con las cadenas | 2028-02-01 | 2028-02-15 | 11 | 11 | 244 | 217 2.2.4 Documento de diseño detallado de M11 y del intercambio con las cadenas #4472c4 false 2028-02-01 11 0 true |  |
| 218 | 7.5.1 Innovación 5: prototipo e informe de la prueba de comprensión (INN-05.P1) | 2028-02-01 | 2028-03-21 | 36 | 36 | 245 | 218 7.5.1 Innovación 5: prototipo e informe de la prueba de comprensión (INN-05.P1) #4472c4 false 2028-02-01 36 0 true |  |
| 219 | 9.5.7 Certificación de preventistas, conductores y preparadores (Etapa 1) | 2028-02-01 | 2028-03-24 | 39 | 39 | 246 | 219 9.5.7 Certificación de preventistas, conductores y preparadores (Etapa 1) #4472c4 false 2028-02-01 39 0 true |  |
| 220 | 9.2.1 Marcha blanca de la Etapa 1 | 2028-02-01 | 2028-04-30 | 63 | 65 | 247 | 220 9.2.1 Marcha blanca de la Etapa 1 #4472c4 false 2028-02-01 65 0 true |  |
| 221 | H6 · Inicio contractual de marcha blanca | 2028-02-01 | 2028-02-01 | 0 | 0 | 248 | 221 H6 · Inicio contractual de marcha blanca #65418a true 2028-02-01 0 0 true | True |
| 222 | Etapa 2 · Desarrollo (meses 13 a 18) | 2028-02-01 | 2028-07-31 | 126 | 128 | 249 | 222 Etapa 2 · Desarrollo (meses 13 a 18) #4472c4 false 2028-02-01 128 0 true |  |
| 223 | H6 · Entrega de expediente | 2028-02-01 | 2028-02-01 | 0 | 0 | 250 | 223 H6 · Entrega de expediente #404040 true 2028-02-01 0 0 true | True |
| 224 | 2.8.2 Acta de aprobación del diseño detallado de la Etapa 2 (H8) | 2028-02-16 | 2028-02-25 | 8 | 8 | 251 | 224 2.8.2 Acta de aprobación del diseño detallado de la Etapa 2 (H8) #4472c4 false 2028-02-16 8 0 true |  |
| 225 | H8 · Entrega de expediente | 2028-02-24 | 2028-02-24 | 0 | 0 | 252 | 225 H8 · Entrega de expediente #404040 true 2028-02-24 0 0 true | True |
| 226 | H8 · Evidencia disponible (2.8.2) | 2028-02-24 | 2028-02-24 | 0 | 0 | 253 | 226 H8 · Evidencia disponible (2.8.2) #404040 true 2028-02-24 0 0 true | True |
| 227 | 2.8.2 · Cierre del paquete | 2028-02-25 | 2028-02-25 | 0 | 0 | 254 | 227 2.8.2 · Cierre del paquete #404040 true 2028-02-25 0 0 true | True |
| 228 | H8 · Revisión de la Contraparte (10 días hábiles) | 2028-02-25 | 2028-03-09 | 10 | 10 | 255 | 228 H8 · Revisión de la Contraparte (10 días hábiles) #4472c4 false 2028-02-25 10 0 true |  |
| 229 | E1 · Puerta de la ola de reparto | 2028-02-29 | 2028-02-29 | 0 | 0 | 256 | 229 E1 · Puerta de la ola de reparto #404040 true 2028-02-29 0 0 true | True |
| 230 | 7.5.2 Innovación 5: evaluación de privacidad y diseño de la impresión en cabina (INN-05.P2) | 2028-03-01 | 2028-04-19 | 35 | 36 | 257 | 230 7.5.2 Innovación 5: evaluación de privacidad y diseño de la impresión en cabina (INN-05.P2) #4472c4 false 2028-03-01 36 0 true |  |
| 231 | H8 · Firma del acta | 2028-03-09 | 2028-03-09 | 0 | 0 | 258 | 231 H8 · Firma del acta #404040 true 2028-03-09 0 0 true | True |
| 232 | 4.4.2 Portal web de clientes: cuenta, saldo, entregas y documentos | 2028-03-13 | 2028-04-28 | 34 | 35 | 259 | 232 4.4.2 Portal web de clientes: cuenta, saldo, entregas y documentos #946100 false 2028-03-13 35 0 true |  |
| 233 | 4.4.1 Canal moderno y portal de proveedores (M11) | 2028-03-15 | 2028-04-28 | 32 | 33 | 260 | 233 4.4.1 Canal moderno y portal de proveedores (M11) #946100 false 2028-03-15 33 0 true |  |
| 234 | 4.4.3 Portal web de transportistas: rutas asignadas del día siguiente | 2028-03-15 | 2028-04-28 | 32 | 33 | 261 | 234 4.4.3 Portal web de transportistas: rutas asignadas del día siguiente #946100 false 2028-03-15 33 0 true |  |
| 235 | 4.5.2 Costo de servir por cliente y por entrega (M10 Analítica) | 2028-03-15 | 2028-04-28 | 32 | 33 | 262 | 235 4.5.2 Costo de servir por cliente y por entrega (M10 Analítica) #946100 false 2028-03-15 33 0 true |  |
| 313 | Seguimiento de construcción E2 · 15/03/2028 | 2028-03-15 | 2028-03-15 | 0 | 0 | 263 | 313 Seguimiento de construcción E2 · 15/03/2028 #404040 true 2028-03-15 0 0 true | True |
| 326 | 7.5.1 · Fin de referencia para la precedencia | 2028-03-21 | 2028-03-21 | 0 | 0 | 264 | 326 7.5.1 · Fin de referencia para la precedencia #404040 true 2028-03-21 0 0 true | True |
| 314 | Seguimiento de construcción E2 · 31/03/2028 | 2028-03-31 | 2028-03-31 | 0 | 0 | 265 | 314 Seguimiento de construcción E2 · 31/03/2028 #404040 true 2028-03-31 0 0 true | True |
| 236 | 9.5.4 Traspaso al equipo de TI del CLIENTE | 2028-04-01 | 2028-09-30 | 123 | 126 | 266 | 236 9.5.4 Traspaso al equipo de TI del CLIENTE #4472c4 false 2028-04-01 126 0 true |  |
| 237 | 1.6.2 Primera actualización anual del Plan de Reversibilidad | 2028-04-03 | 2028-04-11 | 7 | 7 | 267 | 237 1.6.2 Primera actualización anual del Plan de Reversibilidad #4472c4 false 2028-04-03 7 0 true |  |
| 238 | 7.5.3 Innovación 5: cálculo y bloques 1 a 3 de la hoja de negocio (INN-05.P3) | 2028-04-03 | 2028-06-09 | 48 | 49 | 268 | 238 7.5.3 Innovación 5: cálculo y bloques 1 a 3 de la hoja de negocio (INN-05.P3) #4472c4 false 2028-04-03 49 0 true |  |
| 315 | Seguimiento de construcción E2 · 13/04/2028 | 2028-04-13 | 2028-04-13 | 0 | 0 | 269 | 315 Seguimiento de construcción E2 · 13/04/2028 #404040 true 2028-04-13 0 0 true | True |
| 327 | 7.5.2 · Fin de referencia para la precedencia | 2028-04-19 | 2028-04-19 | 0 | 0 | 270 | 327 7.5.2 · Fin de referencia para la precedencia #404040 true 2028-04-19 0 0 true | True |
| 316 | Demostración de módulos en QA E2 · 28/04/2028 | 2028-04-28 | 2028-04-28 | 0 | 0 | 271 | 316 Demostración de módulos en QA E2 · 28/04/2028 #404040 true 2028-04-28 0 0 true | True |
| 317 | Entrega a QA · 4.4.1 | 2028-04-28 | 2028-04-28 | 0 | 0 | 272 | 317 Entrega a QA · 4.4.1 #404040 true 2028-04-28 0 0 true | True |
| 318 | Entrega a QA · 4.4.2 | 2028-04-28 | 2028-04-28 | 0 | 0 | 273 | 318 Entrega a QA · 4.4.2 #404040 true 2028-04-28 0 0 true | True |
| 319 | Entrega a QA · 4.4.3 | 2028-04-28 | 2028-04-28 | 0 | 0 | 274 | 319 Entrega a QA · 4.4.3 #404040 true 2028-04-28 0 0 true | True |
| 320 | Entrega a QA · 4.5.2 | 2028-04-28 | 2028-04-28 | 0 | 0 | 275 | 320 Entrega a QA · 4.5.2 #404040 true 2028-04-28 0 0 true | True |
| 321 | Seguimiento de construcción E2 · 28/04/2028 | 2028-04-28 | 2028-04-28 | 0 | 0 | 276 | 321 Seguimiento de construcción E2 · 28/04/2028 #404040 true 2028-04-28 0 0 true | True |
| 239 | H7 · Cierre de cuatro semanas de evidencia | 2028-04-30 | 2028-04-30 | 0 | 0 | 277 | 239 H7 · Cierre de cuatro semanas de evidencia #404040 true 2028-04-30 0 0 true | True |
| 240 | 5.3.2 Intercambio electrónico con las demás cadenas (INT-08) | 2028-05-02 | 2028-07-14 | 52 | 52 | 278 | 240 5.3.2 Intercambio electrónico con las demás cadenas (INT-08) #4472c4 false 2028-05-02 52 0 true |  |
| 241 | 6.1.2 Pruebas de integración y regresión sin afectar la Etapa 1 en producción (H9) | 2028-05-02 | 2028-05-18 | 13 | 13 | 279 | 241 6.1.2 Pruebas de integración y regresión sin afectar la Etapa 1 en producción (H9) #4472c4 false 2028-05-02 13 0 true |  |

| id | name | start | end | duration | duration_gantt | order | attributes | milestone |
| --- | --- | --- | --- | --- | --- | --- | --- | --- |
| 242 | 9.4.1 Expediente y acta de aceptación de la Etapa 1 (H7) | 2028-05-02 | 2028-05-17 | 12 | 12 | 280 | 242 9.4.1 Expediente y acta de aceptación de la Etapa 1 (H7) #4472c4 false 2028-05-02 12 0 true |  |
| 243 | 9.6.2 Plan de gestión del cambio con cadenas y transportistas | 2028-05-02 | 2028-06-23 | 38 | 38 | 281 | 243 9.6.2 Plan de gestión del cambio con cadenas y transportistas #4472c4 false 2028-05-02 38 0 true |  |
| 244 | H7 · Entrega de expediente | 2028-05-02 | 2028-05-02 | 0 | 0 | 282 | 244 H7 · Entrega de expediente #404040 true 2028-05-02 0 0 true | True |
| 245 | H7 · Revisión de la Contraparte (10 días hábiles) | 2028-05-03 | 2028-05-16 | 10 | 10 | 283 | 245 H7 · Revisión de la Contraparte (10 días hábiles) #4472c4 false 2028-05-03 10 0 true |  |
| 246 | H7 · Firma del acta | 2028-05-16 | 2028-05-16 | 0 | 0 | 284 | 246 H7 · Firma del acta #404040 true 2028-05-16 0 0 true | True |
| 247 | 9.3.1 Estabilización y soporte puente E1 | 2028-05-17 | 2028-09-30 | 93 | 94 | 285 | 247 9.3.1 Estabilización y soporte puente E1 #4472c4 false 2028-05-17 94 0 true |  |
| 248 | H7 · Paso a producción | 2028-05-17 | 2028-05-17 | 0 | 0 | 286 | 248 H7 · Paso a producción #65418a true 2028-05-17 0 0 true | True |
| 249 | 9.4.1 · Cierre del paquete | 2028-05-17 | 2028-05-17 | 0 | 0 | 287 | 249 9.4.1 · Cierre del paquete #404040 true 2028-05-17 0 0 true | True |
| 250 | H7 · Registro de producción y cumplimiento | 2028-05-17 | 2028-05-17 | 0 | 0 | 288 | 250 H7 · Registro de producción y cumplimiento #404040 true 2028-05-17 0 0 true | True |
| 251 | H9 · Entrega de expediente | 2028-05-18 | 2028-05-18 | 0 | 0 | 289 | 251 H9 · Entrega de expediente #404040 true 2028-05-18 0 0 true | True |
| 252 | 6.3.2 Pruebas de carga con ambas etapas activas y de resiliencia | 2028-05-19 | 2028-06-01 | 10 | 10 | 290 | 252 6.3.2 Pruebas de carga con ambas etapas activas y de resiliencia #4472c4 false 2028-05-19 10 0 true |  |
| 253 | 6.4.2 Prueba de recuperación ante desastres con ambas etapas | 2028-05-19 | 2028-06-01 | 10 | 10 | 291 | 253 6.4.2 Prueba de recuperación ante desastres con ambas etapas #4472c4 false 2028-05-19 10 0 true |  |
| 254 | 6.5.2 Prueba de seguridad ofensiva de la Etapa 2, por un tercero independiente | 2028-05-19 | 2028-05-26 | 6 | 6 | 292 | 254 6.5.2 Prueba de seguridad ofensiva de la Etapa 2, por un tercero independiente #4472c4 false 2028-05-19 6 0 true |  |
| 255 | 6.6.2 Demostración en Preproducción del despliegue sin interrupción de la Etapa 2 | 2028-05-19 | 2028-06-01 | 10 | 10 | 293 | 255 6.6.2 Demostración en Preproducción del despliegue sin interrupción de la Etapa 2 #4472c4 false 2028-05-19 10 0 true |  |
| 256 | H9 · Revisión de la Contraparte (10 días hábiles) | 2028-05-19 | 2028-06-01 | 10 | 10 | 294 | 256 H9 · Revisión de la Contraparte (10 días hábiles) #4472c4 false 2028-05-19 10 0 true |  |
| 257 | 7.4.1 Innovación 4: fórmula aprobada del tramo variable (INN-04.P1) | 2028-06-01 | 2028-06-09 | 7 | 7 | 295 | 257 7.4.1 Innovación 4: fórmula aprobada del tramo variable (INN-04.P1) #4472c4 false 2028-06-01 7 0 true |  |
| 258 | 9.1.3 Plan de implantación y reversión de la Etapa 2 | 2028-06-01 | 2028-06-09 | 7 | 7 | 296 | 258 9.1.3 Plan de implantación y reversión de la Etapa 2 #4472c4 false 2028-06-01 7 0 true |  |
| 259 | H9 · Firma del acta | 2028-06-01 | 2028-06-01 | 0 | 0 | 297 | 259 H9 · Firma del acta #404040 true 2028-06-01 0 0 true | True |
| 260 | 6.2.3 Pruebas de aceptación y de accesibilidad con cadenas, transportistas, Comercial y Finanzas | 2028-06-02 | 2028-06-15 | 10 | 10 | 298 | 260 6.2.3 Pruebas de aceptación y de accesibilidad con cadenas, transportistas, Comercial y Finanzas #4472c4 false 2028-06-02 10 0 true |  |
| 261 | 6.7.2 Acta de certificación de la Etapa 2 y cierre del desarrollo (H10) | 2028-06-16 | 2028-06-28 | 7 | 7 | 299 | 261 6.7.2 Acta de certificación de la Etapa 2 y cierre del desarrollo (H10) #4472c4 false 2028-06-16 7 0 true |  |
| 262 | H10 · Entrega de expediente | 2028-06-27 | 2028-06-27 | 0 | 0 | 300 | 262 H10 · Entrega de expediente #404040 true 2028-06-27 0 0 true | True |
| 263 | H10 · Evidencia disponible (6.7.2) | 2028-06-27 | 2028-06-27 | 0 | 0 | 301 | 263 H10 · Evidencia disponible (6.7.2) #404040 true 2028-06-27 0 0 true | True |
| 264 | 6.7.2 · Cierre del paquete | 2028-06-28 | 2028-06-28 | 0 | 0 | 302 | 264 6.7.2 · Cierre del paquete #404040 true 2028-06-28 0 0 true | True |
| 265 | H10 · Revisión de la Contraparte (10 días hábiles) | 2028-06-28 | 2028-07-11 | 10 | 10 | 303 | 265 H10 · Revisión de la Contraparte (10 días hábiles) #4472c4 false 2028-06-28 10 0 true |  |
| 266 | 7.5.4 Innovación 5: hoja certificada, en marcha blanca y en producción (INN-05.P4, primera parte) | 2028-07-03 | 2028-09-29 | 62 | 62 | 304 | 266 7.5.4 Innovación 5: hoja certificada, en marcha blanca y en producción (INN-05.P4, primera parte) #4472c4 false 2028-07-03 62 0 true |  |
| 267 | 9.5.8 Certificación de Comercial y Finanzas en costo de servir (Etapa 2) | 2028-07-03 | 2028-07-25 | 17 | 17 | 305 | 267 9.5.8 Certificación de Comercial y Finanzas en costo de servir (Etapa 2) #4472c4 false 2028-07-03 17 0 true |  |
| 268 | H10 · Firma del acta | 2028-07-11 | 2028-07-11 | 0 | 0 | 306 | 268 H10 · Firma del acta #404040 true 2028-07-11 0 0 true | True |
| 269 | 9.2.2 Marcha blanca de la Etapa 2 | 2028-08-01 | 2028-09-30 | 41 | 42 | 307 | 269 9.2.2 Marcha blanca de la Etapa 2 #4472c4 false 2028-08-01 42 0 true |  |
| 270 | H11 · Inicio contractual de marcha blanca | 2028-08-01 | 2028-08-01 | 0 | 0 | 308 | 270 H11 · Inicio contractual de marcha blanca #65418a true 2028-08-01 0 0 true | True |
| 271 | H11 · Entrega de expediente | 2028-08-01 | 2028-08-01 | 0 | 0 | 309 | 271 H11 · Entrega de expediente #404040 true 2028-08-01 0 0 true | True |
| 272 | E2 · Cadenas habilitadas antes de F − 28 | 2028-08-31 | 2028-08-31 | 0 | 0 | 310 | 272 E2 · Cadenas habilitadas antes de F − 28 #404040 true 2028-08-31 0 0 true | True |
| 273 | 9.4.3 Garantía de correcto funcionamiento constituida (H12) | 2028-09-13 | 2028-09-25 | 7 | 7 | 311 | 273 9.4.3 Garantía de correcto funcionamiento constituida (H12) #4472c4 false 2028-09-13 7 0 true |  |
| 274 | H12 · Cierre de cuatro semanas de evidencia | 2028-09-30 | 2028-09-30 | 0 | 0 | 312 | 274 H12 · Cierre de cuatro semanas de evidencia #404040 true 2028-09-30 0 0 true | True |
| 275 | Mes 21 · Cobertura de transición previa al corte E2 | 2028-10-01 | 2028-10-17 | 11 | 12 | 313 | 275 Mes 21 · Cobertura de transición previa al corte E2 #4472c4 false 2028-10-01 12 0 true |  |
| 276 | 6.8.6 Entrega del código fuente, la infraestructura como código y los procedimientos de despliegue | 2028-10-02 | 2028-10-11 | 7 | 7 | 314 | 276 6.8.6 Entrega del código fuente, la infraestructura como código y los procedimientos de despliegue #4472c4 false 2028-10-02 7 0 true |  |
| 277 | 9.4.2 Expediente y acta de aceptación final (H12) | 2028-10-02 | 2028-10-18 | 12 | 12 | 315 | 277 9.4.2 Expediente y acta de aceptación final (H12) #4472c4 false 2028-10-02 12 0 true |  |
| 278 | H12 · Entrega de expediente | 2028-10-02 | 2028-10-02 | 0 | 0 | 316 | 278 H12 · Entrega de expediente #404040 true 2028-10-02 0 0 true | True |
| 279 | H12 · Revisión de la Contraparte (10 días hábiles) | 2028-10-03 | 2028-10-17 | 10 | 10 | 317 | 279 H12 · Revisión de la Contraparte (10 días hábiles) #4472c4 false 2028-10-03 10 0 true |  |
| 280 | H12 · Firma del acta | 2028-10-17 | 2028-10-17 | 0 | 0 | 318 | 280 H12 · Firma del acta #404040 true 2028-10-17 0 0 true | True |
| 281 | 9.3.2 Estabilización de la Etapa 2 | 2028-10-18 | 2028-11-30 | 30 | 30 | 319 | 281 9.3.2 Estabilización de la Etapa 2 #4472c4 false 2028-10-18 30 0 true |  |
| 282 | H12 · Paso a producción | 2028-10-18 | 2028-10-18 | 0 | 0 | 320 | 282 H12 · Paso a producción #65418a true 2028-10-18 0 0 true | True |
| 283 | 9.4.2 · Cierre del paquete | 2028-10-18 | 2028-10-18 | 0 | 0 | 321 | 283 9.4.2 · Cierre del paquete #404040 true 2028-10-18 0 0 true | True |
| 284 | Producto 10 · Operación con ambos alcances (meses 21 a 56) | 2028-10-18 | 2031-09-30 | 730 | 730 | 322 | 284 Producto 10 · Operación con ambos alcances (meses 21 a 56) #4472c4 false 2028-10-18 730 0 true |  |
| 285 | H12 · Registro de producción y cumplimiento | 2028-10-18 | 2028-10-18 | 0 | 0 | 323 | 285 H12 · Registro de producción y cumplimiento #404040 true 2028-10-18 0 0 true | True |
| 286 | 1.7.9 Informe de lecciones aprendidas y archivo de la implementación | 2028-10-26 | 2028-11-07 | 7 | 7 | 324 | 286 1.7.9 Informe de lecciones aprendidas y archivo de la implementación #4472c4 false 2028-10-26 7 0 true |  |
| 287 | 10.5.1 Traspaso de reversibilidad y acompañamiento de salida | 2031-08-01 | 2031-09-30 | 40 | 40 | 325 | 287 10.5.1 Traspaso de reversibilidad y acompañamiento de salida #4472c4 false 2031-08-01 40 0 true |  |
| 288 | 10.5.2 Certificado de devolución o eliminación de datos personales | 2031-09-01 | 2031-09-09 | 7 | 7 | 326 | 288 10.5.2 Certificado de devolución o eliminación de datos personales #4472c4 false 2031-09-01 7 0 true |  |

Links (source, target, type, difference, hardness):
- 1 2 1 0 Rubber
- 1 3 1 0 Rubber
- 1 17 2 0 Rubber
- 1 4 1 0 Rubber
- 1 6 1 0 Rubber
- 1 7 1 0 Rubber
- 1 9 1 0 Rubber
- 2 8 1 0 Rubber
- 3 130 2 119 Rubber
- 4 5 1 0 Rubber
- 4 30 2 13 Rubber
- 4 35 2 13 Rubber
- 5 179 2 162 Rubber
- 6 28 2 13 Rubber
- 6 29 2 13 Rubber
- 7 23 2 13 Rubber
- 8 18 2 13 Rubber
- 8 21 2 13 Rubber
- 8 24 2 13 Rubber
- 8 25 1 20 Rubber
- 8 26 2 13 Rubber
- 8 27 2 13 Rubber
- 8 31 2 13 Rubber
- 8 48 2 35 Rubber
- 8 32 2 13 Rubber
- 9 86 2 77 Rubber
- 9 87 2 77 Rubber
- 9 98 2 84 Rubber
- 9 120 2 97 Rubber
- 9 154 2 129 Rubber
- 9 125 2 110 Rubber
- 9 174 2 162 Rubber
- 9 240 2 311 Rubber
- 10 26 1 20 Rubber
- 10 11 1 0 Rubber
- 10 36 2 1 Rubber
- 10 37 2 1 Rubber
- 11 37 2 1 Rubber
- 11 71 2 44 Rubber
- 12 46 2 0 Rubber
- 12 34 1 20 Rubber
- 12 163 2 106 Rubber
- 13 147 2 66 Rubber
- 15 12 1 0 Rubber
- 16 1 1 0 Rubber
- 16 10 1 0 Rubber
- 17 22 2 6 Rubber
- 18 19 1 0 Rubber
- 18 24 1 0 Rubber
- 19 20 1 0 Rubber
- 20 38 2 -1 Rubber
- 24 38 2 -1 Rubber
- 25 55 2 19 Rubber
- 25 28 1 0 Rubber
- 25 53 2 14 Rubber
- 26 55 2 19 Rubber
- 26 41 2 2 Rubber
- 26 43 2 2 Rubber
- 26 44 2 2 Rubber
- 26 53 2 14 Rubber
- 26 33 1 0 Rubber
- 26 67 2 24 Rubber
- 26 68 2 24 Rubber
- 27 55 2 19 Rubber
- 27 53 2 14 Rubber
- 27 85 2 44 Rubber
- 27 137 2 88 Rubber
- 27 48 1 22 Rubber
- 28 55 2 19 Rubber
- 28 42 2 2 Rubber
- 28 53 2 14 Rubber
- 28 84 2 44 Rubber
- 29 55 2 19 Rubber
- 29 53 2 14 Rubber
- 30 45 2 2 Rubber
- 31 47 1 22 Rubber
- 31 323 2 -1 Rubber
- 32 89 2 57 Rubber
- 33 61 2 37 Rubber
- 33 62 2 37 Rubber
- 33 63 2 37 Rubber
- 33 64 2 37 Rubber
- 33 65 2 37 Rubber
- 33 83 2 57 Rubber
- 33 66 2 37 Rubber
- 34 46 2 12 Rubber
- 34 202 2 164 Rubber
- 35 179 2 89 Rubber
- 35 180 2 89 Rubber
- 36 69 2 24 Rubber
- 36 133 2 86 Rubber
- 36 72 2 24 Rubber
- 37 89 2 56 Rubber
- 37 49 2 14 Rubber
- 37 50 2 14 Rubber
- 37 51 2 14 Rubber
- 37 52 2 14 Rubber
- 37 70 2 36 Rubber
- 37 72 2 36 Rubber
- 38 39 2 1 Rubber
- 39 40 2 -1 Rubber
- 40 25 3 4 Rubber
- 41 237 2 249 Rubber
- 42 55 2 5 Rubber
- 42 53 2 0 Rubber
- 43 44 1 0 Rubber
- 45 58 2 1 Rubber
- 45 95 2 28 Rubber
- 45 96 2 28 Rubber
- 45 106 2 34 Rubber
- 45 107 2 34 Rubber
- 45 108 2 34 Rubber
- 45 97 2 28 Rubber
- 45 147 2 67 Rubber
- 45 141 2 66 Rubber
- 45 129 2 62 Rubber
- 45 149 2 70 Rubber
- 45 159 2 80 Rubber
- 46 59 2 0 Rubber
- 46 202 2 130 Rubber
- 46 107 2 33 Rubber
- 46 108 2 33 Rubber
- 46 163 2 84 Rubber
- 47 88 1 42 Rubber
- 47 324 2 -1 Rubber
- 48 92 1 46 Rubber
- 48 325 2 -1 Rubber
- 49 70 2 8 Rubber
- 49 71 2 8 Rubber
- 50 70 2 8 Rubber
- 51 70 2 8 Rubber
- 52 70 2 8 Rubber
- 53 55 1 5 Rubber
- 53 57 2 -1 Rubber
- 323 47 4 36 Rubber
- 54 56 2 1 Rubber
- 55 57 1 3 Rubber
- 55 54 1 0 Rubber
- 56 73 2 -1 Rubber
- 58 197 2 105 Rubber
- 59 202 2 111 Rubber
- 59 107 2 14 Rubber
- 59 108 2 14 Rubber
- 59 163 2 65 Rubber
- 60 75 1 7 Rubber
- 60 78 2 -1 Rubber
- 61 79 2 0 Rubber
- 61 80 2 0 Rubber
- 61 81 2 0 Rubber
- 61 60 1 0 Rubber
- 62 79 2 0 Rubber
- 62 80 2 0 Rubber
- 62 81 2 0 Rubber
- 63 108 2 13 Rubber
- 63 98 2 7 Rubber
- 64 79 2 0 Rubber
- 64 80 2 0 Rubber
- 64 81 2 0 Rubber
- 65 79 2 0 Rubber
- 65 80 2 0 Rubber
- 65 81 2 0 Rubber
- 70 76 2 0 Rubber
- 70 77 2 0 Rubber
- 70 90 2 6 Rubber
- 70 93 2 10 Rubber
- 71 121 2 26 Rubber
- 72 178 2 91 Rubber
- 72 99 2 13 Rubber
- 72 100 2 13 Rubber
- 72 101 2 13 Rubber
- 73 75 2 2 Rubber
- 73 85 2 15 Rubber
- 73 91 2 19 Rubber
- 73 160 2 79 Rubber
- 73 161 2 79 Rubber
- 73 162 2 79 Rubber
- 73 95 2 22 Rubber
- 73 96 2 22 Rubber
- 73 106 2 28 Rubber
- 73 107 2 28 Rubber
- 73 108 2 28 Rubber
- 73 97 2 22 Rubber
- 73 147 2 61 Rubber
- 73 141 2 60 Rubber
- 73 129 2 56 Rubber
- 73 149 2 64 Rubber
- 73 159 2 74 Rubber
- 73 87 2 15 Rubber
- 73 132 2 57 Rubber
- 73 74 2 1 Rubber
- 75 78 1 12 Rubber
- 76 94 1 12 Rubber
- 76 124 2 -1 Rubber
- 77 99 2 0 Rubber
- 77 100 2 0 Rubber
- 77 101 2 0 Rubber
- 78 79 1 1 Rubber
- 78 95 4 47 Rubber
- 78 96 4 42 Rubber
- 78 106 4 47 Rubber
- 78 107 4 60 Rubber
- 78 108 4 54 Rubber
- 78 97 4 46 Rubber
- 78 147 4 78 Rubber
- 78 141 4 83 Rubber
- 78 129 4 76 Rubber
- 78 149 4 86 Rubber
- 78 159 4 85 Rubber
- 78 131 1 43 Rubber
- 79 112 2 0 Rubber
- 79 82 1 0 Rubber
- 79 95 3 32 Rubber
- 79 96 3 27 Rubber
- 79 106 3 32 Rubber
- 79 107 3 45 Rubber
- 79 108 3 39 Rubber
- 79 97 3 31 Rubber
- 79 147 3 63 Rubber
- 79 141 3 68 Rubber
- 79 129 3 61 Rubber
- 79 149 3 71 Rubber
- 79 159 3 70 Rubber
- 80 112 2 0 Rubber
- 80 95 3 32 Rubber
- 80 96 3 27 Rubber
- 80 106 3 32 Rubber
- 80 107 3 45 Rubber
- 80 108 3 39 Rubber
- 80 97 3 31 Rubber
- 80 147 3 63 Rubber
- 80 141 3 68 Rubber
- 80 129 3 61 Rubber
- 80 149 3 71 Rubber
- 80 159 3 70 Rubber
- 80 174 1 85 Rubber
- 81 112 2 0 Rubber
- 81 95 3 32 Rubber
- 81 96 3 27 Rubber
- 81 106 3 32 Rubber
- 81 107 3 45 Rubber
- 81 108 3 39 Rubber
- 81 97 3 31 Rubber
- 81 147 3 63 Rubber
- 81 141 3 68 Rubber
- 81 129 3 61 Rubber
- 81 149 3 71 Rubber
- 81 159 3 70 Rubber
- 82 112 2 0 Rubber
- 82 95 3 32 Rubber
- 82 96 3 27 Rubber
- 82 106 3 32 Rubber
- 82 107 3 45 Rubber
- 82 108 3 39 Rubber
- 82 97 3 31 Rubber
- 82 147 3 63 Rubber
- 82 141 3 68 Rubber
- 82 129 3 61 Rubber
- 82 149 3 71 Rubber
- 82 159 3 70 Rubber
- 83 183 2 69 Rubber
- 84 91 1 4 Rubber
- 84 161 2 18 Rubber
- 84 95 1 7 Rubber
- 84 96 1 7 Rubber
- 84 106 1 13 Rubber
- 84 107 1 13 Rubber
- 84 108 1 13 Rubber
- 84 97 1 7 Rubber
- 84 147 1 46 Rubber
- 84 141 1 45 Rubber
- 84 129 1 41 Rubber
- 84 149 1 49 Rubber
- 84 159 1 59 Rubber
- 85 160 2 20 Rubber
- 85 95 1 7 Rubber
- 85 96 1 7 Rubber
- 85 106 1 13 Rubber
- 85 107 1 13 Rubber
- 85 108 1 13 Rubber
- 85 97 1 7 Rubber
- 85 147 1 46 Rubber
- 85 141 1 45 Rubber
- 85 129 1 41 Rubber
- 85 149 1 49 Rubber
- 85 159 1 59 Rubber
- 86 95 1 7 Rubber
- 86 96 1 7 Rubber
- 86 106 1 13 Rubber
- 86 107 1 13 Rubber
- 86 108 1 13 Rubber
- 86 97 1 7 Rubber
- 86 147 1 46 Rubber
- 86 141 1 45 Rubber
- 86 129 1 41 Rubber
- 86 149 1 49 Rubber
- 86 159 1 59 Rubber
- 86 137 2 23 Rubber
- 87 95 1 7 Rubber
- 87 96 1 7 Rubber
- 87 106 1 13 Rubber
- 87 107 1 13 Rubber
- 87 108 1 13 Rubber
- 87 97 1 7 Rubber
- 87 147 1 46 Rubber
- 87 141 1 45 Rubber
- 87 129 1 41 Rubber
- 87 149 1 49 Rubber
- 87 159 1 59 Rubber
- 88 207 2 35 Rubber
- 89 199 2 100 Rubber
- 89 184 2 81 Rubber
- 89 200 2 100 Rubber
- 89 185 2 81 Rubber
- 90 111 2 0 Rubber
- 91 95 1 3 Rubber
- 91 96 1 3 Rubber
- 91 106 1 9 Rubber
- 91 107 1 9 Rubber
- 91 108 1 9 Rubber
- 91 97 1 3 Rubber
- 91 147 1 42 Rubber
- 91 141 1 41 Rubber
- 91 129 1 37 Rubber
- 91 149 1 45 Rubber
- 91 159 1 55 Rubber
- 92 177 2 8 Rubber
- 324 88 4 85 Rubber
- 325 92 4 71 Rubber
- 94 123 2 21 Rubber
- 94 99 2 1 Rubber
- 94 100 2 1 Rubber
- 94 101 2 1 Rubber
- 95 109 1 6 Rubber
- 95 110 1 6 Rubber
- 95 142 2 -1 Rubber
- 96 102 1 4 Rubber
- 96 106 1 6 Rubber
- 96 103 1 4 Rubber
- 96 107 1 6 Rubber
- 96 108 1 6 Rubber
- 96 97 1 0 Rubber
- 96 126 2 -1 Rubber
- 97 104 1 4 Rubber
- 97 105 1 4 Rubber
- 97 138 2 -1 Rubber
- 98 95 1 0 Rubber
- 98 96 1 0 Rubber
- 98 106 1 6 Rubber
- 98 107 1 6 Rubber
- 98 108 1 6 Rubber
- 98 97 1 0 Rubber
- 98 147 1 39 Rubber
- 98 141 1 38 Rubber
- 98 129 1 34 Rubber
- 98 149 1 42 Rubber
- 98 159 1 52 Rubber
- 101 112 2 0 Rubber
- 102 118 2 7 Rubber
- 102 127 2 29 Rubber
- 103 119 2 7 Rubber
- 103 128 2 29 Rubber
- 104 153 2 40 Rubber
- 104 139 2 33 Rubber
- 105 151 2 38 Rubber
- 105 140 2 33 Rubber
- 106 114 1 4 Rubber
- 106 115 1 4 Rubber
- 106 143 2 -1 Rubber
- 107 158 2 -1 Rubber
- 108 202 2 57 Rubber
- 108 182 2 34 Rubber
- 108 300 2 -1 Rubber
- 109 116 2 5 Rubber
- 109 134 2 29 Rubber
- 110 117 2 5 Rubber
- 110 144 2 32 Rubber
- 112 113 2 1 Rubber
- 113 122 2 -1 Rubber
- 114 152 2 34 Rubber
- 114 145 2 28 Rubber
- 115 150 2 32 Rubber
- 115 146 2 28 Rubber
- 116 135 1 25 Rubber
- 117 156 1 38 Rubber
- 118 136 1 25 Rubber
- 119 157 1 38 Rubber
- 120 187 2 54 Rubber
- 120 182 2 44 Rubber
- 120 199 2 64 Rubber
- 121 133 2 8 Rubber
- 122 123 2 3 Rubber
- 123 124 1 1 Rubber
- 124 221 1 141 Rubber
- 125 187 2 44 Rubber
- 125 182 2 34 Rubber
- 126 129 1 1 Rubber
- 126 182 1 47 Rubber
- 126 292 1 0 Rubber
- 127 136 2 3 Rubber
- 127 126 1 0 Rubber
- 128 157 2 16 Rubber
- 128 126 1 0 Rubber
- 292 293 1 1 Rubber
- 129 182 2 12 Rubber
- 129 305 2 -1 Rubber
- 130 187 2 32 Rubber
- 130 182 2 22 Rubber
- 132 175 1 43 Rubber
- 132 176 1 43 Rubber
- 132 322 2 -1 Rubber
- 133 184 2 32 Rubber
- 133 185 2 32 Rubber
- 134 135 2 1 Rubber
- 134 142 1 3 Rubber
- 135 143 1 2 Rubber
- 136 143 1 2 Rubber
- 137 181 2 0 Rubber
- 137 214 2 62 Rubber
- 138 141 1 1 Rubber
- 138 182 1 43 Rubber
- 138 295 1 0 Rubber
- 139 165 2 30 Rubber
- 139 138 1 0 Rubber
- 140 168 2 36 Rubber
- 140 138 1 0 Rubber
- 295 298 1 7 Rubber
- 141 148 1 3 Rubber
- 141 149 1 4 Rubber
- 141 169 2 -1 Rubber
- 142 147 1 1 Rubber
- 142 182 1 42 Rubber
- 142 296 1 0 Rubber
- 143 182 1 42 Rubber
- 143 297 1 0 Rubber
- 144 156 2 11 Rubber
- 144 142 1 0 Rubber
- 145 164 2 29 Rubber
- 145 143 1 0 Rubber
- 146 167 2 35 Rubber
- 146 143 1 0 Rubber
- 296 298 1 6 Rubber
- 297 298 1 6 Rubber
- 147 166 2 -1 Rubber
- 148 155 2 6 Rubber
- 148 170 2 33 Rubber
- 149 172 2 -1 Rubber
- 150 167 1 31 Rubber
- 151 168 1 31 Rubber
- 152 164 1 23 Rubber
- 153 165 1 23 Rubber
- 154 187 2 25 Rubber
- 154 182 2 15 Rubber
- 300 302 1 11 Rubber
- 155 171 1 28 Rubber
- 156 158 1 2 Rubber
- 157 158 1 2 Rubber
- 158 202 1 52 Rubber
- 158 159 1 1 Rubber
- 158 182 1 29 Rubber
- 158 301 1 0 Rubber
- 301 302 1 5 Rubber
- 159 182 2 3 Rubber
- 159 309 2 -1 Rubber
- 160 187 2 12 Rubber
- 160 182 2 2 Rubber
- 161 187 2 12 Rubber
- 161 162 1 0 Rubber
- 161 182 2 2 Rubber
- 162 187 2 12 Rubber
- 162 182 2 2 Rubber
- 163 173 1 20 Rubber
- 163 229 2 31 Rubber
- 164 166 1 2 Rubber
- 165 166 1 2 Rubber
- 305 304 1 0 Rubber
- 166 182 1 11 Rubber
- 166 307 1 0 Rubber
- 307 310 1 8 Rubber
- 167 169 1 1 Rubber
- 168 169 1 1 Rubber
- 169 182 1 6 Rubber
- 169 218 1 88 Rubber
- 169 308 1 0 Rubber
- 170 171 2 1 Rubber
- 170 169 1 0 Rubber
- 308 310 1 3 Rubber
- 171 172 1 2 Rubber
- 309 310 1 1 Rubber
- 172 182 1 3 Rubber
- 172 311 1 0 Rubber
- 173 202 2 26 Rubber
- 311 310 1 0 Rubber
- 174 270 2 41 Rubber
- 174 240 1 149 Rubber
- 174 243 1 149 Rubber
- 175 206 2 7 Rubber
- 176 206 2 7 Rubber
- 177 208 2 7 Rubber
- 179 229 2 97 Rubber
- 180 229 2 97 Rubber
- 181 204 2 19 Rubber
- 181 205 2 19 Rubber
- 181 214 2 41 Rubber
- 181 209 2 19 Rubber
- 182 187 1 10 Rubber
- 182 189 2 -1 Rubber
- 322 175 4 29 Rubber
- 322 176 4 29 Rubber
- 186 188 2 1 Rubber
- 187 189 1 2 Rubber
- 187 186 1 0 Rubber
- 188 201 2 -1 Rubber
- 189 202 1 11 Rubber
- 189 190 1 1 Rubber
- 189 191 1 1 Rubber
- 189 192 1 1 Rubber
- 189 193 1 1 Rubber
- 189 194 1 1 Rubber
- 189 195 1 1 Rubber
- 189 196 1 6 Rubber
- 190 211 2 7 Rubber
- 190 203 2 0 Rubber
- 190 209 2 7 Rubber
- 191 211 2 7 Rubber
- 191 203 2 0 Rubber
- 192 211 2 13 Rubber
- 192 203 2 6 Rubber
- 193 211 2 13 Rubber
- 193 203 2 6 Rubber
- 194 211 2 13 Rubber
- 194 203 2 6 Rubber
- 195 211 2 13 Rubber
- 195 203 2 6 Rubber
- 196 221 2 57 Rubber
- 196 209 2 14 Rubber
- 196 197 1 0 Rubber
- 197 198 1 0 Rubber
- 197 219 2 26 Rubber
- 201 202 2 3 Rubber
- 202 229 2 50 Rubber
- 203 211 1 7 Rubber
- 203 212 2 -1 Rubber
- 204 214 2 0 Rubber
- 205 214 2 0 Rubber
- 209 221 2 36 Rubber
- 209 258 2 123 Rubber
- 210 213 2 1 Rubber
- 211 212 1 0 Rubber
- 211 210 1 0 Rubber
- 213 215 2 11 Rubber
- 214 221 2 2 Rubber
- 215 221 2 21 Rubber
- 215 216 2 21 Rubber
- 216 226 2 10 Rubber
- 216 217 1 0 Rubber
- 216 224 2 4 Rubber
- 216 233 2 24 Rubber
- 216 232 2 22 Rubber
- 216 234 2 24 Rubber
- 216 235 2 24 Rubber
- 216 218 1 0 Rubber
- 217 226 2 6 Rubber
- 217 224 2 0 Rubber
- 218 230 1 21 Rubber
- 218 238 1 45 Rubber
- 218 326 2 -1 Rubber
- 219 244 2 26 Rubber
- 220 239 2 -1 Rubber
- 220 219 1 0 Rubber
- 221 220 1 0 Rubber
- 223 221 1 0 Rubber
- 224 226 1 6 Rubber
- 224 227 2 -1 Rubber
- 225 228 2 1 Rubber
- 226 227 1 1 Rubber
- 226 225 1 0 Rubber
- 228 231 2 -1 Rubber
- 229 239 2 44 Rubber
- 230 238 1 24 Rubber
- 230 327 2 -1 Rubber
- 231 233 2 4 Rubber
- 231 232 2 2 Rubber
- 231 234 2 4 Rubber
- 231 235 2 4 Rubber
- 231 243 2 38 Rubber
- 232 241 2 1 Rubber
- 232 318 2 -1 Rubber
- 233 174 3 23 Rubber
- 233 240 3 53 Rubber
- 233 241 2 1 Rubber
- 233 317 2 -1 Rubber
- 234 241 2 1 Rubber
- 234 319 2 -1 Rubber
- 235 241 2 1 Rubber
- 235 257 2 23 Rubber
- 235 267 2 43 Rubber
- 235 320 2 -1 Rubber
- 326 230 4 22 Rubber
- 326 238 4 59 Rubber
- 236 278 2 1 Rubber
- 238 266 2 13 Rubber
- 327 238 4 38 Rubber
- 317 316 1 0 Rubber
- 318 316 1 0 Rubber
- 319 316 1 0 Rubber
- 320 316 1 0 Rubber
- 239 244 2 1 Rubber
- 240 272 2 32 Rubber
- 241 251 2 -1 Rubber
- 241 263 2 25 Rubber
- 241 260 2 10 Rubber
- 241 252 2 0 Rubber
- 241 253 2 0 Rubber
- 241 254 2 0 Rubber
- 241 255 2 0 Rubber
- 241 261 2 20 Rubber
- 241 258 2 9 Rubber
- 242 249 2 -1 Rubber
- 244 245 2 1 Rubber
- 244 242 1 0 Rubber
- 245 246 2 -1 Rubber
- 246 248 2 1 Rubber
- 248 250 1 0 Rubber
- 248 247 1 0 Rubber
- 250 249 1 0 Rubber
- 251 256 2 1 Rubber
- 252 263 2 15 Rubber
- 252 261 2 10 Rubber
- 253 263 2 15 Rubber
- 253 261 2 10 Rubber
- 254 263 2 19 Rubber
- 254 261 2 14 Rubber
- 255 263 2 15 Rubber
- 255 261 2 10 Rubber
- 256 259 2 -1 Rubber
- 258 270 2 34 Rubber
- 260 263 2 5 Rubber
- 260 261 2 0 Rubber
- 260 267 2 9 Rubber
- 261 263 1 5 Rubber
- 261 264 2 -1 Rubber
- 262 265 2 1 Rubber
- 263 264 1 1 Rubber
- 263 262 1 0 Rubber
- 265 268 2 -1 Rubber
- 267 278 2 47 Rubber
- 268 270 2 15 Rubber
- 268 276 2 58 Rubber
- 268 273 2 45 Rubber
- 269 274 2 -1 Rubber
- 270 269 1 0 Rubber
- 271 270 1 0 Rubber
- 272 274 2 20 Rubber
- 273 278 2 6 Rubber
- 274 278 2 2 Rubber
- 275 284 2 0 Rubber
- 276 280 2 3 Rubber
- 277 283 2 -1 Rubber
- 278 279 2 1 Rubber
- 278 277 1 0 Rubber
- 279 280 2 -1 Rubber
- 280 282 2 1 Rubber
- 282 285 1 0 Rubber
- 282 281 1 0 Rubber
- 282 284 1 0 Rubber
- 283 286 1 6 Rubber
- 285 283 1 0 Rubber
- 287 288 1 20 Rubber
